How a schedule from an exported table changed from version to version. A marks actual dates.

## Version 1 (saved 2026-02-01)

Note of the change: docs(tracker): update sprint metrics, task tracking, and validation data (GOV-001)

| ID | Task | Start | Finish |
| --- | --- | --- | --- |
| EXC-INIT-001 | Sprint 0 - Environment Setup with Agent Ecosystem | 2025-12-14 |  |
| AI-SETUP-001 | Configure Claude Code with Custom Commands and Hooks | 2025-12-14 | EXC-INIT-001 |
| AI-SETUP-002 | GitHub Copilot Enterprise Automation Setup | 2025-12-15 | AI-SETUP-001 |
| AI-SETUP-003 | External AI Tools Integration (Codex, Jules) | 2025-12-15 | AI-SETUP-001 |
| ENV-001-AI | Automated Monorepo Creation | 2025-12-15 | AI-SETUP-001 |
| ENV-002-AI | Automated Development Tools Configuration | 2025-12-16 | ENV-001-AI |
| ENV-003-AI | Docker Environment with Optimized Configuration | 2025-12-16 | ENV-001-AI |
| ENV-004-AI | Supabase Integration with Automated Schema Design | 2025-12-17 | ENV-003-AI |
| ENV-005-AI | CI/CD Pipeline with Predictive Optimization | 2025-12-16 | ENV-002-AI |
| ENV-006-AI | Prisma Schema with Generated Optimizations | 2025-12-18 | ENV-004-AI |
| ENV-007-AI | tRPC Setup with Automated Type Generation | 2025-12-19 | ENV-006-AI |
| ENV-008-AI | Automated Observability with Predictive Monitoring | 2025-12-17 | ENV-005-AI |
| ENV-009-AI | Frontend with Generated Components and Optimization | 2025-12-16 | ENV-001-AI |
| ENV-010-AI | Automated Test Generation and Automation | 2025-12-20 | ENV-007-AI,ENV-009-AI |
| ENV-011-AI | LangChain Integration with Optimized Chains | 2025-12-20 | ENV-007-AI |
| ENV-012-AI | Documentation with Auto-Generation | 2025-12-16 | ENV-001-AI |
| ENV-013-AI | Automated Security Implementation | 2025-12-20 | ENV-005-AI,ENV-007-AI,ENV-009-AI |
| ENV-014-AI | Performance Optimization with AI Profiling | 2025-12-18 | ENV-009-AI |
| ENV-015-AI | AI-Managed Feature Flags with Predictive Rollout | 2025-12-20 | ENV-007-AI |
| ENV-016-AI | Privacy-First Analytics with AI Insights | 2025-12-22 | ENV-009-AI,ANALYTICS-001 |
| ENV-017-AI | Automated Integration Testing | 2025-12-28 | ENV-001-AI,ENV-003-AI,ENV-005-AI,ENV-010-AI,IFC-001 |
| ENV-018-AI | Sprint Planning and Velocity Prediction | 2026-01-02 | ENV-017-AI |
| EP-001-AI | EasyPanel Internal Tools Deployment (Push-based OTLP Pipeline) | 2025-12-19 | ENV-003-AI,ENV-008-AI |
| AUTOMATION-001 | Continuous AI Agent Coordination System | 2025-12-21 | AI-SETUP-001,AI-SETUP-002,ENV-005-AI,ENV-008-AI,ENV-010-AI |
| AUTOMATION-002 | AI Performance Dashboard and Optimization Loop | 2025-12-25 | AUTOMATION-001 |
| IFC-000 | IntelliFlow CRM Feasibility Assessment | 2025-12-14 |  |
| IFC-001 | PHASE-001: Technical Architecture Spike - Modern Stack | 2025-12-28 | IFC-000 |
| IFC-002 | PHASE-001: Domain Model Design (DDD) | 2025-12-28 | IFC-000 |
| IFC-003 | PHASE-001: tRPC API Foundation | 2026-01-03 | IFC-002 |
| IFC-004 | PHASE-002: Next.js 16.0.10 Lead Capture UI | 2026-01-11 | IFC-003 |
| IFC-005 | FLOW-002, FLOW-011: LangChain AI Scoring Prototype | 2026-01-15 | IFC-004 |
| IFC-006 | PHASE-002: Supabase Integration Test | 2026-01-25 | IFC-003 |
| IFC-007 | PHASE-003: Performance Benchmarks - Modern Stack | 2026-01-25 | IFC-004,IFC-005 |
| IFC-008 | PHASE-003: Security Assessment - OWASP + ISO 42001 Prep | 2026-01-11 | IFC-001 |
| IFC-009 | PHASE-002: Team Capability Assessment - Modern Stack (Next.js 16.0.10 App Router, Turbopack FS caching, Cache Components, proxy replacing middleware) | 2026-02-08 | IFC-001,IFC-005 |
| IFC-010 | PHASE-001: Phase 1 Go/No-Go Decision | 2026-03-08 | IFC-001,IFC-002,IFC-003,IFC-004,IFC-005,IFC-006,IFC-007,IFC-008,IFC-009,IFC-089,IFC-098,IFC-112 |
| IFC-011 | PHASE-002: Supabase Free Tier Optimization | 2026-01-25 | IFC-000 |
| IFC-012 | PHASE-002: Turborepo Monorepo Setup | 2026-03-08 | IFC-010 |
| IFC-013 | PHASE-002: tRPC Router Implementation | 2026-03-11 | IFC-012 |
| IFC-014 | PHASE-002: Next.js 16.0.10 App Router UI | 2026-03-22 | IFC-013 |
| IFC-015 | PHASE-002: BullMQ Job Queue Setup | 2026-03-22 | IFC-013 |
| IFC-016 | PHASE-002: Real-time Subscriptions | 2026-03-27 | IFC-014 |
| IFC-017 | PHASE-002: Prisma + Supabase Data Layer | 2026-03-11 | IFC-012,IFC-013 |
| IFC-018 | PHASE-002: Vitest Testing Suite | 2026-03-30 | IFC-014,IFC-015,IFC-016 |
| IFC-019 | PHASE-001: Gate 1 Review - £500 Investment | 2026-04-05 | IFC-018 |
| IFC-020 | PHASE-011: LangChain Pipeline Design | 2026-05-31 | IFC-019 |
| IFC-021 | PHASE-011: CrewAI Agent Framework | 2026-06-14 | IFC-020 |
| IFC-022 | PHASE-011: Structured AI Output Implementation | 2026-06-17 | IFC-021 |
| IFC-023 | PHASE-011: AI Explainability UI | 2026-06-20 | IFC-022 |
| IFC-024 | PHASE-011: Human-in-the-Loop Feedback | 2026-06-28 | IFC-023 |
| IFC-025 | PHASE-011: A/B Testing Framework | 2026-06-28 | IFC-022 |
| IFC-026 | PHASE-011: Playwright E2E Testing | 2026-07-12 | IFC-022,IFC-024 |
| IFC-027 | PHASE-001: Gate 2 Review - £2000 Investment | 2026-07-19 | IFC-026 |
| IFC-028 | PHASE-005: Workflow Engine with LangGraph | 2026-07-26 | IFC-027 |
| IFC-029 | PHASE-005: Auto-Response with Approval Gate | 2026-01-31 | IFC-028 |
| IFC-030 | PHASE-005: Smart Lead Routing | 2026-08-09 | IFC-029 |
| IFC-031 | PHASE-005: Workflow Builder UI (React Flow) | 2026-08-09 | IFC-028 |
| IFC-032 | PHASE-005: OpenTelemetry Monitoring | 2026-08-23 | IFC-030 |
| IFC-033 | PHASE-005: Load Testing with k6 | 2026-09-06 | IFC-030,IFC-032 |
| IFC-034 | PHASE-001: Gate 3 Review - £3000 Investment | 2026-09-14 | IFC-033 |
| IFC-035 | PHASE-006: WhatsApp Business API Research | 2026-09-20 | IFC-034 |
| IFC-036 | PHASE-006: WhatsApp + tRPC Integration | 2026-10-04 | IFC-035,IFC-106 |
| IFC-037 | PHASE-005: Analytics Dashboard Design | 2026-10-04 | IFC-032,ANALYTICS-001 |
| IFC-038 | Analytics Implementation | 2026-10-18 | IFC-037,ANALYTICS-001 |
| IFC-039 | Advanced AI Features (RAG) | 2026-11-01 | IFC-025 |
| IFC-040 | Production Hardening | 2026-11-29 | IFC-046,IFC-111,IFC-112,IFC-113,IFC-115,IFC-122,IFC-127,IFC-043,IFC-033,IFC-130,IFC-132,IFC-133,IFC-134 |
| IFC-041 | User Manual with Interactive Examples | 2026-10-18 | IFC-018,IFC-026,IFC-033 |
| IFC-042 | tRPC API Client SDK Docs | 2026-05-31 | IFC-013 |
| IFC-043 | Operational runbooks (deploy, rollback, incident response, backup/restore, access requests) | 2026-11-29 | ENV-008-AI,IFC-112,IFC-113,IFC-115,IFC-130 |
| IFC-044 | Unit Tests (Vitest + TDD) | 2025-12-20 | ENV-010-AI |

| ID | Task | Start | Finish |
| --- | --- | --- | --- |
| IFC-045 | Integration Tests (Vitest + MSW) | 2026-06-28 | IFC-044 |
| IFC-046 | Security Tests (OWASP ZAP + Snyk) | 2026-11-01 | IFC-008 |
| IFC-047 | Performance Tests (k6 + Lighthouse) | 2026-10-18 | IFC-007 |
| IFC-048 | User Acceptance Testing | 2026-11-29 | IFC-039 |
| IFC-049 | Gate 4 Review - £5000 Investment | 2026-12-13 | IFC-048 |
| IFC-050 | Internal Launch Preparation | 2026-12-13 | IFC-048 |
| IFC-051 | Pilot Customer Selection | 2026-12-27 | IFC-049 |
| IFC-052 | Production Deployment | 2026-12-27 | IFC-040,IFC-050 |
| IFC-053 | Hypercare Period | 2027-01-10 | IFC-052 |
| IFC-054 | Technical Complexity Monitoring | 2026-03-22 |  |
| IFC-055 | Budget Tracking with FinOps | 2026-04-05 |  |
| IFC-056 | Team Upskilling Program | 2026-04-19 | IFC-009 |
| IFC-057 | Vendor Lock-in Mitigation | 2026-04-19 | IFC-011 |
| IFC-058 | GDPR baseline controls: Supabase RLS policies, data minimisation, retention hooks | 2026-05-17 | IFC-017,IFC-127,IFC-008 |
| IFC-059 | ISO 42001 Readiness Assessment | 2026-11-29 | IFC-040 |
| IFC-060 | Success Metrics Review | 2027-01-10 | IFC-052 |
| IFC-061 | FLOW-006: Lead to Contact Conversion Logic | 2026-06-28 | IFC-089,IFC-101,IFC-102 |
| IFC-062 | FLOW-006: Lead to Deal Conversion Logic | 2026-07-02 | IFC-061,IFC-104 |
| IFC-063 | FLOW-007: Pipeline Stage Customization | 2026-06-28 | IFC-091,IFC-104 |
| IFC-064 | FLOW-007: Kanban Drag-Drop Persistence | 2026-07-03 | IFC-091,IFC-063 |
| IFC-065 | FLOW-009: Deal Won Closure Workflow | 2026-07-04 | IFC-091,IFC-092 |
| IFC-066 | FLOW-009: Deal Lost Closure Workflow | 2026-07-05 | IFC-091,IFC-092 |
| IFC-067 | FLOW-012: Automatic Ticket Routing Engine | 2026-06-28 | IFC-093,IFC-095 |
| IFC-068 | FLOW-015: Feedback Analytics Dashboard | 2026-06-28 | IFC-090,IFC-096 |
| IFC-069 | FLOW-020: Unified Activity Feed Service | 2026-06-28 | IFC-089,IFC-091,IFC-093,IFC-109 |
| IFC-070 | Data Migration from Legacy | 2026-08-23 | IFC-017 |
| IFC-071 | Multi-Region Setup | 2026-11-29 | IFC-040 |
| IFC-072 | PHASE-040: Zero Trust Security Model | 2026-01-11 | IFC-001,IFC-008 |
| IFC-073 | PHASE-040: Privacy Impact Assessment | 2026-01-15 | IFC-072 |
| IFC-074 | PHASE-040: Full Stack Observability | 2025-12-30 | IFC-003 |
| IFC-075 | IaC with Terraform | 2025-12-28 | IFC-001 |
| IFC-076 | Component Library (shadcn/ui) | 2026-05-03 | IFC-014,BRAND-002 |
| IFC-077 | PHASE-035: API Rate Limiting (tRPC + Upstash) | 2026-04-05 | IFC-013 |
| IFC-078 | Platform Engineering Foundation | 2026-08-23 | IFC-012 |
| IFC-079 | PHASE-041: Docusaurus Setup | 2026-03-22 | IFC-012 |
| IFC-080 | PHASE-041: LLM-Friendly Documentation Templates | 2026-03-24 | IFC-079 |
| IFC-081 | API Documentation (tRPC + OpenAPI) | 2026-05-31 | IFC-013 |
| IFC-082 | Domain Knowledge Base | 2026-03-26 | IFC-080 |
| IFC-083 | RAG Integration for Docs | 2026-11-01 | IFC-039,IFC-082 |
| IFC-084 | Video Tutorials & Demos | 2026-12-27 | IFC-050,SALES-002 |
| IFC-085 | PHASE-040: Ollama Local Development | 2026-01-11 | IFC-005 |
| IFC-086 | Model Versioning with Zep | 2026-06-28 | IFC-020 |
| IFC-087 | Edge Functions Optimization | 2026-09-20 | IFC-014 |
| IFC-088 | Continuous Quality Metrics | 2026-06-28 | IFC-044 |
| IFC-089 | FLOW-005-A, FLOW-006, FLOW-014, FLOW-010-A: Contacts Module - Create/Edit/Search | 2026-02-22 | IFC-002,IFC-004 |
| IFC-090 | Contact 360 Page - Full Detail View | 2026-03-08 | IFC-089 |
| IFC-091 | Deals Pipeline - Kanban Board | 2026-03-10 | IFC-002,IFC-004 |
| IFC-092 | Deal Forecasting & Reporting | 2026-03-22 | IFC-091 |
| IFC-093 | Tickets Module - SLA Tracking | 2026-03-24 | IFC-002,IFC-004 |
| IFC-094 | Documents Management - Upload & Sign | 2026-04-05 | IFC-090,IFC-106 |
| IFC-095 | Churn Risk & Next Best Action | 2026-04-07 | IFC-005,IFC-090 |
| IFC-096 | Custom Reports & Dashboards | 2026-04-19 | IFC-091,IFC-092 |
| IFC-097 | Distributed Tracing & Logging | 2026-04-21 | IFC-007 |
| IFC-098 | RBAC/ABAC & Audit Trail | 2026-02-24 | IFC-008 |
| IFC-099 | ERP/Payment/Email Connectors | 2026-05-03 | IFC-006,IFC-106 |
| IFC-100 | ADR Registry & Compliance Reporting | 2026-05-07 | IFC-008,GOV-001 |
| PG-001 | Home Page | 2026-05-17 | IFC-076,GTM-002,BRAND-001 |
| PG-002 | Features Page | 2026-05-19 | PG-001,GTM-002,BRAND-001 |
| PG-003 | Pricing Page | 2026-05-21 | PG-001,GTM-002,BRAND-001 |
| PG-004 | About Page | 2026-05-23 | PG-001,GTM-002,BRAND-001 |
| PG-005 | Contact Page | 2026-05-25 | PG-001,GTM-002,BRAND-001 |
| PG-006 | Partners Page | 2026-05-27 | PG-001,GTM-002,BRAND-001 |
| PG-007 | Press Page | 2026-05-28 | PG-001,GTM-002,BRAND-001 |
| PG-008 | Security Page | 2026-05-29 | PG-001,GTM-002,BRAND-001 |
| PG-009 | Blog Index | 2026-05-31 | PG-001,GTM-002,BRAND-001 |
| PG-010 | Blog Post | 2026-06-02 | PG-009,GTM-002,BRAND-001 |
| PG-011 | Careers Page | 2026-06-04 | PG-001,GTM-002,BRAND-001 |
| PG-012 | Career Detail | 2026-06-06 | PG-011,GTM-002,BRAND-001 |
| PG-013 | Landing Page Template | 2026-06-08 | PG-001,GTM-002,BRAND-001 |
| PG-014 | Status Page | 2026-06-10 | PG-001,GTM-002,BRAND-001 |

| ID | Task | Start | Finish |
| --- | --- | --- | --- |
| PG-015 | Sign In | 2026-06-14 | IFC-006,IFC-076,IFC-098 |
| PG-016 | Sign Up | 2026-06-16 | PG-015,IFC-006 |
| PG-017 | Sign Up Success | 2026-06-18 | PG-016 |
| PG-018 | Logout | 2026-06-17 | PG-015,IFC-006 |
| PG-019 | Forgot Password | 2026-06-19 | PG-015,IFC-006 |
| PG-020 | Reset Password | 2026-06-21 | PG-019 |
| PG-021 | MFA Setup | 2026-06-20 | PG-015,IFC-006,IFC-098 |
| PG-022 | MFA Verify | 2026-06-22 | PG-021,PG-015 |
| PG-023 | Email Verification | 2026-06-23 | PG-016,IFC-006 |
| PG-024 | SSO Callback | 2026-06-24 | PG-015,IFC-006 |
| PG-025 | Billing Portal | 2026-06-28 | IFC-099 |
| PG-026 | Checkout | 2026-07-01 | PG-025 |
| PG-027 | Invoices | 2026-07-02 | PG-025 |
| PG-028 | Invoice Detail | 2026-07-04 | PG-027 |
| PG-029 | Payment Methods | 2026-07-05 | PG-025 |
| PG-030 | Subscriptions | 2026-07-06 | PG-025 |
| PG-031 | Receipts | 2026-07-08 | PG-025 |
| PG-032 | Docs Index | 2026-07-12 | IFC-079 |
| PG-033 | API Docs | 2026-07-14 | PG-032 |
| PG-034 | Webhooks Docs | 2026-07-16 | PG-032 |
| PG-035 | Changelog | 2026-07-18 | PG-032 |
| PG-036 | SDK Guides | 2026-07-19 | PG-032 |
| PG-037 | CLI Docs | 2026-07-20 | PG-032 |
| PG-038 | Auth Guides | 2026-07-21 | PG-032 |
| PG-039 | Dev Apps | 2026-07-22 | PG-032 |
| PG-040 | New Dev App | 2026-07-23 | PG-039 |
| PG-041 | Dev App Detail | 2026-07-24 | PG-039 |
| PG-042 | Dev App Edit | 2026-07-25 | PG-041 |
| PG-043 | Help Center Index | 2026-07-26 | IFC-076 |
| PG-044 | Help Search | 2026-07-28 | PG-043 |
| PG-045 | Help Article | 2026-07-29 | PG-043 |
| PG-046 | Support Tickets | 2026-07-30 | IFC-093 |
| PG-047 | New Ticket | 2026-08-01 | PG-046 |
| PG-048 | Ticket Detail | 2026-08-03 | PG-046 |
| PG-049 | Support Chat | 2026-10-18 | IFC-036 |
| PG-050 | Privacy Policy | 2026-08-09 | IFC-058 |
| PG-051 | Terms of Service | 2026-08-11 | PG-050 |
| PG-052 | Cookie Policy | 2026-08-12 | PG-050 |
| PG-053 | Data Processing Addendum | 2026-08-13 | PG-050 |
| PG-054 | Acceptable Use Policy | 2026-08-15 | PG-050 |
| PG-055 | 404 Not Found | 2026-08-16 | IFC-076 |
| PG-056 | 500 Error | 2026-08-17 | PG-055 |
| PG-057 | Maintenance | 2026-08-18 | PG-055 |
| PG-058 | Dashboard | 2026-08-23 | IFC-089,IFC-091,IFC-095 |
| PG-059 | Leads List | 2026-08-25 | IFC-089 |
| PG-060 | New Lead | 2026-08-27 | PG-059 |
| PG-061 | Lead Detail | 2026-08-28 | PG-059 |
| PG-062 | Edit Lead | 2026-08-30 | PG-061 |
| PG-063 | Import Leads | 2026-09-01 | PG-059 |
| PG-064 | Contacts List | 2026-09-06 | IFC-089 |
| PG-065 | Contact 360 | 2026-09-08 | IFC-090 |
| PG-066 | Edit Contact | 2026-09-10 | PG-065 |
| PG-067 | Import Contacts | 2026-09-11 | PG-064 |
| PG-068 | Merge Contacts | 2026-09-13 | PG-064 |
| PG-069 | Accounts List | 2026-09-14 | IFC-089 |
| PG-070 | Account Detail | 2026-09-20 | PG-069 |
| PG-071 | Edit Account | 2026-09-22 | PG-070 |
| PG-072 | Import Accounts | 2026-09-24 | PG-069 |
| PG-073 | Opportunities List | 2026-09-26 | IFC-091 |
| PG-074 | Opportunity Detail | 2026-09-28 | PG-073 |
| PG-075 | Edit Opportunity | 2026-09-30 | PG-074 |
| PG-076 | Pipeline Board | 2026-10-04 | IFC-091 |
| PG-077 | Pipeline Stages | 2026-10-06 | PG-076 |
| PG-078 | Stage Detail | 2026-10-08 | PG-077 |
| PG-079 | Forecasts | 2026-10-10 | IFC-092 |
| PG-080 | Activities | 2026-10-12 | IFC-089 |
| PG-081 | Tasks | 2026-10-14 | PG-080 |
| PG-082 | Task Detail | 2026-10-18 | PG-081 |
| DOC-001 | Company & Product Master Brief (single source of truth) | 2025-12-14 |  |
| BRAND-001 | Visual Identity System (palette, typography, spacing, logo usage) | 2025-12-16 | DOC-001 |

| ID | Task | Start | Finish |
| --- | --- | --- | --- |
| BRAND-002 | Design Tokens Integration Plan (Tailwind/shadcn theme mapping) | 2025-12-28 | BRAND-001,ENV-002-AI |
| GTM-001 | ICP & Personas Pack (target customers, job stories, objections) | 2025-12-16 | DOC-001 |
| GTM-002 | Messaging Framework (positioning, value props, copy blocks) | 2025-12-18 | GTM-001,BRAND-001 |
| SALES-001 | Commercial Narrative + Pitch Deck Outline + One-Pager | 2025-12-28 | GTM-002,BRAND-001 |
| SALES-002 | Sales Motion Playbook (outreach sequences, discovery + demo scripts) | 2026-01-11 | SALES-001,GTM-002 |
| PM-OPS-001 | Project Operating Model & Delivery Playbook (cadence, WIP, ticket sizing, ABC) | 2025-12-18 | AUTOMATION-001,ENV-005-AI |
| ENG-OPS-001 | Engineering Playbook (SDLC, PR rules, quality gates, release/rollback) | 2025-12-18 | ENV-002-AI,ENV-005-AI,ENV-010-AI |
| GOV-001 | Architecture Governance Pack (ADR + ARP templates, decision workflow, flowcharts) | 2025-12-28 | ENG-OPS-001 |
| ANALYTICS-001 | Customer Segmentation Spec (RFM + ABC) + Event Taxonomy | 2025-12-19 | DOC-001,GTM-001 |
| PG-083 | Calendar | 2026-10-20 | PG-080 |
| PG-084 | Emails | 2026-10-22 | IFC-099 |
| PG-085 | Email Templates | 2026-10-24 | PG-084 |
| PG-086 | SMS Templates | 2026-10-26 | PG-085 |
| PG-087 | Calls | 2026-10-28 | IFC-099 |
| PG-088 | Notes | 2026-11-01 | PG-080 |
| PG-089 | Files | 2026-11-03 | IFC-094 |
| PG-090 | File Detail | 2026-11-05 | PG-089 |
| PG-091 | Products | 2026-11-07 | IFC-089 |
| PG-092 | Product Detail | 2026-11-09 | PG-091 |
| PG-093 | Price Books | 2026-11-10 | PG-091 |
| PG-094 | Price Book Detail | 2026-11-15 | PG-093 |
| PG-095 | Quotes | 2026-11-17 | PG-093 |
| PG-096 | New Quote | 2026-11-19 | PG-095 |
| PG-097 | Quote Detail | 2026-11-21 | PG-095 |
| PG-098 | Edit Quote | 2026-11-23 | PG-097 |
| PG-099 | Orders | 2026-11-24 | PG-095 |
| PG-100 | Order Detail | 2026-11-29 | PG-099 |
| PG-101 | Reports | 2026-11-30 | IFC-096 |
| PG-102 | Custom Reports | 2026-12-02 | IFC-096 |
| PG-103 | Report Schedules | 2026-12-06 | PG-102 |
| PG-104 | Settings Home | 2026-12-08 | IFC-076 |
| PG-105 | Profile Settings | 2026-12-10 | PG-104 |
| PG-106 | Account Settings | 2026-12-13 | PG-104 |
| PG-107 | Organization Settings | 2026-12-15 | PG-104 |
| PG-108 | Users | 2026-12-16 | IFC-098 |
| PG-109 | Roles | 2026-12-18 | IFC-098 |
| PG-110 | Permissions | 2026-12-20 | PG-109 |
| PG-111 | Teams | 2026-12-22 | PG-108 |
| PG-112 | Audit Log | 2026-12-27 | IFC-098,IFC-124 |
| PG-113 | API Keys | 2026-12-29 | PG-104 |
| PG-114 | Webhooks | 2026-12-31 | IFC-099 |
| PG-115 | Integrations | 2027-01-02 | IFC-099 |
| PG-116 | Notifications | 2027-01-04 | PG-104 |
| PG-117 | Localization | 2027-01-06 | PG-104 |
| PG-118 | Data Retention | 2027-01-10 | IFC-058 |
| PG-119 | Compliance | 2027-01-12 | IFC-058 |
| PG-120 | Security | 2027-01-14 | IFC-072 |
| PG-121 | Import/Export | 2027-01-16 | IFC-070 |
| PG-122 | Privacy Export | 2027-01-17 | IFC-058 |
| PG-123 | Privacy Delete | 2027-01-18 | IFC-058 |
| IFC-101 | PHASE-039: Lead Aggregate and Value Objects | 2026-01-11 | IFC-002 |
| IFC-102 | PHASE-039: Contact Aggregate and Value Objects | 2026-01-13 | IFC-002 |
| IFC-103 | PHASE-039: Account Aggregate and Value Objects | 2026-01-15 | IFC-002 |
| IFC-104 | PHASE-039: Opportunity Aggregate and Value Objects | 2026-01-25 | IFC-002 |
| IFC-105 | PHASE-039: Task Aggregate and Value Objects | 2026-01-27 | IFC-002 |
| IFC-106 | PHASE-039: Define Hexagonal module boundaries + create canonical packages/application + packages/adapters skeleton | 2025-12-28 | IFC-002 |
| IFC-107 | PHASE-039: Implement Repositories and Factories | 2026-01-29 | IFC-101,IFC-102,IFC-103,IFC-104,IFC-105 |
| IFC-108 | Implement Domain Services & Business Logic | 2026-02-08 | IFC-107 |
| IFC-109 | Define TDD Process, Coverage & Review Checklist | 2026-01-11 | IFC-002 |
| IFC-110 | Write Unit & Integration Tests for Domain Entities | 2026-02-10 | IFC-101,IFC-102,IFC-103,IFC-104,IFC-105 |
| IFC-111 | Set up SonarQube and integrate static analysis into CI/CD | 2026-02-22 | ENV-005-AI |
| IFC-112 | Implement blue/green deployment and rollback strategy | 2026-02-24 | ENV-005-AI |
| IFC-113 | Implement secrets management and encryption at rest and in transit | 2026-05-03 | IFC-072,IFC-098 |
| IFC-114 | Implement API rate limiting and DDoS protection | 2026-03-22 | IFC-003,IFC-072 |
| IFC-115 | Setup backups and disaster recovery plan | 2026-11-29 | IFC-071 |
| IFC-116 | Instrument application with OpenTelemetry, unify logs, metrics and traces | 2026-04-19 | IFC-074 |
| IFC-117 | Monitor AI models for drift, latency, hallucination and ROI | 2026-05-05 | IFC-005,AUTOMATION-002 |
| IFC-118 | Establish and maintain a risk register with mitigation actions | 2026-04-05 | IFC-010,IFC-054 |
| IFC-119 | Define recurring backlog refinement, sprint planning, review and retrospective ceremonies | 2025-12-28 |  |
| IFC-120 | Implement password reset and email verification flows | 2026-06-28 | PG-019,PG-020,PG-023,IFC-006 |

| ID | Task | Start | Finish |
| --- | --- | --- | --- |
| PG-124 | Implement SSO (SAML/OAuth) and social login providers | 2026-07-12 | PG-015,PG-024,IFC-006 |
| PG-125 | Add MFA using TOTP or SMS and allow users to enable/disable from security settings | 2026-07-26 | PG-021,PG-022,IFC-006 |
| IFC-121 | Schedule periodic secret rotation and dependency vulnerability updates | 2026-05-07 | IFC-113 |
| IFC-122 | Implement circuit breaker and retry policies for external service calls | 2026-03-24 | IFC-106,IFC-107 |
| IFC-123 | Design caching strategy (Redis/CDN) and tune Prisma queries | 2026-10-04 | IFC-007,IFC-087 |
| IFC-124 | Encrypt and aggregate audit logs; automate compliance reporting | 2026-04-21 | IFC-098 |
| PG-126 | Add in‑app onboarding, guided product tours and feedback collection | 2026-08-09 | PG-001,PG-002 |
| PG-127 | Partner Application Workflow - Dedicated partner application form with specialized fields, routing, and onboarding process | 2026-09-20 | PG-006,PG-005,GTM-002 |
| IFC-125 | Implement guardrails for prompt injection, data leakage, and monitor AI bias | 2026-05-17 | IFC-005,IFC-008 |
| IFC-126 | Continuously maintain ADR registry and developer guide updates | 2026-05-31 | IFC-100,GOV-001 |
| IFC-127 | Implement tenant isolation at database and application layers | 2026-05-03 | IFC-098,IFC-072 |
| IFC-128 | Establish AI output review and manual fallback processes | 2026-01-25 | ENV-017-AI |
| IFC-129 | Write UI and contract tests for core pages and tRPC endpoints | 2026-03-08 | IFC-110 |
| IFC-130 | Release governance: staging auto-deploy, promotion policy, quality/security gates, rollback criteria | 2026-02-26 | ENV-005-AI,IFC-111 |
| IFC-131 | Architecture boundary enforcement: domain/infrastructure dependency rules + architecture tests in CI | 2026-02-12 | IFC-106 |
| IFC-132 | Supply chain security: dependency pinning + SBOM generation in CI (npm/pnpm + container) | 2026-03-10 | ENV-005-AI |
| IFC-133 | Supply chain security: artifact signing + provenance for build outputs (images + releases) | 2026-03-26 | IFC-132 |
| IFC-134 | Container/image scanning in CI and registry with fail-on-critical policy | 2026-03-28 | ENV-003-AI,ENV-005-AI |
| IFC-135 | Create ADR pack for multi-tenancy; workflow engine choice; agent tool-calling; data classification & retention; audit logging | 2025-12-30 | IFC-002,GOV-001 |
| IFC-136 | Implement Case/Matter aggregate root with tasks; deadlines; parties; lawyer assignments | 2026-01-25 | IFC-002,IFC-003 |
| IFC-137 | Develop Appointment aggregate with conflict detection; buffers; recurrence; linkage to cases and calendars | 2026-02-14 | IFC-136,IFC-003 |
| IFC-138 | Integrate external calendar providers (Google/Microsoft) with bidirectional sync; webhook handling; idempotency; reconciliation | 2026-02-22 | IFC-137,IFC-106 |
| IFC-139 | Expose application services as agent tools and implement human approval flows with preview and rollback for high-risk actions | 2026-03-08 | IFC-136,IFC-137,IFC-003,IFC-128 |
| IFC-140 | Implement data governance workflows: DSAR requests; retention & legal hold policies; tenant-specific encryption key management; data residency compliance | 2026-05-17 | IFC-098,IFC-127 |
| IFC-141 | Evaluate n8n; custom engine; and Temporal; document decision via ADR; build event-driven minimal rules engine and integrate selected workflow engine | 2026-05-03 | IFC-136,IFC-137,IFC-135,IFC-150,IFC-151 |
| IFC-142 | Define SLOs/SLIs and alerting; establish on-call and incident management process; conduct restore drills; create capacity and cost budgets for AI inference and search | 2026-04-05 | ENV-008-AI |
| IFC-143 | Perform threat modeling and abuse-case analysis for multi-tenancy and agent tool-calling; design mitigations; schedule penetration test; implement cookie consent mechanism | 2026-05-17 | IFC-125,IFC-136,IFC-139 |
| IFC-144 | Design and implement inbound/outbound email flows: SPF/DKIM/DMARC; inbound parsing; attachments; implement general webhook handling with idempotency and retries; publish public API specification (OpenAPI) with versioning; baseline inbound email feature delivered | 2026-05-05 | IFC-137,IFC-003,IFC-150,IFC-151,IFC-106 |
| IFC-145 | Plan and execute legacy system migration: discover and map data; assess data quality; design migration scripts; run rehearsals and reconciliation reporting; finalize cutover with rollback plan | 2026-04-19 | IFC-002,IFC-136 |
| IFC-146 | Define PRD and user journey templates; create Definition of Ready criteria; develop traceability matrix linking capabilities to domain services; APIs; UIs; and tests | 2026-01-11 | IFC-000,ENV-018-AI |
| IFC-147 | Develop Case timeline UI with deadline engine: display tasks; deadlines; events; implement deadline engine to compute legal deadlines and reminders; integrate with scheduling | 2026-02-22 | IFC-136,IFC-137 |
| IFC-148 | Implement conversation record entity: store chat transcripts; tool calls; actions per case; enable search and retrieval; integrate audit logging and data retention policies | 2026-05-31 | IFC-139,IFC-126 |
| IFC-149 | Implement action preview and rollback UI for agent-initiated changes; integrated with approval flows | 2026-03-08 | IFC-139,IFC-147 |
| EXC-SEC-001 | Implement Secrets Management (e.g., HashiCorp Vault) for API Keys (OpenAI, etc.). | 2025-12-14 | ENV-013-AI |
| IFC-150 | Domain events infrastructure: event contracts + versioning + outbox pattern + idempotent publishing | 2026-04-05 | IFC-002,IFC-106,IFC-098 |
| IFC-151 | Event consumers framework: retries + DLQ + backoff + observability; standard webhook/idempotency utilities | 2026-04-19 | IFC-150,ENV-008-AI |
| IFC-152 | Case document model: storage metadata, versioning, ACL mapping (tenant + case + role), and audit hooks | 2026-05-17 | IFC-136,IFC-127,IFC-094 |
| IFC-153 | Ingestion pipeline for case files: upload/email attachment intake, antivirus scan, metadata extraction, storage, and indexing triggers | 2026-05-31 | IFC-152,IFC-144,IFC-151,IFC-106 |
| IFC-154 | OCR + text extraction worker for scanned PDFs/images; normalized text artifacts stored for search and RAG | 2026-06-01 | IFC-153 |
| IFC-155 | Permissioned indexing for case documents and notes: full-text + embeddings with tenant/case ACL filters | 2026-06-02 | IFC-154,IFC-127,ENV-004-AI |
| IFC-156 | Case RAG tool: agent retrieval tool constrained by tenant/case permissions; citations + source trace; prompt-injection hardening for retrieved content | 2026-06-14 | IFC-155,IFC-139,IFC-125 |
| IFC-157 | Notification service MVP: unified delivery (in-app + email) with preference model (backend), templates, and audit logging | 2026-05-19 | IFC-144,IFC-098,IFC-151 |
| IFC-158 | Scheduling communications: ICS invites, reschedule/cancel flows, reminders; integrated with notification service and calendar sync | 2026-05-21 | IFC-138,IFC-157,IFC-137 |
| IFC-159 | Case timeline enrichment: include documents/versions, communications (email/WhatsApp), and agent actions/approvals as timeline events | 2026-06-14 | IFC-147,IFC-153,IFC-144,IFC-149,IFC-148 |
| IFC-160 | Artifact path conventions + CI lint to prevent repo drift | 2025-12-18 | ENV-001-AI,ENV-002-AI |
| IFC-163 | Standardize worker runtime under apps/workers (events, ingestion, notifications) with shared job framework, metrics, and deployment packaging | 2026-06-16 | IFC-150,IFC-151,IFC-153,IFC-157,IFC-106 |
| EXP-PLATFORM-001 | Platform utilities package - feature flags, resilience patterns, job queues, workflow orchestration | 2026-05-31 | ENV-001-AI |
| EXP-SCRIPTS-001 | Utility scripts - task data cleanup, schema fixes, dev monitoring | 2026-06-01 | EXC-INIT-001 |
| EXP-ARTIFACTS-002 | Cookie Consent Component Implementation (GDPR) | 2026-06-28 |  |
| EXP-ARTIFACTS-003 | Vulnerability Baseline Documentation | 2026-06-30 |  |
| EXP-REPORTS-001 | Project Status & Tracking Reports (Continuous) | 2025-12-14 |  |
| EXP-REPORTS-002 | Technical Debt & Quality Tracking (Continuous) | 2025-12-14 |  |
| EXP-REPORTS-003 | Risk Management & Compliance Tracking | 2025-12-14 |  |
| EXP-REPORTS-004 | Sprint Audit System (Continuous) | 2025-12-14 |  |
| EXP-REPORTS-005 | Build & Validation Reports (Continuous) | 2025-12-14 |  |
| TRACK-001 | Status Snapshot UI - Real-time task status tracking with manual refresh button | 2026-06-28 | EXP-REPORTS-001 |
| TRACK-002 | Quality Metrics UI - Debt ledger coverage SonarQube with refresh buttons | 2026-06-30 | EXP-REPORTS-002,IFC-088 |
| TRACK-003 | Risk Register UI - View and update risks with mitigation tracking | 2026-07-02 | EXP-REPORTS-003,IFC-118 |
| TRACK-004 | AI Metrics UI - Model performance drift detection cost tracking | 2026-07-04 | IFC-117,AUTOMATION-002 |
| TRACK-005 | Security Dashboard UI - Vulnerability tracking scan results security posture | 2026-07-02 | EXC-SEC-001,IFC-121 |
| TRACK-006 | Build Health UI - Validation results build status test results | 2026-07-05 | EXP-REPORTS-005,ENV-005-AI |
| IFC-164 | Ollama Local Development - Real Integration & Benchmarks | 2026-09-20 | IFC-005,IFC-086,IFC-095 |
| IFC-165 | Performance Baseline - Real Benchmarks with Live Infrastructure | 2026-09-22 | ENV-015-AI,IFC-003,ENV-005-AI |
| IFC-166 | NBA Demo Video Recording | 2026-11-15 | IFC-039 |
| IFC-175 | RAG Production Validation - Follow-up to IFC-039 | 2026-11-17 | IFC-039 |
| IFC-167 | Wire workers to pnpm dev startup - Follow-up to IFC-163 | 2026-06-28 | IFC-163 |
| IFC-168 | Convert AI worker to BullMQ queue consumer - Follow-up to IFC-005/IFC-085 | 2026-06-30 | IFC-005,IFC-085,IFC-163 |
| IFC-169 | Require Supabase env vars - Follow-up to IFC-006 | 2026-05-31 | IFC-006 |
| IFC-170 | Implement Twilio SMS channel - Follow-up to IFC-157 | 2026-06-02 | IFC-157 |
| IFC-171 | Implement webhook notification channel - Follow-up to IFC-157 | 2026-06-04 | IFC-157 |

| ID | Task | Start | Finish |
| --- | --- | --- | --- |
| IFC-172 | Complete Microsoft Calendar integration - Follow-up to IFC-138 | 2026-06-14 | IFC-138 |
| IFC-173 | Complete inbound email parsing endpoint - Follow-up to IFC-144 | 2026-06-16 | IFC-144 |
| IFC-174 | Run REAL Ollama benchmarks - Follow-up to IFC-085 | 2026-07-03 | IFC-085,IFC-168 |
| PG-128 | FLOW-045: AI Chain Versioning Admin UI - Wire IFC-086 Backend | 2026-06-28 | IFC-086,PG-104 |

## Version 2 (saved 2026-02-05)

Note of the change: chore(tracker): update sprint 0-3 metrics (GOV-001)

Added:

| ID | Task | Start | Finish |
| --- | --- | --- | --- |
| IFC-176 | AI Output Review - Validators Layer (Zod schemas for review inputs/outputs) | 2026-02-02 | IFC-128 |
| IFC-177 | AI Output Review - Application Layer (use cases and ports) | 2026-02-03 | IFC-176,IFC-128 |
| IFC-178 | AI Output Review - Database Schema (Prisma models) | 2026-02-03 | IFC-128 |
| IFC-179 | AI Output Review - Adapters Layer (repository implementation) | 2026-02-04 | IFC-177,IFC-178 |
| IFC-180 | AI Output Review - tRPC Router (API endpoints) | 2026-02-05 | IFC-179 |
| IFC-181 | AI Output Review - Frontend UI (review queue page) | 2026-03-05 | IFC-180,IFC-149 |
| IFC-182 | Home Page tRPC Router - Welcome summary activity feed AI insights pinned items daily goals | 2026-06-14 | IFC-003,IFC-089 |
| IFC-183 | Notifications tRPC Router - List mark read preferences real-time subscription | 2026-06-16 | IFC-003 |
| PG-129 | Authenticated Home Page - Welcome summary activity feed AI insights pinned items goals | 2026-06-28 | IFC-182,IFC-069,IFC-095 |
| PG-130 | Notifications Inbox Page - List mark read real-time updates filters | 2026-06-30 | IFC-183 |
| PG-131 | Deal Forecast UI Pages - Probability gauge risk factors recommendations history | 2026-07-01 | IFC-092,IFC-095 |
| PG-132 | Smart Lead Routing UI - Rules configuration assignment dashboard SLA monitoring | 2026-08-23 | IFC-030 |
| IFC-184 | Contact tRPC Router - CRUD search relationship linking timeline integration | 2026-02-04 | IFC-102,IFC-107,IFC-003 |
| IFC-185 | Account tRPC Router - CRUD hierarchy contacts opportunities activity feed | 2026-02-04 | IFC-103,IFC-107,IFC-003 |
| IFC-186 | Deal/Opportunity tRPC Router - CRUD pipeline stages probability history products | 2026-02-05 | IFC-104,IFC-107,IFC-003 |
| IFC-187 | Task tRPC Router - CRUD assignment scheduling reminders timeline integration | 2026-02-15 | IFC-105,IFC-107,IFC-003 |
| IFC-188 | Ticket Domain Entity - Aggregate with SLA priority escalation categories customer linking | 2026-02-04 | IFC-002,IFC-003 |
| IFC-189 | Ticket tRPC Router - CRUD SLA tracking escalation assignment customer portal | 2026-02-22 | IFC-188,IFC-107,IFC-003 |
| IFC-190 | Analytics tRPC Router - Sales metrics conversion funnels time series exports | 2026-07-01 | ANALYTICS-001,IFC-003 |
| PG-133 | Contact List & Detail Pages - Search filters relationship view activity timeline | 2026-02-22 | IFC-184 |
| PG-134 | Account List & Detail Pages - Hierarchy view contacts opportunities revenue charts | 2026-02-22 | IFC-185 |
| PG-135 | Deal Pipeline Page - Kanban board drag-drop stages value totals filtering | 2026-03-01 | IFC-186 |
| PG-136 | Task Management Page - List calendar view assignments reminders entity linking | 2026-03-01 | IFC-187 |
| PG-137 | Ticket Management Page - List detail SLA indicators escalation customer portal view | 2026-03-05 | IFC-189 |
| PG-138 | Case List & Detail Pages - Party management deadline tracking document links timeline | 2026-03-15 | IFC-136 |
| PG-139 | Appointment Scheduling Page - Calendar view conflict detection case linking reminders | 2026-03-15 | IFC-137 |
| PG-140 | Document Manager Page - Upload viewer version history ACL management search | 2026-04-01 | IFC-152,IFC-153 |
| PG-141 | Email Compose & History Page - Thread view compose attachments templates | 2026-04-01 | IFC-144 |
| PG-142 | Sentiment Analysis UI - Timeline badges trend visualization email sentiment preview | 2026-11-15 | IFC-039 |
| PG-143 | Churn Risk Dashboard - Health scores risk indicators intervention triggers trend charts | 2026-12-01 | IFC-095 |
| PG-144 | AI Search UI - Universal search bar AI-powered results citations source highlighting | 2026-12-01 | IFC-156,IFC-155 |
| PG-145 | Next Best Action Dashboard - NBA recommendations deal insights action cards success metrics | 2026-12-15 | IFC-095 |
| PG-146 | AI Operations Dashboard - Model performance drift detection cost tracking error rates | 2027-01-01 | IFC-117 |
| PG-147 | Workflow List & Status UI - Active workflows execution status step visualization logs | 2027-01-15 | IFC-028,IFC-141 |

Changed:

| ID | Task | Start | Other |
| --- | --- | --- | --- |
| PG-001 | Home Page (Public) |  | was named Home Page |
| PG-104 | Settings Home | 2026-12-08 → 2026-06-21 (-170d) |  |

## Version 3 (saved 2026-02-06)

Note of the change: chore(tracker): update GOV-001 and IFC-182 metrics (GOV-001)

Added:

| ID | Task | Finish |
| --- | --- | --- |
| IFC-191 | User Timezone Support - Add timezone field to User model with preference UI and timezone-aware greeting | IFC-182 |
| IFC-192 | Contact Activity Tracking - Add lastContactedAt field to Contact model with auto-update on interactions | IFC-182,IFC-184 |
| IFC-193 | Activity Feed Type Registry - Enum-based mapping from AuditLogEntry.eventType to ActivityFeedType with metadata | IFC-182 |
| IFC-194 | Router Middleware Standardization - Migrate all routers from manual getTenantId to tenantProcedure | IFC-182,IFC-003 |
| IFC-195 | Customizable Daily Goals - Multi-type goal support (revenue calls meetings tasks custom) with user preferences | IFC-182 |
| IFC-196 | Home Page Response Caching - Redis caching for getWelcomeSummary with event-driven invalidation | IFC-182,IFC-075 |

## Version 4 (saved 2026-02-15)

Note of the change: fix(metrics): restore completed statuses for sprint tasks

Added:

| ID | Task | Start | Finish |
| --- | --- | --- | --- |
| IFC-197 | AI Monitoring tRPC Router - Expose drift detection latency metrics hallucination checks ROI tracking and agent status via tRPC endpoints | 2026-02-09 | IFC-117,IFC-125 |
| PG-148 | Lead Scoring Dashboard at /agent-approvals/lead-scoring - Score distributions model accuracy top leads factor breakdown |  | IFC-005,IFC-023,IFC-181 |
| PG-149 | Experiments Dashboard at /agent-approvals/experiments - A/B test management experiment results statistical analysis variant comparison |  | IFC-025,IFC-181 |
| PG-150 | AI Review History at /agent-approvals/history - Filterable history of all AI output reviews with timeline and audit trail |  | IFC-181,IFC-180 |
| PG-151 | Active Agents Dashboard at /agent-approvals/agents - Agent status monitoring active sessions task assignments health indicators |  | IFC-021,IFC-139,IFC-197 |
| PG-152 | Agent Logs Viewer at /agent-approvals/logs - Conversation transcripts tool call records searchable log timeline |  | IFC-148,IFC-197 |
| PG-153 | Latency Monitor Dashboard at /agent-approvals/latency - SLO compliance latency percentiles chain performance phase-level monitoring |  | IFC-117,IFC-197 |
| IFC-198 | Billing Domain Core - Invoice/Receipt aggregates, payment state machine, tax/refund rules | 2026-02-09 | IFC-099,IFC-107 |
| IFC-199 | Document Domain Core - lifecycle, signature state machine, ACL and retention invariants | 2026-02-16 | IFC-106,IFC-127 |
| IFC-200 | Analytics Adapter Layer - query builders and export pipeline for metrics router | 2026-02-16 | IFC-096,IFC-106 |
| IFC-201 | Settings Control Plane Foundations - domain models, adapters, and router for users/teams/roles/permissions/audit/integrations/webhooks/security | 2026-02-17 | IFC-072,IFC-098,IFC-099,IFC-106,IFC-124 |
| IFC-202 | Activity Feed Stats Endpoint - getStats aggregation with counts by type source and entity over time windows |  | IFC-069 |
| IFC-203 | Activity Feed Full-Text Search - search endpoint with text query across titles descriptions and actor names |  | IFC-069,IFC-155 |
| IFC-204 | Activity Feed Performance Observability - queryDurationMs tracking structured logging and latency alerting |  | IFC-069 |
| IFC-205 | Ticket Full-Text Search - add search parameter to ticketQuerySchema and TicketService for subject ticketNumber contactName searching |  | IFC-189 |
| IFC-206 | Ticket Stats Enhancement - add SLA status breakdown time window filtering and sortBy sortOrder to ticket query schema |  | IFC-189 |
| IFC-207 | Ticket Query Performance Tracking - add queryDurationMs to ticket list and stats endpoints using performance.now pattern from timeline router |  | IFC-189 |
| PG-154 | Fix View Schedule 404 - Welcome Banner links to /calendar which does not exist |  | PG-129 |
| PG-155 | Fix 6 broken Quick Action hrefs - /calls/new /emails/compose /calendar/new /tasks/new /deals/new /documents/upload all return 404 |  | PG-129 |
| PG-156 | Customizable Daily Goals - settings UI + home.updateDailyGoal mutation + read from User.preferences instead of hardcoded targetValue=5000 |  | PG-129 |
| PG-157 | Visible Pin to Home buttons on entity list items and detail page headers - not just hidden in 3-dot MoreActionsButton sheet |  | PG-129 |
| PG-158 | Drag and drop pinned items reorder - backend API exists (home.reorderPinnedItems) needs @dnd-kit frontend integration |  | PG-129 |
| PG-159 | Stale pin handling - deleted or inaccessible pinned entities should show Item unavailable with unpin option |  | PG-129 |
| PG-160 | View All AI Insights page - /insights route with getAllInsights endpoint pagination and filtering by insight type |  | PG-129 |
| PG-161 | Notifications integration on home page - bell icon header badge count IFC-183 Prisma model and notification router |  | PG-129,IFC-183 |
| PG-162 | AI Insights from ML model - LangChain chain for generating daily insights with caching confidence scores and action recommendations |  | PG-129,IFC-095 |
| PG-163 | Home page integration tests - test home.router endpoints against real database with seed data |  | PG-129 |
| PG-164 | Home page E2E tests - 5 Playwright scenarios: public page auth redirect insight click quick action pin/unpin flow |  | PG-129,PG-155 |
| PG-165 | Update PRD checkboxes for home page - mark completed acceptance criteria and annotate deferred items with task references |  | PG-129 |
| PG-166 | Lighthouse audit on authenticated home page - verify NFR targets TTI <1s Performance >=90 Accessibility >=90 |  | PG-129 |
| PG-167 | Analytics tracking plan for home page - define and implement business metrics events for section interactions |  | PG-129 |
| PG-168 | Monitoring and Sentry error tracking for home route - error boundaries breadcrumbs performance spans |  | PG-129 |
| PG-169 | Developer Guides Page |  | PG-032 |
| PG-170 | Architecture Docs Page |  | PG-032 |
| PG-171 | Integration Resources Page |  | PG-032;PG-034 |

Changed:

| ID | Task | Start | Finish | Other |
| --- | --- | --- | --- | --- |
| IFC-089 | FLOW-005-A, FLOW-006, FLOW-014, FLOW-010-A: Contacts Module - Create/Edit/Search |  | IFC-002,IFC-004 → IFC-002,IFC-004,IFC-102 |  |
| IFC-091 | Deals Pipeline - Kanban Board |  | IFC-002,IFC-004 → IFC-002,IFC-004,IFC-104 |  |
| IFC-093 | Tickets Module - SLA Tracking |  | IFC-002,IFC-004 → IFC-002,IFC-004,IFC-188 |  |
| IFC-095 | Churn Risk & Next Best Action |  | IFC-005,IFC-090 → IFC-005,IFC-090,IFC-108 |  |
| IFC-096 | Custom Reports & Dashboards |  | IFC-091,IFC-092 → IFC-091,IFC-092,IFC-108 |  |
| PG-025 | Billing Portal |  | IFC-099 → IFC-099,IFC-198 |  |
| PG-026 | Checkout |  | PG-025 → PG-025,IFC-198 |  |
| PG-027 | Invoices |  | PG-025 → PG-025,IFC-198 |  |
| PG-028 | Invoice Detail |  | PG-027 → PG-027,IFC-198 |  |
| PG-029 | Payment Methods |  | PG-025 → PG-025,IFC-198 |  |
| PG-030 | Subscriptions |  | PG-025 → PG-025,IFC-198 |  |
| PG-031 | Receipts |  | PG-025 → PG-025,IFC-198 |  |
| PG-032 | Docs Index | 2026-07-12 → 2026-02-09 (-153d) |  |  |
| PG-084 | Emails |  | IFC-099 → IFC-099,IFC-144 |  |
| PG-085 | Email Templates |  | PG-084 → PG-084,IFC-144 |  |
| PG-086 | SMS Templates |  | PG-085 → PG-085,IFC-144 |  |
| PG-087 | Calls |  | IFC-099 → IFC-099,IFC-144 |  |
| PG-108 | Users |  | IFC-098 → IFC-098,IFC-201 |  |
| PG-109 | Roles |  | IFC-098 → IFC-098,IFC-201 |  |
| PG-110 | Permissions |  | PG-109 → PG-109,IFC-201 |  |
| PG-111 | Teams |  | PG-108 → PG-108,IFC-201 |  |
| PG-112 | Audit Log |  | IFC-098,IFC-124 → IFC-098,IFC-124,IFC-201 |  |
| PG-114 | Webhooks |  | IFC-099 → IFC-099,IFC-201 |  |
| PG-115 | Integrations |  | IFC-099 → IFC-099,IFC-201 |  |
| PG-120 | Security |  | IFC-072 → IFC-072,IFC-201 |  |
| PG-128 | FLOW-045: AI Chain Versioning Admin UI - Wire IFC-086 Backend |  | IFC-086,PG-104 → IFC-086 |  |
| IFC-181 | AI Output Review - Frontend UI (review queue page) | 2026-03-05 → 2026-02-07 (-26d) |  |  |
| IFC-183 | Notifications tRPC Router - List mark read preferences real-time subscription |  | IFC-003 → IFC-003,IFC-157 |  |
| IFC-189 | Ticket tRPC Router - CRUD SLA tracking escalation assignment customer portal | 2026-02-22 → 2026-02-06 (-16d) |  |  |
| IFC-190 | Analytics tRPC Router - Sales metrics conversion funnels time series exports |  | ANALYTICS-001,IFC-003 → ANALYTICS-001,IFC-003,IFC-200 |  |
| PG-135 | Deal Pipeline Page - Kanban board drag-drop stages value totals filtering | 2026-03-01 → 2026-02-09 (-20d) |  |  |
| PG-136 | Task Management Page - List calendar view assignments reminders entity linking | 2026-03-01 → 2026-02-09 (-20d) |  |  |
| PG-137 | Ticket Management Page - List detail SLA indicators escalation customer portal view | 2026-03-05 → 2026-02-09 (-24d) |  |  |
| PG-142 | Sentiment Analysis Dashboard at /agent-approvals/sentiment - Timeline badges trend visualization email sentiment preview | 2026-11-15 → none | IFC-039 → IFC-039,IFC-181 | was named Sentiment Analysis UI - Timeline badges trend visualization email sentiment preview |
| PG-143 | Churn Risk Dashboard at /agent-approvals/churn-risk - Health scores risk indicators intervention triggers trend charts | 2026-12-01 → none | IFC-095 → IFC-095,IFC-181 | was named Churn Risk Dashboard - Health scores risk indicators intervention triggers trend charts |
| PG-144 | AI Search (RAG) Page at /agent-approvals/ai-search - Universal search bar AI-powered results citations source highlighting | 2026-12-01 → none | IFC-156,IFC-155 → IFC-156,IFC-155,IFC-181 | was named AI Search UI - Universal search bar AI-powered results citations source highlighting |
| PG-146 | Drift Detection Dashboard at /agent-approvals/drift - Model performance drift alerts cost tracking error rates | 2027-01-01 → none | IFC-117 → IFC-117,IFC-197 | was named AI Operations Dashboard - Model performance drift detection cost tracking error rates |

## Version 5 (saved 2026-02-16)

Note of the change: feat: integrate AI intelligence, routing, and platform workflow updates

Changed:

| ID | Task | Start |
| --- | --- | --- |
| PG-144 | AI Search (RAG) Page at /agent-approvals/ai-search - Universal search bar AI-powered results citations source highlighting | none → 2026-02-16 |
| PG-148 | Lead Scoring Dashboard at /agent-approvals/lead-scoring - Score distributions model accuracy top leads factor breakdown | none → 2026-02-16 |
| PG-149 | Experiments Dashboard at /agent-approvals/experiments - A/B test management experiment results statistical analysis variant comparison | none → 2026-02-16 |
| PG-150 | AI Review History at /agent-approvals/history - Filterable history of all AI output reviews with timeline and audit trail | none → 2026-02-16 |
| IFC-205 | Ticket Full-Text Search - add search parameter to ticketQuerySchema and TicketService for subject ticketNumber contactName searching | none → 2026-02-13 |
| IFC-206 | Ticket Stats Enhancement - add SLA status breakdown time window filtering and sortBy sortOrder to ticket query schema | none → 2026-02-13 |
| IFC-207 | Ticket Query Performance Tracking - add queryDurationMs to ticket list and stats endpoints using performance.now pattern from timeline router | none → 2026-02-14 |

## Version 6 (saved 2026-02-19)

Note of the change: chore(tracker): re-sync sprint metrics after live tracker updates; remove sonarqube-fix skill; add documents component

Changed:

| ID | Task | Start |
| --- | --- | --- |
| PG-022 | MFA Verify | 2026-06-22 → 2026-02-17 (-125d) |
| IFC-183 | Notifications tRPC Router - List mark read preferences real-time subscription | 2026-06-16 → 2026-02-17 (-119d) |
| PG-140 | Document Manager Page - Upload viewer version history ACL management search | 2026-04-01 → 2026-02-19 (-41d) |
| PG-146 | Drift Detection Dashboard at /agent-approvals/drift - Model performance drift alerts cost tracking error rates | none → 2026-02-16 |
| PG-151 | Active Agents Dashboard at /agent-approvals/agents - Agent status monitoring active sessions task assignments health indicators | none → 2026-02-18 |
| PG-152 | Agent Logs Viewer at /agent-approvals/logs - Conversation transcripts tool call records searchable log timeline | none → 2026-02-17 |
| PG-153 | Latency Monitor Dashboard at /agent-approvals/latency - SLO compliance latency percentiles chain performance phase-level monitoring | none → 2026-02-17 |

## Version 7 (saved 2026-02-22)

Note of the change: chore(tracker): re-sync all sprint metrics and add StatusHistory/StatusTrackerLogic/status-api tracker tests

Changed:

| ID | Task | Start | Finish |
| --- | --- | --- | --- |
| IFC-062 | FLOW-006: Lead to Deal Conversion Logic | 2026-07-02 → 2026-02-20 (-132d) |  |
| IFC-065 | FLOW-009: Deal Won Closure Workflow | 2026-07-04 → 2026-02-21 (-133d) |  |
| IFC-066 | FLOW-009: Deal Lost Closure Workflow | 2026-07-05 → 2026-02-22 (-133d) |  |
| IFC-067 | FLOW-012: Automatic Ticket Routing Engine | 2026-06-28 → 2026-02-21 (-127d) |  |
| IFC-068 | FLOW-015: Feedback Analytics Dashboard | 2026-06-28 → 2026-02-21 (-127d) |  |
| IFC-094 | Documents Management - Upload & Sign | 2026-04-05 → 2026-02-19 (-45d) |  |
| PG-023 | Email Verification | 2026-06-23 → 2026-02-19 (-124d) |  |
| PG-024 | SSO Callback | 2026-06-24 → 2026-02-20 (-124d) |  |
| PG-027 | Invoices | 2026-07-02 → 2026-02-20 (-132d) |  |
| PG-028 | Invoice Detail | 2026-07-04 → 2026-02-22 (-132d) |  |
| PG-029 | Payment Methods | 2026-07-05 → 2026-02-22 (-133d) |  |
| PG-030 | Subscriptions | 2026-07-06 → 2026-02-22 (-134d) |  |
| IFC-120 | Implement password reset and email verification flows | 2026-06-28 → 2026-02-20 (-128d) |  |
| IFC-152 | Case document model: storage metadata, versioning, ACL mapping (tenant + case + role), and audit hooks |  | IFC-136,IFC-127,IFC-094 → IFC-136,IFC-127 |
| TRACK-002 | Quality Metrics UI - Debt ledger coverage SonarQube with refresh buttons | 2026-06-30 → 2026-02-22 (-128d) |  |
| PG-155 | Fix 6 broken Quick Action hrefs - /calls/new /emails/compose /calendar/new /tasks/new /deals/new /documents/upload all return 404 | none → 2026-02-19 |  |
| PG-171 | Integration Resources Page | none → 2026-02-20 | PG-032;PG-034 → PG-032,PG-034 |

## Version 8 (saved 2026-02-23)

Note of the change: fix(governance): resolve all 3 sprint validation CI failures

Added:

| ID | Task | Start | Finish |
| --- | --- | --- | --- |
| PG-172 | Billing Ghost Pages - Usage Plans Upgrade Cancel and Settings |  | PG-025,PG-030 |
| PG-173 | Ticket Configuration Pages - SLA Policies Types and Automations |  | PG-137,IFC-189,IFC-093 |
| PG-174 | Notification Configuration Pages - Channels and Quiet Hours |  | IFC-157 |
| PG-175 | Deals Trash Page - Soft-deleted deals list with restore and permanent delete |  | PG-135 |
| PG-176 | Governance Quality Report Sub-Pages - Lighthouse Coverage and Performance views |  | PG-015 |
| PG-177 | Analytics Saved Report Pages - Weekly Monthly and Quarterly views |  | IFC-068 |
| PG-178 | Module Settings Pages - 11 per-module configuration pages at /settings/[module] |  | PG-104,IFC-076 |
| DOC-002 | Update sitemap.md to reflect actual 101 page.tsx files, add app/sitemap.ts XML generator, app/robots.ts, reconcile against navigation-reachability-audit.md | 2026-02-23 |  |
| DOC-003 | Update PAGE_MAP_AND_FLOWS.md to reflect 101 pages and current flows, verify auth diagrams, update API integration checklist, reconcile with audit |  | DOC-002 |
| DOC-004 | Update ui-flow-mapping.md cross-reference matrix to 101 routes, verify API router procedure counts, update implementation and backend integration status |  | DOC-002 |
| DOC-005 | Complete overhaul of page-registry.md from 8 routes to all 101 routes with task ID, KPI targets, code file path, component breakdown, API router, E2E test path, RACI assignments |  | DOC-002 |
| DOC-006 | Create unified IA reference combining reachability audit route inventory with flow mapping user journey context, linking routes to flows to components to APIs to nav layers |  | DOC-002,DOC-003,DOC-004,DOC-005 |
| DOC-007 | Conduct full accessibility compliance gap assessment: Lighthouse a11y audit on all 27 URLs, document WCAG 2.1 AA conformance level per route, identify all Level A and AA failures, produce gap report with remediation priorities | 2026-02-23 |  |
| DOC-008 | Create VPAT 2.5 document, WCAG 2.1 AA conformance statement, axe-core/pa11y test suite, enforce accessibility in CI (error not warn), accessibility ADR, screen reader testing plan |  | DOC-007 |
| DOC-009 | Create content audit framework and perform initial audit: quantitative URL inventory (101 routes with HTTP status, response time, title, meta), qualitative content review, SEO audit for public pages, stale content detection |  | DOC-002,DOC-005 |

Changed:

| ID | Task | Start | Finish |
| --- | --- | --- | --- |
| IFC-037 | PHASE-005: Analytics Dashboard Design |  | IFC-032,ANALYTICS-001 → IFC-032,ANALYTICS-001,IFC-190 |
| IFC-038 | Analytics Implementation |  | IFC-037,ANALYTICS-001 → IFC-037,ANALYTICS-001,IFC-190 |
| PG-034 | Webhooks Docs | 2026-07-16 → 2026-02-23 (-143d) |  |
| PG-039 | Dev Apps | 2026-07-22 → 2026-02-23 (-149d) |  |
| TRACK-003 | Risk Register UI - View and update risks with mitigation tracking | 2026-07-02 → 2026-02-22 (-130d) |  |
| TRACK-004 | AI Metrics UI - Model performance drift detection cost tracking | 2026-07-04 → 2026-02-22 (-132d) |  |
| TRACK-005 | Security Dashboard UI - Vulnerability tracking scan results security posture | 2026-07-02 → 2026-02-22 (-130d) |  |
| PG-131 | Deal Forecast UI Pages - Probability gauge risk factors recommendations history | 2026-07-01 → 2026-02-22 (-129d) |  |
| PG-154 | Fix View Schedule 404 - Welcome Banner links to /calendar which does not exist | none → 2026-02-22 |  |
| PG-165 | Update PRD checkboxes for home page - mark completed acceptance criteria and annotate deferred items with task references | none → 2026-02-22 |  |

## Version 9 (saved 2026-02-28)

Note of the change: chore(artifacts,tracker): sync sprint metrics, add sprint-2/4/8/10/12 audit evidence runs, update debt-ledger

Added:

| ID | Task | Start | Finish |
| --- | --- | --- | --- |
| DOC-010 | Create route reconciliation script comparing conformance-statement.md routes against apps/web/src/app/ directory tree | 2026-02-27 | DOC-008 |
| DOC-011 | Add compliance-check Section 11 requiring VPAT/conformance review when PG-*/IFC-* UI tasks add or modify routes |  | DOC-008 |
| DOC-012 | Establish quarterly accessibility documentation review cadence with recurring sprint task template |  | DOC-008 |
| DOC-013 | Amend ADR-038 with Documentation Maintenance section mandating accessibility doc updates when scope changes |  | DOC-008 |
| PG-179 | Press Release Detail Page - dynamic /press/[id] route for individual press releases linked from /press index page (content audit finding F-004) |  | PG-007 |
| IFC-208 | Lighthouse SEO CI enforcement and og:image - change lighthouserc.js SEO assertion from warn to error and add og:image meta tag to root layout (content audit findings F-005 F-006) |  | DOC-009 |
| IFC-209 | Fix sitemap.ts defects - replace new Date() lastModified with actual file modification timestamps, add all 6 blog post slugs, add dynamic route entries for /careers/[id] and /lp/[slug] (content audit findings F-007 F-008 F-009) |  | DOC-002,DOC-009 |
| IFC-210 | Fill SEO metadata gaps on public pages - add description OG and Twitter tags to /pricing, complete OG tags on /about and /features, add layout-level metadata for auth-flow pages (content audit findings F-010 F-011 F-012) |  | DOC-009 |
| DOC-014 | Automated content audit script - TypeScript CLI that scans page.tsx files, resolves metadata chains, calculates SEO scores, detects ghost links, and regenerates content-audit-results.json; integrates as CI check on PR modifying app routes |  | DOC-009 |

Changed:

| ID | Task | Start | Other |
| --- | --- | --- | --- |
| PG-036 | SDK Guides | 2026-07-19 → 2026-02-24 (-145d) |  |
| PG-037 | CLI Docs | 2026-07-20 → 2026-02-25 (-145d) |  |
| PG-038 | Auth Guides | 2026-07-21 → 2026-02-25 (-146d) |  |
| PG-040 | New Dev App | 2026-07-23 → 2026-02-25 (-148d) |  |
| PG-041 | Dev App Detail | 2026-07-24 → 2026-02-24 (-150d) |  |
| PG-042 | Dev App Edit | 2026-07-25 → 2026-02-27 (-148d) |  |
| PG-043 | Help Center Index | 2026-07-26 → 2026-02-28 (-148d) |  |
| IFC-191 | User Timezone Support - Add timezone field to User model with preference UI and timezone-aware greeting | none → 2026-02-25 |  |
| IFC-192 | Contact Activity Tracking - Add lastContactedAt field to Contact model with auto-update on interactions | none → 2026-02-27 |  |
| IFC-195 | Customizable Daily Goals - Multi-type goal support (revenue calls meetings tasks custom) with user preferences | none → 2026-02-27 |  |
| PG-156 | Customizable Daily Goals - settings UI + home.updateDailyGoal mutation + read from User.preferences instead of hardcoded targetValue=5000 | none → 2026-02-28 |  |
| PG-157 | Visible Pin to Home buttons on entity list items and detail page headers - not just hidden in 3-dot MoreActionsButton sheet | none → 2026-02-28 |  |
| DOC-003 | Update PAGE_MAP_AND_FLOWS.md to reflect 103 pages and current flows, verify auth diagrams, update API integration checklist, reconcile with audit | none → 2026-02-23 | was named Update PAGE_MAP_AND_FLOWS.md to reflect 101 pages and current flows, verify auth diagrams, update API integration checklist, reconcile with audit |
| DOC-004 | Update ui-flow-mapping.md cross-reference matrix to 103 routes, verify API router procedure counts (39 routers, 366 procedures), update implementation and backend integration status | none → 2026-02-23 | was named Update ui-flow-mapping.md cross-reference matrix to 101 routes, verify API router procedure counts, update implementation and backend integration status |
| DOC-005 | Complete overhaul of page-registry.md from 8 routes to all 101 routes with task ID, KPI targets, code file path, component breakdown, API router, E2E test path, RACI assignments | none → 2026-02-23 |  |
| DOC-006 | Create unified IA reference combining reachability audit route inventory with flow mapping user journey context, linking routes to flows to components to APIs to nav layers | none → 2026-02-24 |  |
| DOC-008 | Create VPAT 2.5 document, WCAG 2.1 AA conformance statement, axe-core/pa11y test suite, enforce accessibility in CI (error not warn), accessibility ADR, screen reader testing plan | none → 2026-02-23 |  |
| DOC-009 | Create content audit framework and perform initial audit: quantitative URL inventory (103 routes with HTTP status, response time, title, meta), qualitative content review, SEO audit for public pages, stale content detection | none → 2026-02-24 | was named Create content audit framework and perform initial audit: quantitative URL inventory (101 routes with HTTP status, response time, title, meta), qualitative content review, SEO audit for public pages, stale content detection |

## Version 10 (saved 2026-03-06)

Note of the change: chore(cleanup): sync remaining modified files - ai-worker chains/scripts, project-tracker metrics JSONs, web/workers updates, artifacts reports, debt-ledger

Added:

| ID | Task | Start | Finish |
| --- | --- | --- | --- |
| DOC-015 | Docs Integrity Reconciliation - Regenerate and sync conflicting design-document route totals from filesystem source of truth |  | DOC-014,IFC-209,IFC-210 |
| DOC-016 | Docs Integrity CI Gate - Automated cross-document route-total drift detection and PR enforcement |  | DOC-014,DOC-015 |
| IFC-211 | Goal Settings RBAC - Role-based permissions for daily goal management (manager team goals and admin org defaults) |  | IFC-195,IFC-098 |
| IFC-212 | Wire API container to QueueAIService for BullMQ-backed lead scoring |  | IFC-015,IFC-125,IFC-168 |
| IFC-213 | Replace Math.random connector health checks with adapter-backed health checks in integrations router | 2026-03-04 | IFC-099 |
| IFC-214 | Redis-backed AI Monitoring State Bridge - Replace process-local singleton reads with shared Redis telemetry store |  | IFC-015,IFC-168,IFC-197 |
| IFC-215 | AI Monitoring Payload Fidelity - Replace tokenCost model and hallucination placeholders with real chain metadata |  | IFC-117,IFC-197,IFC-214 |
| A11Y-REVIEW-001 | Execute first quarterly accessibility documentation review using template |  | DOC-012 |
| IFC-216 | Entity Detail File Upload/Download Wiring - Wire file upload and download handlers on entity detail pages (Lead Contact Deal). Upload: file picker to upload mutation to Supabase Storage. Download: presigned URL to browser download. Follows IFC-094 (Pattern 1 - infra-only). Resolves WIRE-IFC-094-001. |  | IFC-094 |
| IFC-217 | Entity Detail Email Compose Wiring - Wire existing EmailCompose component into Compose buttons on Lead and Contact detail pages. Pre-fill recipient. Open as Sheet overlay. Connect to email send API via EmailServiceAdapter. Follows IFC-144 and PG-141 (Pattern 1 + Pattern 2). Resolves WIRE-IFC-144-001 and WIRE-PG-141-001. |  | IFC-144,PG-141 |
| IFC-218 | Similar Entity API (pgvector) - Build lead.getSimilar and contact.getSimilar tRPC queries using pgvector embedding similarity. Top 5 matches exclude self tenant-isolated. Wire to Lead detail sidebar (replace empty state) and Contact detail sidebar. Follows IFC-039 (Pattern 1 - infra-only). Resolves WIRE-IFC-039-001. |  | IFC-039 |
| IFC-219 | Activity Feed Interactions (Reactions + Comments) - Add ActivityReaction and ActivityComment models to Prisma schema. tRPC mutations: addReaction removeReaction addComment. Wire into Lead and Contact detail activity action buttons. Remove hardcoded [] arrays. Follows IFC-069 (Pattern 2 - scope oversight). Resolves WIRE-IFC-069-001. |  | IFC-069 |
| IFC-220 | AI Insight Null-State UX (Contact) - Add Run AI Analysis button when aiInsight is null on Contact detail page. Lead detail already done 2026-03-04. Pattern: amber dashed-border banner + button wired to scoreWithAI mutation. Invalidate query on success. Follows IFC-095 (Pattern 2 - scope oversight). Resolves WIRE-IFC-095-001. |  | IFC-095 |
| IFC-221 | Email Open Tracking Integration - Real email open/click tracking. Backend: tracking pixel endpoint recording opens; click-through URL wrapper; EmailTracking model. Frontend: replace activity-derived open rate with real data on Lead and Contact detail. Inject pixel + wrap links on outbound send. Follows IFC-144 and IFC-099 (Pattern 1 - infra-only). Resolves WIRE-IFC-099-001. |  | IFC-144,IFC-099 |
| IFC-222 | Implement real Twilio SMS SDK calls (Resolves R-006) | 2026-03-06 | IFC-170 |
| IFC-223 | Wire actual Email Outbound Adapter (Resolves R-018) | 2026-03-06 | IFC-157 |
| IFC-224 | Implement Calendar Webhook Ingestion Routes (Resolves R-008) |  | IFC-138 |
| IFC-225 | Convert Lead UX Fix - Backend requires QUALIFIED status but Convert button always visible. Fix: (1) Disable/hide button for non-QUALIFIED leads with guidance tooltip. (2) Add confirmation dialog before conversion. (3) Add createAccount option to conversion flow. (4) Handle conversion errors gracefully. Page: leads/[id]/page.tsx line 1169. |  |  |
| IFC-226 | Lead Detail Null-State UX - Fix engagement/churn/sentiment showing raw 'Unknown' string when aiInsight is null. Replace with styled 'Not analyzed' state with visual distinction from real AI data. Page: leads/[id]/page.tsx lines 588, 2258. |  |  |
| IFC-227 | Company-to-Account Navigation Link - Lead detail page shows company name as plain in profile card (line 1352) and info panel (line 1656). Replace with Next.js Link component navigating to /accounts/[accountId]. Requires accountId in lead transform/query. Apply same pattern to Contact and Deal detail pages. |  |  |
| IFC-228 | Lead Owner Reassignment UI - Owner card on Lead detail (lines 1468-1487) is read-only. Add reassignment capability for MANAGER/ADMIN roles: user picker dropdown, reassign mutation via lead.update, audit trail entry. Apply RBAC check to show/hide reassign button. Extend to Contact and Account detail pages. |  | IFC-095 |
| IFC-229 | Lead Detail Map View - Current map section (lines 1453-1465) is a gradient placeholder with non-functional 'View Map' button. Options: (A) Integrate Mapbox/Leaflet with geocoded address, (B) Link to Google Maps in new tab, (C) Remove placeholder entirely if map not in MVP scope. Needs product decision. |  |  |
| IFC-230 | Unify Lead Create/Edit Form - Create page (leads/(list)/new/page.tsx, 1029 lines) and Edit page (leads/[id]/edit/page.tsx, 464 lines) share no components. Issues: different API clients (trpc vs api), different field sets (BANT only in create but silently dropped), different styling, different validation, no auth guard on create. Fix: extract shared LeadForm component, unify API client, include all fields in both views, consistent styling. |  |  |
| IFC-231 | Lead List Saved Views and Filter Persistence - Sidebar view params (?view=my, ?view=starred, ?segment=hot) are completely ignored by LeadsPageClient (no useSearchParams call). Fix: (1) Wire URL params to filter state, (2) Add saved views CRUD (name, filters, columns, sort), (3) Column visibility picker UI exposing DataTable VisibilityState, (4) Persist filter/sort/view selection in localStorage or user preferences. |  |  |
| IFC-232 | Sidebar Broken Links Cleanup - 17 broken navigation links and 6 broken module settings footer links. Broken nav: billing/usage, billing/plans, billing/upgrade, notifications/channels, notifications/quiet-hours, analytics/saved/*, deals/trash, tickets/sla-policies, tickets/types, tickets/automations, governance/quality-reports/*. Broken settings: /settings/leads, /settings/contacts, /settings/deals, /settings/documents, /settings/reports, /settings/accounts. Fix: create placeholder pages for unbuilt routes OR remove sidebar items for unplanned features. |  |  |
| IFC-233 | Wire Unused Backend tRPC Endpoints - ~20 built but unused tRPC procedures. Lead: convertToDeal, getHotLeads, getReadyForQualification, bulkScore. Contact: getByEmail, linkToAccount, unlinkFromAccount, search, linkToLead, unlinkFromLead, getTimeline, logActivity. Opportunity: create, getById, getHistory, getProducts, getPipeline, stats. Account: create, update. Task: stats, assign, reschedule. Wire each to appropriate frontend UI or remove if not needed. |  |  |
| IFC-234 | Settings Pages Wiring - 4 settings pages with hardcoded data and inert buttons. Team: hardcoded 4-person array, inert Invite/Remove/Role buttons. Integrations: hardcoded provider list, inert Connect/Disconnect buttons. Notifications: hardcoded const, no useState, no onClick on toggles. Account: profile name/email has no save mutation, 3 security buttons (Change Password, Enable 2FA, Download Data) have no onClick. Wire all to real tRPC mutations and queries. |  |  |
| IFC-235 | Lead Detail AI Chat Panel - Add AI chat panel to Lead detail page for entity-scoped conversations. Backend: conversation.router.ts is fully built with 13 endpoints but NOT registered in router.ts - register it. Frontend: build LeadChatPanel component using conversation API with contextType=LEAD, contextId=leadId. Similar to dashboard TeamChatWidget but with real API calls (TeamChatWidget is decorative with hardcoded messages). ConversationRecord/MessageRecord Prisma models exist. |  | IFC-069 |
| IFC-236 | Recent Activity Empty State CTA - Overview tab shows generic 'No activities yet' with no call to action. Add 'Log your first activity' CTA button linking to Activity tab textarea. Apply same pattern to Contact detail page. Page: leads/[id]/page.tsx line 1600. |  |  |
| IFC-237 | Lead Router Security - Tenant Isolation & Domain Bypass. Fix 4 CRITICAL/MEDIUM security issues: (1) scoreWithAI fire-and-forget uses raw ctx.prisma instead of prismaWithTenant - cross-tenant data leak risk [S2]. (2) logActivity $transaction uses raw ctx.prisma - may bypass tenant middleware [S3]. (3) bulkUpdateStatus uses direct Prisma updateMany bypassing Lead.changeStatus() domain validation - skips status transition rules and domain events [S4]. (4) getHotLeads/getReadyForQualification pass userId as ownerId without explicit tenantId [S9]. Fix: Replace ctx.prisma with prismaWithTenant in all cases. Route bulkUpdateStatus through domain model. Add explicit tenantId to hot/ready queries. |  |  |
| IFC-238 | Lead Detail Status Type Fix + Auth Guard. Fix 2 CRITICAL issues: (1) LeadStatus type union at leads/[id]/page.tsx line 139 omits NEGOTIATING - runtime crash when lead has this status [S1]. (2) leads/(list)/new/page.tsx missing useRequireAuth() hook - unauthenticated users can access create lead form [F1]. Also fix trpc vs api import inconsistency in create page [F8]. Fix: Add NEGOTIATING to LeadStatus type, add useRequireAuth() to create page, standardize import. |  |  |
| IFC-239 | Lead Router Data Integrity Fixes. Fix 5 HIGH issues: (1) update procedure ambiguous status field handling - may silently drop or bypass domain validation [S5]. (2) Score tier thresholds inconsistent - domain LeadScore uses 80/50 but router stats query uses 70/40 [S6]. (3) sortBy accepts arbitrary strings with no enum validation - Prisma orderBy injection risk [S7]. (4) leadListResponseSchema expects 'data' key but router returns 'leads' [W4]. (5) leadResponseSchema missing Lead 360 fields (aiInsight, activities, notes, files, tasks) [D5]. Fix: Explicitly handle status in update, unify thresholds, add sortBy enum, fix schema keys. |  |  |
| IFC-240 | Lead Audit Logging. Add audit log entries to all 20 lead router procedures using SecurityAuditService. GDPR-relevant operations (delete, bulkDelete, convert, export) MUST have audit trail. Include: actor (userId), action, entityType (Lead), entityId, tenantId, timestamp, metadata (old/new values for mutations). Integrate with existing audit infrastructure at apps/api/src/security/audit/. |  |  |
| IFC-241 | Lead Router Dead Code & Missing Events Cleanup. Fix 4 MEDIUM/LOW issues: (1) scoreWithAI notification variables at lines 517-527 set but never referenced - dead code [S10]. (2) LeadRoutedEvent defined in domain but never published by any procedure or service [S11]. (3) Only 3 of ~10 lead event types trigger notifications [W10]. (4) Lead notifications processed synchronously, not queued via BullMQ [W11]. Fix: Remove dead notification code, publish LeadRoutedEvent from routing logic, add notification handlers for remaining event types, enqueue via BullMQ. |  |  |
| IFC-242 | Lead Create Form Fixes - BANT Drop, Revenue Mapping, Validation. Fix 3 HIGH issues: (1) BANT fields (Budget, Authority, Need, Timeline) collected in create form but silently dropped on submit - never sent to API [F3]. (2) annualRevenue mapped to estimatedValue - semantic mismatch between company annual revenue and deal estimated value [F4]. (3) Edit form uses 'as any' cast with no client-side Zod validation - no inline field errors [F9]. Fix: Send BANT to API (add to createLeadSchema if needed), map annualRevenue correctly, add Zod resolver to edit form, remove as any. |  |  |
| IFC-243 | Lead Frontend Consistency - StatusBadge, Toast, window.prompt. Fix 3 MEDIUM issues: (1) window.prompt() used for note input at line 1951 - blocks UI, no multi-line, poor UX [F5]. Replace with Dialog/Sheet component. (2) Two different StatusBadge implementations - inline LeadStatusBadge vs shared component with different color schemes [F6]. Consolidate to shared component. (3) Two Toast patterns - sonner toast.success() vs shadcn useToast() used inconsistently across lead pages [F7]. Standardize to one pattern. |  |  |
| IFC-244 | Dashboard Widget Real Data - ActiveLeads, TotalLeads, Analytics. Fix 3 HIGH/MEDIUM issues: (1) ActiveLeadsWidget fully hardcoded with static '1,240' and 'vs 1,100 last month' [F2]. (2) TotalLeadsWidget shows hardcoded '+12%' trend [W6]. (3) Analytics page for leads uses sample data arrays, no API queries [W7]. Fix: Wire ActiveLeadsWidget to lead.stats API, compute real trend from monthly comparison, wire Analytics page to real lead data endpoints. |  |  |
| IFC-245 | Lead Activity Timeline Unification. Fix HIGH issue: logActivity creates LeadActivity records but these are NOT fed into the unified TimelineEvent system (IFC-069). Lead activities exist in a parallel silo [W1]. Also fix: No email-to-lead association - inbound emails not linked to leads by sender address [W2]. Fix: Create TimelineEvent adapter for LeadActivity, add email-to-lead matching in inbound parser, ensure lead detail 'All Sources' toggle shows unified data. |  | IFC-069:FS |
| IFC-246 | Domain Model Lead 360 Alignment. Fix 4 HIGH issues: (1) Lead.toJSON() omits aiInsight, activities, notes, files, tasks relations - domain events carry incomplete snapshots [D1]. (2) qualify() only allows from NEW/CONTACTED but UI doesn't reflect this constraint [D2]. (3) LeadScoringChain throws unhandled error for unknown AI_PROVIDER [D3]. (4) AI scoring prompt only receives basic lead data, ignores activity count, engagement history, note count [D4]. Fix: Extend toJSON, expose allowed transitions, add provider fallback, enrich scoring prompt. |  |  |
| IFC-247 | Lead Detail Page Tests. Lead detail page (2200+ lines) has ZERO component tests [T1]. Also untested: addNote procedure [T4] and logActivity procedure [T5] added 2026-03-04. Write comprehensive tests: (1) Component render tests for all tabs (Overview, Activity, AI Insights, Lead IQ, Notes, Files, Emails, Tasks). (2) Mutation tests for addNote and logActivity. (3) Error state tests (404, 500, retry). (4) AI insight null-state rendering. (5) Activity feed toggle. Must cover 2026-03-04 wiring fixes. |  |  |
| IFC-248 | Lead List & Create Page Tests. Two major pages with ZERO tests: (1) Lead list page with filtering, sorting, bulk operations, saved views [T2]. (2) Lead create page (1029 lines) with BANT fields, source handling, validation [T3]. Also test: (3) Role-based filtering (ADMIN sees all, others see own) [T7]. (4) Bulk operations UI (score, convert, archive, delete) [T8]. Write component tests covering happy path, error states, and edge cases. |  |  |
| IFC-249 | Lead Edit Page Tests + E2E. Fix remaining test gaps: (1) Edit page onSuccess/onError callbacks untested, as any cast hides type errors [T9]. (2) No E2E tests for complete lead CRUD flow (create -> view -> edit -> delete) [T6]. Write: (1) Edit page component tests with mutation mocking. (2) Playwright E2E test for full lead lifecycle. E2E should cover: create lead with required fields, view on detail page, edit fields, archive/delete. |  |  |
| IFC-250 | Lead Event Pipeline - Persistent Outbox + Webhooks. Fix HIGH/LOW issues: (1) InMemoryEventBus loses all events on server restart - no persistent outbox pattern [W3]. (2) No webhook handlers for lead events - external systems cannot subscribe [W9]. Fix: Implement transactional outbox pattern for lead domain events (LeadCreatedEvent, LeadQualifiedEvent, etc.). Add webhook dispatch for lead events. Ensure event ordering and at-least-once delivery. |  |  |
| IFC-251 | Lead CSV Import/Export. Add bulk import and export for leads [W8]. Import: CSV upload with validation, duplicate detection, field mapping UI, error report. Export: CSV and JSON formats, filtered export (current view), all-fields export. Common CRM feature needed for data migration and reporting. Also cleanup: Prisma schema backslash comments to standard // format [S12]. |  |  |
| IFC-252 | Contact Router Security — Tenant Isolation Fixes. CRITICAL: (1) search procedure has no createTenantWhereClause — cross-tenant search by name/email (R-02). (2) logActivity transaction uses raw ctx.prisma with no tenantId in WHERE — cross-tenant update (R-03). (3) bulkEmail/bulkExport no tenant filter — email exfiltration via guessed UUIDs (R-04). (4) stats ignores typedCtx tenant — no tenantId boundary (R-05). (5) getById/getByEmail double-fetch through unscoped domain repo (R-06). Cross-ref: R-01 (prismaWithTenant raw) is cross-cutting and shared with IFC-237. Audit: docs/audit/contact-detail-wiring-audit.md §15. |  |  |
| IFC-253 | Contact Detail NaN Fix + Auth Guard + Status Enum. CRITICAL: (1) NaN% division by zero — emailsOpened/emailsSent at line 1319 renders 'NaN%' when emailsSent=0 (F-01). (2) Create contact page missing useRequireAuth() — unauthenticated access (F-07). (3) Status enum truncated to 3 values in ContactList/ContactCard (ACTIVE/INACTIVE/ARCHIVED) but create form allows 6 values — unknown status crashes detail page statusConfig (F-08). Audit: docs/audit/contact-detail-wiring-audit.md §16. |  |  |
| IFC-254 | Contact Router Data Integrity Fixes. (1) Raw SQL in getTimeline has no tenant filter and .catch(() => []) swallows errors (R-09). (2) sortBy accepts arbitrary strings — enum whitelist needed (R-10). (3) filterOptions ignores status input (R-12). (4) contactListResponseSchema uses 'data' key but router returns 'contacts' (D-03). (5) phone non-nullable in response schema but mapper returns null (D-08/R-14). Audit: docs/audit/contact-detail-wiring-audit.md §15,§18. |  |  |
| IFC-255 | Contact Audit Logging. (1) Zero audit logging in all 14 contact router procedures — no ctx.security.auditLogger calls (R-07). (2) Audit event handler PascalCase keys (ContactCreated/Updated/Deleted) don't match domain dot-notation (contact.created/updated) — 5 event types unmapped (D-06). Violates IFC-098 audit requirement. Audit: docs/audit/contact-detail-wiring-audit.md §15,§18. |  |  |
| IFC-256 | Contact Detail Hardcoded Tabs — Tickets & Documents. (1) Tickets tab fully hardcoded with 'TKT-1234' and static timestamp (F-02, F-21). ContactWithRelations has no tickets relation. Tab badge hardcoded to 0. (2) Documents tab hardcoded with 2 static PDFs — apiContact.documents data exists in interface but is completely ignored (F-03). Need: wire tickets via TicketService query, wire documents from apiContact.documents or file infrastructure. Audit: docs/audit/contact-detail-wiring-audit.md §5,§9,§16. |  |  |
| IFC-257 | Contact Detail Action Button Wiring. 18 buttons without onClick handlers: Email (1133), Log Call (1139), Log Activity submit (1426), Add Deal (1872), Create Ticket (1917), Upload (1958), Add Note (2007, 2214), View Map (1341), Play Recording (969), Download (1039), Reply/React/Add Note/Share activity actions (1076-1099), toolbar buttons (1410/1415/1420). Zero useMutation calls on entire page (F-04, F-05, F-06, F-23). Need: add logActivity mutation, wire compose/call to existing components, wire action buttons. Audit: docs/audit/contact-detail-wiring-audit.md §11,§16. |  |  |
| IFC-258 | Contact Frontend Consistency — Avatars, Owner Title, Confidence. (1) Default avatars are Unsplash stranger photos — replace with initials-based generated avatar (F-09). (2) Owner title hardcoded 'Account Executive' — map from owner.role like lead detail (F-16). (3) Confidence hardcoded 0.85 for churnRisk and nextBestAction — use API data (F-17). (4) quietPeriodAlert always null (F-22). (5) ContactForm duplicated between create and edit (F-24). Audit: docs/audit/contact-detail-wiring-audit.md §16. |  |  |
| IFC-259 | Contact Dead UI Fields & Unused Components. (1) location/timezone always empty (F-10). (2) isOnline/isVIP always false — dead badges (F-11). (3) tags always empty array (F-12). (4) ContactDetail.tsx component unused by page — 597 lines with tests but never imported (F-14). (5) ContactCard.tsx unused by list page (F-28). (6) emailsOpened always 0 (F-20). Decision needed: wire to real data, show placeholder states, or remove dead UI. Audit: docs/audit/contact-detail-wiring-audit.md §16. |  |  |
| IFC-260 | Contact Domain Model Fixes. (1) reconstitute() silently substitutes unknown@unknown.com for invalid emails — should Result.fail or throw (D-01). (2) mergeContacts no cross-tenant check — linkToLead correctly checks but merge doesn't (D-02). (3) No ContactDeletedEvent — deleteContact publishes no events, audit handler has mapping but event never emitted (D-04). (4) No ContactEmailChangedEvent — old email not captured in generic ContactUpdatedEvent (D-05). (5) Tags update always emits event without deep equality check (D-07). Audit: docs/audit/contact-detail-wiring-audit.md §18. |  |  |
| IFC-261 | Contact Event Pipeline — Worker Handlers + Event Types. (1) Zero contact event handlers in events worker (W-02). (2) Only 2/8 contact event types in DOMAIN_EVENT_TYPES — missing deleted, account_associated, account_disassociated, converted_from_lead, linked_to_lead, interacted (W-04). (3) No webhook routing for contact events (W-05). (4) No notifications for contact events (W-11). Cross-ref: W-01 (InMemoryEventBus) shared with IFC-250. Audit: docs/audit/contact-detail-wiring-audit.md §17. |  |  |
| IFC-262 | Contact Merge & Duplicate Detection Wiring. (1) mergeContacts deletes secondary without re-parenting all child records — orphaned opportunities/tasks (W-03). (2) findPotentialDuplicates exists in service but no tRPC procedure exposes it (W-09). (3) mergeContacts exists but no router procedure wraps it (W-10). (4) mergeContacts no cross-tenant check between primary and secondary (W-12). (5) associateWithAccount inside mergeContacts causes double-save and potential double event emission (W-13). Audit: docs/audit/contact-detail-wiring-audit.md §17. |  |  |
| IFC-263 | Contact Email & AI Integration. (1) No email-to-contact matching — inbound emails not linked to contacts by sender address (W-06). (2) No automated AI insight triggering — contact create/update doesn't trigger scoring like lead does (W-07). (3) No contact routing rules — leads have routing but contacts don't (W-14). Audit: docs/audit/contact-detail-wiring-audit.md §17. |  |  |
| IFC-264 | Contact Bulk Import & Service Layer Fixes. (1) No CSV upload or bulk create for contacts (W-08). (2) listContacts service returns empty array as default when no ownerId/accountId — latent bug for future callers (W-15). (3) getContactStatistics returns empty for undefined ownerId (W-16). Audit: docs/audit/contact-detail-wiring-audit.md §17. |  |  |
| IFC-265 | Contact Detail Page Tests. (1) Contact detail page (2242 lines) has ZERO page-level tests (T-01). (2) Tenant isolation NEVER tested in 2878 lines of router tests (T-04). (3) logActivity missing activity type coverage in tests (T-06). (4) getById relations (activities, notes, opportunities, aiInsight) not asserted (T-07). (5) Tab content rendering not verified in component tests (T-08). Audit: docs/audit/contact-detail-wiring-audit.md §19. |  |  |
| IFC-266 | Contact List/Create Page Tests + E2E. (1) Contact list page has ZERO page tests (T-02). (2) Contact create page has ZERO page tests — auth guard gap F-07 would be caught (T-03). (3) Bulk selection (select all, bulk email, bulk export) untested (T-05). (4) Contract tests missing for bulkEmail, bulkExport, bulkDelete (T-09). (5) No E2E Playwright tests for contact CRUD flow (T-10). Audit: docs/audit/contact-detail-wiring-audit.md §19. |  |  |
| IFC-267 | Account Detail No-Op Action Buttons. Wire 6 non-functional buttons: (1) Create Deal button no onClick (F-05, AccountDetail.tsx:229). (2) Add Contact button no onClick in overview (F-06, AccountDetail.tsx:233). (3-4) Add Contact buttons no onClick in contacts tab header and empty state (F-07/F-08, AccountContactsList.tsx:61,85). (5-6) Create Opportunity buttons no onClick in opportunities tab header and empty state (F-10/F-11, AccountOpportunitiesList.tsx:68,116). Each button should open the appropriate create form or association dialog with accountId pre-filled. Audit: docs/audit/account-detail-wiring-audit.md sections 3-5. |  |  |
| IFC-268 | Account Owner Display & Assignment. (1) Owner card shows literal 'Owner Assigned' and 'Account Manager' text instead of actual owner name/title — ownerId exists but owner relation not included in getById (F-01). (2) No owner assignment UI or mutation (F-02). Fix: include owner relation in getById query; display real owner name and role; add owner assignment combobox or dialog with user search mutation. Audit: docs/audit/account-detail-wiring-audit.md section 2. |  |  |
| IFC-269 | Account Backend Tenant Isolation & Security. (1) CRITICAL: filterOptions uses raw ctx.prisma instead of prismaWithTenant for user lookup — tenant data leak (B-01, account.router.ts:445). (2) PrismaAccountRepository has NO tenantId filter on any method — single-layer defense (B-02). (3) existsByName blocks same name across all tenants — should be per-tenant (B-03). (4) sortBy parameter unsanitized — potential Prisma orderBy injection (B-04). (5) TOCTOU window in update/delete without transaction (B-05). (6) Zero audit logging on all account mutations (B-07). Audit: docs/audit/account-detail-wiring-audit.md sections 11-12. |  |  |
| IFC-270 | Account Router Missing Procedures & Update Fix. (1) Update procedure silently drops revenue/employees/industry/parentAccountId fields accepted by schema (B-08). (2) accountListResponseSchema uses 'data' key but router returns 'accounts' — mismatch (B-09). (3) No updateRevenue procedure — domain Account.updateRevenue() unreachable via API (B-10). (4) No updateEmployeeCount procedure (B-11). (5) No categorizeIndustry procedure (B-12). (6) mapAccountToResponse returns raw WebsiteUrl value object instead of string (B-13). Audit: docs/audit/account-detail-wiring-audit.md section 12. |  |  |
| IFC-271 | Account Domain Model Fixes. (1) No AccountDeletedEvent — deletions produce no domain event; audit handler has mapping but event never emitted (D-01). (2) Account.toJSON() omits tenantId (B-15). (3) updateAccountInfo return value (Result) discarded by service — silent validation failures (B-16). (4) user!.userId non-null assertion in router (B-06). Audit: docs/audit/account-detail-wiring-audit.md sections 11-13. |  |  |
| IFC-272 | Account Event Pipeline — Worker Handlers + Event Types. (1) Zero account event handlers in events worker (W-01). (2) Zero account event types in DOMAIN_EVENT_TYPES map (W-02). (3) Audit handler has 3 account event mappings (Created/Updated/Deleted) but events never reach it because worker has no handlers and dispatcher has no types (W-03). Add event handlers for AccountCreated, AccountUpdated, AccountDeleted (requires IFC-271), AccountRevenueUpdated, AccountHierarchyUpdated, AccountIndustryCategorized to events worker. Register all types in DOMAIN_EVENT_TYPES. Cross-ref: W-01/W-02 pattern shared with Contact (IFC-261). Audit: docs/audit/account-detail-wiring-audit.md section 14. |  | IFC-271:FS |
| IFC-273 | Account List Page Type Safety & Filter Enums. (1) serverStats cast to any loses type safety (L-01, AccountsPageClient.tsx:154). (2) Double unsafe cast for withOpportunities stat (L-02, AccountsPageClient.tsx:206-208). (3) AccountTier type and getAccountTier() duplicated locally in AccountCard.tsx instead of using domain enum (L-04). (4) Contact status filter uses hardcoded inline option values instead of ContactStatus domain enum (F-09, AccountContactsList.tsx:81-83). (5) Opportunity stage filter uses hardcoded inline strings instead of OpportunityStage domain enum (F-12, AccountOpportunitiesList.tsx:109-114). Audit: docs/audit/account-detail-wiring-audit.md sections 4-5, 15. |  |  |
| IFC-274 | Account Activity Timeline — Replace Stub Data. AccountService.getAccountActivity() (lines 748-785) returns synthetic/stub activities with hardcoded descriptions and broken cursor pagination — not real Activity model records (F-13). Replace with real activity feed from ActivityFeed component or Activity model queries. Should use same pattern as Lead/Contact activity tabs. Audit: docs/audit/account-detail-wiring-audit.md section 6. |  |  |
| IFC-275 | Account Create & Edit Forms. (1) No account create form page — router has create procedure but no frontend consumer (F-16). Create page at accounts/(list)/new/page.tsx with form for all account fields. (2) No account edit form — Edit button navigates but lands on 404 (F-17). Create edit form page or inline edit mode using router update procedure. Both forms should validate with accountSchema. Audit: docs/audit/account-detail-wiring-audit.md section 10. |  | IFC-270:FS |
| IFC-276 | Account Contract Test + Test Gaps. (1) Accounts is the ONLY entity without a contract test file (T-01). (2) No-op buttons untested — 6 CRITICAL no-op buttons have no click behavior tests (T-02). (3) Tenant isolation untested in router tests (T-03). (4) No E2E Playwright tests for account CRUD flow (T-04). (5) Owner display untested — tests don't verify owner name/title rendering (T-05). Audit: docs/audit/account-detail-wiring-audit.md section 19. |  | IFC-267:FS;IFC-268:FS |
| IFC-277 | Account Service Dead Code & Minor Fixes. (1) calculateAccountHealth() unreachable from router — decide: wire (D-02). (2) getAccountWithContext() unreachable from router — decide: wire (D-03). (3) Revenue NaN risk — Number(revenue) on non-numeric string renders '$NaNM' (F-14). (4) Health bar arbitrary scale — no documented max value (F-15). (5) Contact firstName[0] undefined risk in AccountContactsList (F-18). (6) findAncestors N+1 query pattern (B-14). (7) Merge/Archive toast stubs referencing IFC-044 (F-03/F-04). Audit: docs/audit/account-detail-wiring-audit.md sections 9, 13, 16-17. |  |  |
| IFC-278 | Deal Detail Page — Replace SAMPLE_DEAL with Real API Data. CRITICAL: Entire deal detail page (deals/[id]/page.tsx 792 lines) is 100% hardcoded with SAMPLE_DEAL constant (lines 116-150) — zero API calls. The dealId from useParams() is captured but never used for data fetch (line 684). Must: (1) Replace SAMPLE_DEAL with trpc.opportunity.getById query using dealId param. (2) Add useRequireAuth() guard (F-03 — detail page is the only unguarded page). (3) Fix STAGES constant to match domain 7-stage enum (F-04 — uses CLOSED instead of CLOSED_WON/CLOSED_LOST, omits NEEDS_ANALYSIS). (4) Fix StageProgress to use deal prop instead of SAMPLE_DEAL.value directly (F-05). (5) Remove _SAMPLE_ACTIVITIES dead code (F-06). (6) Add clickable links to account/contact detail pages (F-07). (7) Wire real owner data from getById relation include. Router getById exists (IFC-186). Cross-entity patterns from Lead 360 wiring (2026-03-04) should be followed. Audit: docs/audit/deal-detail-wiring-audit.md section 1. |  |  |
| IFC-279 | Deal Create Form + /deals/new Route. No deal creation form exists — both 'New Deal' buttons (deals/(list)/page.tsx lines 454 and 492) link to /deals/new which is a 404 (F-02). Must: (1) Create page at apps/web/src/app/deals/new/page.tsx or deals/(list)/new/page.tsx. (2) Form fields: name, value (money input), stage (default PROSPECTING), probability, expectedCloseDate (date picker), accountId (account search combobox), contactId (contact search combobox). (3) Wire to trpc.opportunity.create mutation. (4) Add useRequireAuth(). (5) Validate with createOpportunitySchema. (6) Success: navigate to /deals/[newId]. Audit: docs/audit/deal-detail-wiring-audit.md section 1 F-02. |  |  |
| IFC-280 | Deal Detail Action Buttons — Wire 14 No-Ops. (1) EntityHeader 6 no-ops all with onClick: () => {} (F-08): Won → moveStage CLOSED_WON with success dialog; Lost → moveStage CLOSED_LOST with LossReasonModal (reuse from list page); Edit → navigate to edit form or open inline edit; Clone → duplicate mutation; Archive → set archived status; Delete → AlertDialog confirmation + delete mutation. (2) Stakeholder/Product/File 8 no-ops (F-09): Edit stakeholders → open edit dialog; Account icons → navigate to /accounts/[id] and website; Contact icons → mailto: and tel: links; Add Product → product association dialog; File upload → upload mutation; File links → presigned URL download. Depends on IFC-278 (real data needed for mutations). Audit: docs/audit/deal-detail-wiring-audit.md section 2. |  | IFC-278:FS |
| IFC-281 | Deal Backend Tenant Isolation & Audit Logging. (1) CRITICAL: PrismaOpportunityRepository.findById() (line 82) has NO tenantId WHERE clause — cross-tenant read/write/delete possible via getById/update/delete/moveStage/dealForecast (B-01). Fix: add tenantId to findById() and findByOwnerId() WHERE clauses. (2) CRITICAL: Zero auditLogger.log() calls across all 16 opportunity + pipeline-config procedures (B-02). Add audit logging to create/update/delete/moveStage (especially CLOSED_WON/CLOSED_LOST) and pipeline config changes. (3) Create notification in create procedure uses raw ctx.prisma instead of prismaWithTenant (B-03). Audit: docs/audit/deal-detail-wiring-audit.md sections 5-6. |  |  |
| IFC-282 | Deal Router Correctness Fixes. (1) Name updates silently dropped — service has TODO 'Add updateName method' (B-04, OpportunityService.ts:313). Add updateName to domain and wire in service. (2) data.probability?.value unwrapping may be undefined if percentageSchema returns plain number (B-05, router:460). Verify and fix. (3) opportunityListResponseSchema key 'data' vs router key 'opportunities' mismatch (B-07, validators:88 vs router:437). (4) throwOpportunityCreateError maps VALIDATION_ERROR to NOT_FOUND — wrong HTTP semantic (B-09, router:55). (5) validateStageDeactivation throws plain Error → 500 instead of BAD_REQUEST (B-10, validators:214). (6) mapOpportunityToResponse drops closedAt field (B-11, mappers.ts:88-108). (7) CLOSED_LOST no-reason passes Zod but fails at service (B-12, router:322). Audit: docs/audit/deal-detail-wiring-audit.md section 6. |  |  |
| IFC-283 | Deal Event Pipeline — Worker Handlers. (1) Only opportunity.won has a handler in events worker; opportunity.created, opportunity.stage_changed, and opportunity.lost are defined in DOMAIN_EVENT_TYPES but have NO registered handlers (W-01). (2) No OpportunityDescriptionUpdatedEvent defined — description changes emit no event (W-02). Add handlers for the 3 missing event types. Add OpportunityDescriptionUpdatedEvent to domain. Cross-ref: same pattern as Account (IFC-272) and Contact (IFC-261). Audit: docs/audit/deal-detail-wiring-audit.md section 7. |  |  |
| IFC-284 | Deal Forecast Algorithm Fixes. (1) buildWinRateTrend hardcodes months ['May','Jun','Jul','Aug','Sep','Oct'] regardless of current date — semantically incorrect data (B-06, forecast-algorithm.ts:283). Fix to derive from actual 6-month window. (2) DEFAULT_STAGE_PROBABILITIES diverge: validators has NEEDS_ANALYSIS=30/PROPOSAL=70 while domain/service/router/forecast-algorithm uses 40/60 (B-08). Unify to single source of truth. (3) buildMonthlyRevenue uses locale-dependent toLocaleString for month names — breaks on non-en-US servers (B-15, forecast-algorithm.ts:269). (4) Forecast trend values hardcoded as 12 and 5 in forecast page (F-16, deals/forecast/page.tsx:709-710). Compute from API data. Audit: docs/audit/deal-detail-wiring-audit.md sections 4, 6. |  |  |
| IFC-285 | Deal Service Dead Code & Minor Fixes. (1) 11 dead service methods unreachable from router: listOpportunities, advanceStage, updateValue, updateProbability, updateExpectedCloseDate, reopenOpportunity, getPipelineForecast, getOpportunitiesClosingSoon, getHighValueOpportunities, getOpportunitiesByAccount, getOpportunitiesByContact, getWinRateStatistics (B-13). Decide: wire to router or remove. (2) toMoney/toPercentage silent zero fallback on DB corruption (B-14). (3) TOCTOU in stage transitions — no optimistic locking (B-16). (4) Event publish failure swallowed with console.error only (B-17). (5) DealQuickView is a 49-line stub not used anywhere (F-13). (6) RecommendedActions.onActionClick not wired at forecast page level (F-18). (7) Sidebar deals config settingsHref points to /settings/deals instead of /settings/pipeline (W-03). Audit: docs/audit/deal-detail-wiring-audit.md sections 6-7. |  |  |
| IFC-286 | Deal Detail Page Tests + E2E. (1) Deal detail page (792 lines) has ZERO test coverage (T-01). (2) No E2E Playwright tests for /deals, /deals/[id], or /deals/forecast — only pipeline-settings has E2E (T-02). (3) No cross-tenant access attempt test in router tests (T-03). (4) Contract test missing NEEDS_ANALYSIS stage in test data (T-04). Depends on IFC-278 (real data) and IFC-280 (wired buttons). Audit: docs/audit/deal-detail-wiring-audit.md section 10. |  | IFC-278:FS;IFC-280:FS |
| IFC-287 | Deal Filter Wiring & Type Safety. (1) DealFilters state (filters) captured in page but NEVER passed to trpc.opportunity.list.useQuery — ownerId and dateRange selections have no effect on kanban view data (F-10, deals/(list)/page.tsx:214,226). (2) 'More Filters' button has no onClick handler (F-11, DealFilters.tsx). (3) Owner filter only has 2 hardcoded options: 'All Deals' and 'My Deals' — no dynamic user list (F-12). (4) transformDeals uses loose Record<string,unknown> casting at API boundary instead of typed response (F-19, types.ts:102-119). Wire filters to API query params; add server-side owner filter with user list; type-safe API response handling. Audit: docs/audit/deal-detail-wiring-audit.md sections 3, 8. |  |  |
| IFC-288 | Analytics Dashboard Endpoint Wiring. Wire 9 dead analytics router endpoints: exportConversionFunnel, exportMetrics, exportReport, getConversionFunnel, getLeadMetrics, getOverview, getSalesMetrics, getTimeSeriesData, leadStats. Backend built (ANALYTICS-001), zero web callers. Decision: wire to analytics dashboard UI (IFC-037) with charts/export buttons. Audit: artifacts/reports/dead-endpoints-audit.csv rows 20-28. |  | IFC-037:FS |
| IFC-289 | Agent/Conversation Chat UI Wiring. Wire 11 dead agent + conversation router endpoints: agent.executeTool, agent.getPendingCount, agent.getTool, agent.listTools, conversation.addMessage, conversation.approveToolCall, conversation.archiveOld, conversation.endConversation, conversation.getBySessionId, conversation.recordToolCall, conversation.updateToolCall. Backend built (IFC-139, IFC-148), zero web callers. Decision: build agent chat panel (IFC-235) to consume these. Audit: artifacts/reports/dead-endpoints-audit.csv rows 4-18. |  | IFC-139:FS;IFC-148:FS |
| IFC-290 | Integrations Dashboard Endpoint Wiring. Wire 5 dead integrations router endpoints: getAllConnectorsHealth, getConnectorHealth, getConnectorsByType, getDashboardConfig, triggerSync. Backend built (IFC-003), zero web callers. Decision: build integrations settings page to consume these. Audit: artifacts/reports/dead-endpoints-audit.csv rows 61-65. |  |  |
| IFC-291 | Feedback Submission UI Wiring. Wire 5 dead feedback router endpoints: checkRetraining, exportTrainingData, getForLead, submitCorrection, submitSimple. Backend built (IFC-068), zero web callers. Decision: add feedback UI to AI review workflow. Audit: artifacts/reports/dead-endpoints-audit.csv rows 55-60. |  | IFC-068:FS |
| IFC-292 | Legal Document Management UI Wiring. Wire 6 dead legal router endpoints: appointments.findNextSlot, documents.grantAccess, documents.placeLegalHold, documents.releaseLegalHold, documents.revokeAccess, documents.submitForReview. Backend built (IFC-137, IFC-140, IFC-152), zero web callers. Decision: build legal management UIs to consume these. Audit: artifacts/reports/dead-endpoints-audit.csv rows 78-83. |  | IFC-140:FS;IFC-152:FS |
| IFC-293 | Security Admin + Notifications Settings Wiring. Wire 6 dead endpoints: security.audit.getByResource, security.audit.getMyActivity, security.audit.getSecurityEvents, notifications.batchAction, notifications.getPreferences, notifications.updatePreferences. Backend built (IFC-098, IFC-072, IFC-046, IFC-157), zero web callers. Decision: build admin security page + notification settings page (PG-116). Audit: artifacts/reports/dead-endpoints-audit.csv rows 93-95, 101-103. |  | IFC-157:FS |
| IFC-294 | Experiment + Intelligence + AI Monitoring Wiring. Wire 7 dead endpoints: experiment.assignVariant, experiment.recordConversion, experiment.recordScore, intelligence.getInsightsSummary, intelligence.triggerPrediction, intelligence.updateContactInsights, ai-monitoring.getHallucinationReport. Backend built (IFC-025, IFC-095, IFC-117), zero web callers. Decision: wire to experiment dashboard (IFC-181) and AI monitoring page. Audit: artifacts/reports/dead-endpoints-audit.csv rows 19, 52-54, 66-69. |  | IFC-025:FS;IFC-095:FS |
| IFC-295 | Billing/Auth/Subscription/Admin Miscellaneous Wiring. Wire 8 dead endpoints: billing.ensureCustomer, billing.getUsageMetrics, billing.updateBillingInformation, auth.getSessions, subscription.getPlans, subscription.toggleModule, autoresponse.submitForApproval, admin.queues.getByName. Backend built across IFC-006/IFC-014/IFC-028/IFC-099, zero web callers. admin.queues.getByName is completely phantom (no tests, no matrix entry) � needs queue inspector or admin tools UI. Audit: artifacts/reports/dead-endpoints-audit.csv rows 2, 29, 33-37, 104-105. |  |  |

Changed:

| ID | Task | Start | Other |
| --- | --- | --- | --- |
| PG-046 | Support Tickets | 2026-07-30 → 2026-03-02 (-150d) |  |
| PG-074 | Opportunity Detail CRITICAL: Current page is fully hardcoded with SAMPLE_DEAL and SAMPLE_ACTIVITIES constants - zero API calls. Must: (1) Replace with api.opportunity.getById query (IFC-186 router already built with moveStage getHistory getProducts getPipeline endpoints). (2) Wire all 6 action buttons: Won/Lost to updateStage mutations with stage dialog Edit to navigate to edit form Clone to duplicate mutation Archive to set archived Delete to AlertDialog + delete mutation. (3) Add real activity timeline via ActivityFeed component (IFC-069). (4) Wire file section to real data. (5) Remove hardcoded SAMPLE_* constants. Cross-entity patterns from Lead 360 wiring (2026-03-04) should be followed. |  | was named Opportunity Detail |
| PG-084 | Emails Cross-entity scope: wire EmailCompose component (from PG-141) into Lead and Contact detail page Compose buttons. Pre-fill recipient with entity email. Replace activity-derived email list with real email integration data. |  | was named Emails |
| PG-089 | Files Cross-entity scope: also wire file upload/download handlers on Lead detail (upload btn download btn) Contact detail (document section) and Deal detail (files section). Reuse upload/download infrastructure across all entity detail pages. |  | was named Files |
| PG-145 | Next Best Action Dashboard - NBA recommendations deal insights action cards success metrics Cross-entity scope: refine NextBestAction impact scoring from coarse 3-tier (HIGH/MEDIUM/LOW) to multi-factor model incorporating engagement score sentiment trend and activity recency. Apply refined scoring to NextBestActionCard on Lead and Contact detail pages. |  | was named Next Best Action Dashboard - NBA recommendations deal insights action cards success metrics |
| PG-158 | Drag and drop pinned items reorder - backend API exists (home.reorderPinnedItems) needs @dnd-kit frontend integration | none → 2026-02-28 |  |
| PG-159 | Stale pin handling - deleted or inaccessible pinned entities should show Item unavailable with unpin option | none → 2026-02-28 |  |
| PG-160 | View All AI Insights page - /insights route with getAllInsights endpoint pagination and filtering by insight type | none → 2026-02-28 |  |
| PG-162 | AI Insights from ML model - LangChain chain for generating daily insights with caching confidence scores and action recommendations Cross-entity scope: null-state UX - when AI insight is null on entity detail pages show Run AI Analysis button. Lead detail already done (2026-03-04) apply same pattern to Contact detail. Ensure fallback values visually distinct from real AI data. |  | was named AI Insights from ML model - LangChain chain for generating daily insights with caching confidence scores and action recommendations |
| PG-163 | Home page integration tests - test home.router endpoints against real database with seed data | none → 2026-03-01 |  |
| PG-166 | Lighthouse audit on authenticated home page - verify NFR targets TTI <1s Performance >=90 Accessibility >=90 | none → 2026-09-06 |  |
| PG-169 | Developer Guides Page | none → 2026-03-01 |  |
| PG-170 | Architecture Docs Page | none → 2026-03-01 |  |
| DOC-011 | Add compliance-check Section 11 requiring VPAT/conformance review when PG-*/IFC-* UI tasks add or modify routes | none → 2026-03-01 |  |
| DOC-012 | Establish quarterly accessibility documentation review cadence with recurring sprint task template | none → 2026-03-01 |  |
| DOC-013 | Amend ADR-038 with Documentation Maintenance section mandating accessibility doc updates when scope changes | none → 2026-03-02 |  |
| PG-179 | Press Release Detail Page - dynamic /press/[id] route for individual press releases linked from /press index page (content audit finding F-004) | none → 2026-03-01 |  |
| IFC-209 | Fix sitemap.ts defects - replace new Date() lastModified with actual file modification timestamps, add all 6 blog post slugs, add dynamic route entries for /careers/[id] and /lp/[slug] (content audit findings F-007 F-008 F-009) | none → 2026-03-02 |  |
| IFC-210 | Fill SEO metadata gaps on public pages - add description OG and Twitter tags to /pricing, complete OG tags on /about and /features, add layout-level metadata for auth-flow pages (content audit findings F-010 F-011 F-012) | none → 2026-03-02 |  |

## Version 11 (saved 2026-03-07)

Note of the change: chore(project-tracker): update API routes (audit/sprint/metrics/swarm/tasks/governance), components (AuditView, KanbanView, SprintExecutionView, ContractCompliance, Tracking), lib modules, sprint metrics JSONs (sprint-0 through sprint-29)

Changed:

| ID | Task | Start | Other |
| --- | --- | --- | --- |
| PG-044 | Help Search | 2026-07-28 → 2026-03-07 (-143d) |  |
| DOC-014 | Automated content audit script - TypeScript CLI that scans page.tsx files, resolves metadata chains, calculates SEO scores, detects ghost links, and regenerates content-audit-results.json; integrates as CI check on PR modifying app routes | none → 2026-03-07 |  |
| IFC-224 | Implement Calendar Webhook Ingestion Routes (Resolves R-008) | none → 2026-03-07 |  |
| IFC-289 | Agent/Conversation Router Frontend Wiring. 17 dead endpoints (13 conversation.* + 4 agent.*) with zero frontend callers. Frontend uses autoResponse/aiReview/aiMonitoring routers that query the same DB tables directly bypassing the canonical conversation router. Fix: wire all endpoints to proper frontend consumers — chat panel, agent-approvals, AI Search, admin dashboard — and refactor aiMonitoring to delegate to conversation router instead of duplicating DB queries. Audit: artifacts/reports/dead-endpoints-audit.csv rows 4-18. |  | was named Agent/Conversation Chat UI Wiring. Wire 11 dead agent + conversation router endpoints: agent.executeTool, agent.getPendingCount, agent.getTool, agent.listTools, conversation.addMessage, conversation.approveToolCall, conversation.archiveOld, conversation.endConversation, conversation.getBySessionId, conversation.recordToolCall, conversation.updateToolCall. Backend built (IFC-139, IFC-148), zero web callers. Decision: build agent chat panel (IFC-235) to consume these. Audit: artifacts/reports/dead-endpoints-audit.csv rows 4-18. |

## Version 12 (saved 2026-03-08)

Note of the change: chore(project-tracker): update all sprint metrics JSONs (sprint-0 through sprint-29), _global (Sprint_plan.csv/json, dependency-graph, task-registry), review-queue

Added:

| ID | Task | Start | Finish |
| --- | --- | --- | --- |
| IFC-296 | Queue Scheduler Administration — Implement queuesAdmin tRPC router with live BullMQ stats and scheduler CRUD (list/pause/resume/retry/delete), wire to /agent-approvals/agents page. Replace stub router with live Redis/BullMQ data. Add queue health panel to ActiveAgentsDashboard showing scheduler cron patterns, queue counts, and action buttons. | 2026-03-08 | IFC-015,IFC-197,PG-151 |
| IFC-297 | AI Monitoring Data Persistence — Replace in-memory singleton monitoring data (driftDetector, latencyMonitor, hallucinationChecker, roiTracker) with DB-backed persistence via new AIMonitoringEvent model. Add ai-worker flush service to write metrics to DB periodically. Rewrite monitoring router to query DB instead of in-process singletons. Enables multi-process deployments to share monitoring data. |  | IFC-015,IFC-025 |
| IFC-298 | HelpArticle Prisma Model + Migration |  | PG-045 |
| IFC-299 | Help Article CRUD tRPC Router |  | IFC-298 |
| IFC-300 | Help Article Seed Script — Static to DB Migration |  | IFC-298 |
| IFC-303 | Article Feedback tRPC Mutation |  | IFC-298 |
| PG-180 | Help Article Admin List Page |  | IFC-299 |
| IFC-301 | Rich Text Editor Integration — Tiptap |  | PG-180 |
| PG-181 | Help Article Editor Page |  | PG-180,IFC-301 |
| IFC-302 | Refactor Help Article Page to Use Database |  | IFC-299 |
| IFC-304 | Article Analytics Dashboard |  | IFC-303,PG-180 |

Changed:

| ID | Task | Start |
| --- | --- | --- |
| PG-045 | Help Article | 2026-07-29 → 2026-03-08 (-143d) |
| PG-047 | New Ticket | 2026-08-01 → 2026-03-08 (-146d) |
| PG-048 | Ticket Detail | 2026-08-03 → 2026-03-08 (-148d) |
| PG-125 | Add MFA using TOTP or SMS and allow users to enable/disable from security settings | 2026-07-26 → 2026-03-08 (-140d) |
| IFC-193 | Activity Feed Type Registry - Enum-based mapping from AuditLogEntry.eventType to ActivityFeedType with metadata | none → 2026-03-08 |
| PG-164 | Home page E2E tests - 5 Playwright scenarios: public page auth redirect insight click quick action pin/unpin flow | none → 2026-03-07 |

## Version 13 (saved 2026-03-10)

Note of the change: chore(metrics): update sprint plan CSV/JSON and global registry

Changed:

| ID | Task | Start |
| --- | --- | --- |
| IFC-194 | Router Middleware Standardization - Migrate all routers from manual getTenantId to tenantProcedure | none → 2026-03-10 |
| IFC-202 | Activity Feed Stats Endpoint - getStats aggregation with counts by type source and entity over time windows | none → 2026-03-10 |
| PG-162 | AI Insights from ML model - LangChain chain for generating daily insights with caching confidence scores and action recommendations Cross-entity scope: null-state UX - when AI insight is null on entity detail pages show Run AI Analysis button. Lead detail already done (2026-03-04) apply same pattern to Contact detail. Ensure fallback values visually distinct from real AI data. | none → 2026-03-10 |
| PG-172 | Billing Ghost Pages - Usage Plans Upgrade Cancel and Settings | none → 2026-03-10 |
| IFC-298 | HelpArticle Prisma Model + Migration | none → 2026-03-10 |

## Version 14 (saved 2026-03-11)

Note of the change: chore(metrics): sync all sprint task data

Changed:

| ID | Task | Start |
| --- | --- | --- |
| IFC-203 | Activity Feed Full-Text Search - search endpoint with text query across titles descriptions and actor names | none → 2026-03-10 |
| PG-161 | Notifications integration on home page - bell icon header badge count IFC-183 Prisma model and notification router | none → 2026-03-10 |
| PG-167 | Analytics tracking plan for home page - define and implement business metrics events for section interactions | none → 2026-03-10 |
| PG-173 | Ticket Configuration Pages - SLA Policies Types and Automations | none → 2026-03-10 |
| PG-174 | Notification Configuration Pages - Channels and Quiet Hours | none → 2026-03-10 |
| PG-178 | Module Settings Pages - 11 per-module configuration pages at /settings/[module] | none → 2026-03-11 |

## Version 15 (saved 2026-03-16)

Note of the change: chore(metrics): re-sync sprint task data

Added:

| ID | Task | Finish |
| --- | --- | --- |
| PG-182 | Module Settings - Contacts (/contacts/contact-settings) | PG-178 |
| PG-183 | Module Settings - Accounts (/accounts/account-settings) | PG-178 |
| PG-184 | Module Settings - Deals (/deals/deal-settings) | PG-178 |
| PG-185 | Module Settings - Tickets (/tickets/sla-policies) | PG-178 |
| PG-186 | Module Settings - Documents (/documents/document-settings) | PG-178 |
| PG-187 | Module Settings - Reports (/analytics/report-settings) | PG-178 |
| PG-188 | Module Settings - Billing (/billing/settings) | PG-178 |
| PG-189 | Module Settings - Appointments (/calendar/calendar-settings) | PG-178 |
| PG-190 | Module Settings - Cases (/cases/case-settings) | PG-178 |
| PG-191 | Module Settings - Tasks (/tasks/task-settings) | PG-178 |
| PG-192 | Fix missing /agent-approvals/logs page — PG-152 regression; AgentLogsViewer component exists at apps/web/src/components/ai-monitoring/AgentLogsViewer.tsx but page.tsx is absent causing 404 on route | PG-152 |
| PG-193 | Workflow Step Progress Panel — Add real-time N/N step progress tracker to /agent-approvals/agents and /agent-approvals/logs; reads WorkflowExecution.currentStep + stepResults from tRPC; shows named steps with status icons (pending/running/completed/failed) and a % progress bar matching the AEO workflow progress UI pattern | PG-151,PG-192 |

Changed:

| ID | Task | Start | Finish | Other |
| --- | --- | --- | --- | --- |
| IFC-040 | Production hardening incl. HttpOnly auth sessions and release security gates |  | IFC-046,IFC-111,IFC-112,IFC-113,IFC-115,IFC-122,IFC-127,IFC-043,IFC-033,IFC-130,IFC-132,IFC-133,IFC-134 → IFC-046,IFC-111,IFC-112,IFC-113,IFC-115,IFC-122,IFC-127,IFC-043,IFC-033,IFC-130,IFC-132,IFC-133,IFC-134,IFC-169 | was named Production Hardening |
| PG-176 | Governance Quality Report Sub-Pages - Lighthouse Coverage and Performance views | none → 2026-03-15 |  |  |
| PG-177 | Analytics Saved Report Pages - Weekly Monthly and Quarterly views | none → 2026-03-16 |  |  |
| IFC-220 | AI Insight Null-State UX (Contact) - Add Run AI Analysis button when aiInsight is null on Contact detail page. Lead detail already done 2026-03-04. Pattern: amber dashed-border banner + button wired to scoreWithAI mutation. Invalidate query on success. Follows IFC-095 (Pattern 2 - scope oversight). Resolves WIRE-IFC-095-001. | none → 2026-03-12 |  |  |
| IFC-225 | Convert Lead UX Fix - Backend requires QUALIFIED status but Convert button always visible. Fix: (1) Disable/hide button for non-QUALIFIED leads with guidance tooltip. (2) Add confirmation dialog before conversion. (3) Add createAccount option to conversion flow. (4) Handle conversion errors gracefully. Page: leads/[id]/page.tsx line 1169. | none → 2026-03-12 |  |  |
| IFC-226 | Lead Detail Null-State UX - Fix engagement/churn/sentiment showing raw 'Unknown' string when aiInsight is null. Replace with styled 'Not analyzed' state with visual distinction from real AI data. Page: leads/[id]/page.tsx lines 588, 2258. | none → 2026-03-15 |  |  |
| IFC-236 | Recent Activity Empty State CTA - Overview tab shows generic 'No activities yet' with no call to action. Add 'Log your first activity' CTA button linking to Activity tab textarea. Apply same pattern to Contact detail page. Page: leads/[id]/page.tsx line 1600. | none → 2026-03-12 |  |  |
| IFC-237 | Lead Router Security - Tenant Isolation & Domain Bypass. Fix 4 CRITICAL/MEDIUM security issues: (1) scoreWithAI fire-and-forget uses raw ctx.prisma instead of prismaWithTenant - cross-tenant data leak risk [S2]. (2) logActivity $transaction uses raw ctx.prisma - may bypass tenant middleware [S3]. (3) bulkUpdateStatus uses direct Prisma updateMany bypassing Lead.changeStatus() domain validation - skips status transition rules and domain events [S4]. (4) getHotLeads/getReadyForQualification pass userId as ownerId without explicit tenantId [S9]. Fix: Replace ctx.prisma with prismaWithTenant in all cases. Route bulkUpdateStatus through domain model. Add explicit tenantId to hot/ready queries. | none → 2026-03-12 |  |  |
| IFC-252 | Contact Router Security — Tenant Isolation Fixes. CRITICAL: (1) search procedure has no createTenantWhereClause — cross-tenant search by name/email (R-02). (2) logActivity transaction uses raw ctx.prisma with no tenantId in WHERE — cross-tenant update (R-03). (3) bulkEmail/bulkExport no tenant filter — email exfiltration via guessed UUIDs (R-04). (4) stats ignores typedCtx tenant — no tenantId boundary (R-05). (5) getById/getByEmail double-fetch through unscoped domain repo (R-06). Cross-ref: R-01 (prismaWithTenant raw) is cross-cutting and shared with IFC-237. Audit: docs/audit/contact-detail-wiring-audit.md §15. | none → 2026-03-12 |  |  |
| IFC-254 | Contact Router Data Integrity Fixes. (1) Raw SQL in getTimeline has no tenant filter and .catch(() => []) swallows errors (R-09). (2) sortBy accepts arbitrary strings — enum whitelist needed (R-10). (3) filterOptions ignores status input (R-12). (4) contactListResponseSchema uses 'data' key but router returns 'contacts' (D-03). (5) phone non-nullable in response schema but mapper returns null (D-08/R-14). Audit: docs/audit/contact-detail-wiring-audit.md §15,§18. | none → 2026-03-15 |  |  |
| IFC-267 | Account Detail No-Op Action Buttons. Wire 6 non-functional buttons: (1) Create Deal button no onClick (F-05, AccountDetail.tsx:229). (2) Add Contact button no onClick in overview (F-06, AccountDetail.tsx:233). (3-4) Add Contact buttons no onClick in contacts tab header and empty state (F-07/F-08, AccountContactsList.tsx:61,85). (5-6) Create Opportunity buttons no onClick in opportunities tab header and empty state (F-10/F-11, AccountOpportunitiesList.tsx:68,116). Each button should open the appropriate create form or association dialog with accountId pre-filled. Audit: docs/audit/account-detail-wiring-audit.md sections 3-5. | none → 2026-03-12 |  |  |
| IFC-297 | AI Monitoring Data Persistence — Replace in-memory singleton monitoring data (driftDetector, latencyMonitor, hallucinationChecker, roiTracker) with DB-backed persistence via new AIMonitoringEvent model. Add ai-worker flush service to write metrics to DB periodically. Rewrite monitoring router to query DB instead of in-process singletons. Enables multi-process deployments to share monitoring data. | none → 2026-03-15 |  |  |

## Version 16 (saved 2026-03-17)

Note of the change: chore(metrics): re-sync sprint task data

Added:

| ID | Task | Finish |
| --- | --- | --- |
| IFC-305 | Componentize CRM entity detail pages (Leads, Contacts) — extract shared SOLID-compliant components from 5284 lines of duplicated god-files; wire bypassed shared components (EntityHeader, SearchFilterBar, ActivityFeed); create cross-entity reusable components (EntityProfileCard, ActivityFilterBar, AiInsightMetricsGrid, ai-insight-transforms utility, EntityErrorState, EntityDetailSkeleton, ConfirmationDialog); reduce page files from 2691/2593 to ~200 lines each | IFC-226 |
| IFC-306 | Fix Compliance Calendar Seed Data — replace fabricated/stale events in compliance-calendar.json with realistic SaaS CRM compliance milestones; remove irrelevant ISO 14001 events; update 6 past events still marked scheduled to completed; extend date range through 2026-12 covering GDPR quarterly reviews, SOC 2 audit cycle, ISO 27001 surveillance, ISO 42001 certification path, OWASP assessments; update metadata version and lastUpdated | IFC-073 |
| PG-194 | Governance Compliance Dashboard — register and wire existing /governance/compliance page; replace 5 hardcoded ComplianceCard scores (ISO 27001 92%, ISO 42001 45%, ISO 14001 78%, GDPR 98%, ADR 60%) with real compliance API data; remove hardcoded overall score 74.6 and '16 Total' action items; remove ISO 14001 card (irrelevant to SaaS); connect ComplianceTimeline and RiskHeatMap to live API endpoints; ensure ComplianceDetailPanel drilldown shows real control data; tests >=90% | IFC-073,IFC-100,IFC-306 |

Changed:

| ID | Task | Start |
| --- | --- | --- |
| IFC-278 | Deal Detail Page — Replace SAMPLE_DEAL with Real API Data. CRITICAL: Entire deal detail page (deals/[id]/page.tsx 792 lines) is 100% hardcoded with SAMPLE_DEAL constant (lines 116-150) — zero API calls. The dealId from useParams() is captured but never used for data fetch (line 684). Must: (1) Replace SAMPLE_DEAL with trpc.opportunity.getById query using dealId param. (2) Add useRequireAuth() guard (F-03 — detail page is the only unguarded page). (3) Fix STAGES constant to match domain 7-stage enum (F-04 — uses CLOSED instead of CLOSED_WON/CLOSED_LOST, omits NEEDS_ANALYSIS). (4) Fix StageProgress to use deal prop instead of SAMPLE_DEAL.value directly (F-05). (5) Remove _SAMPLE_ACTIVITIES dead code (F-06). (6) Add clickable links to account/contact detail pages (F-07). (7) Wire real owner data from getById relation include. Router getById exists (IFC-186). Cross-entity patterns from Lead 360 wiring (2026-03-04) should be followed. Audit: docs/audit/deal-detail-wiring-audit.md section 1. | none → 2026-03-17 |
| IFC-279 | Deal Create Form + /deals/new Route. No deal creation form exists — both 'New Deal' buttons (deals/(list)/page.tsx lines 454 and 492) link to /deals/new which is a 404 (F-02). Must: (1) Create page at apps/web/src/app/deals/new/page.tsx or deals/(list)/new/page.tsx. (2) Form fields: name, value (money input), stage (default PROSPECTING), probability, expectedCloseDate (date picker), accountId (account search combobox), contactId (contact search combobox). (3) Wire to trpc.opportunity.create mutation. (4) Add useRequireAuth(). (5) Validate with createOpportunitySchema. (6) Success: navigate to /deals/[newId]. Audit: docs/audit/deal-detail-wiring-audit.md section 1 F-02. | none → 2026-03-17 |
| PG-192 | Fix missing /agent-approvals/logs page — PG-152 regression; AgentLogsViewer component exists at apps/web/src/components/ai-monitoring/AgentLogsViewer.tsx but page.tsx is absent causing 404 on route | none → 2026-03-17 |

## Version 17 (saved 2026-04-06)

Note of the change: chore(metrics): re-sync sprint task data

Added:

| ID | Task | Finish |
| --- | --- | --- |
| IFC-307 | Contact Enrichment Pipeline — Automated background job that periodically enriches contact/lead data from external providers (Clearbit, Apollo). Includes: BullMQ queue intelliflow-contact-enrichment, enrichment adapter with rate limiting, on-create trigger in contact.router.ts, periodic cron sweep for stale profiles (>30 days), cost tracking via CostTracker, field updates (company, title, social profiles, industry) | IFC-168,IFC-131 |
| IFC-308 | Scheduled Report Generation — BullMQ cron job that generates daily/weekly analytics snapshots and emails summary reports to team leads. Includes: report template system (pipeline summary, lead conversion, revenue trends, SLA compliance), PDF/HTML report rendering, email delivery via notifications worker, configurable schedule per tenant, report archive storage | IFC-168,IFC-024 |

Changed:

| ID | Task | Start | Other |
| --- | --- | --- | --- |
| PG-175 | Deals Trash Page - Soft-deleted deals list with restore and permanent delete | none → 2026-03-18 |  |
| IFC-232 | Sidebar Broken Links Cleanup - 1 remaining broken navigation link: /deals/trash has no page.tsx (sidebar config deals.ts links to it but route 404s). Original 17 broken nav links and 6 settings links resolved by PG-025/PG-045/PG-174 and other sprint work. Fix: create trash/deleted-deals page at apps/web/src/app/deals/trash/page.tsx OR remove the sidebar item from deals.ts if soft-delete is not yet supported. |  | was named Sidebar Broken Links Cleanup - 17 broken navigation links and 6 broken module settings footer links. Broken nav: billing/usage, billing/plans, billing/upgrade, notifications/channels, notifications/quiet-hours, analytics/saved/*, deals/trash, tickets/sla-policies, tickets/types, tickets/automations, governance/quality-reports/*. Broken settings: /settings/leads, /settings/contacts, /settings/deals, /settings/documents, /settings/reports, /settings/accounts. Fix: create placeholder pages for unbuilt routes OR remove sidebar items for unplanned features. |
| IFC-238 | Lead Detail Status Type Fix + Auth Guard. Fix 2 CRITICAL issues: (1) LeadStatus type union at leads/[id]/page.tsx line 139 omits NEGOTIATING - runtime crash when lead has this status [S1]. (2) leads/(list)/new/page.tsx missing useRequireAuth() hook - unauthenticated users can access create lead form [F1]. Also fix trpc vs api import inconsistency in create page [F8]. Fix: Add NEGOTIATING to LeadStatus type, add useRequireAuth() to create page, standardize import. | none → 2026-03-18 |  |
| IFC-268 | Account Owner Display & Assignment. (1) Owner card shows literal 'Owner Assigned' and 'Account Manager' text instead of actual owner name/title — ownerId exists but owner relation not included in getById (F-01). (2) No owner assignment UI or mutation (F-02). Fix: include owner relation in getById query; display real owner name and role; add owner assignment combobox or dialog with user search mutation. Audit: docs/audit/account-detail-wiring-audit.md section 2. | none → 2026-03-18 |  |
| IFC-281 | Deal Backend Tenant Isolation & Audit Logging. (1) CRITICAL: PrismaOpportunityRepository.findById() (line 82) has NO tenantId WHERE clause — cross-tenant read/write/delete possible via getById/update/delete/moveStage/dealForecast (B-01). Fix: add tenantId to findById() and findByOwnerId() WHERE clauses. (2) CRITICAL: Zero auditLogger.log() calls across all 16 opportunity + pipeline-config procedures (B-02). Add audit logging to create/update/delete/moveStage (especially CLOSED_WON/CLOSED_LOST) and pipeline config changes. (3) Create notification in create procedure uses raw ctx.prisma instead of prismaWithTenant (B-03). Audit: docs/audit/deal-detail-wiring-audit.md sections 5-6. | none → 2026-03-18 |  |
| IFC-299 | Help Article CRUD tRPC Router | none → 2026-03-18 |  |
| IFC-303 | Article Feedback tRPC Mutation | none → 2026-03-18 |  |
| PG-193 | Workflow Step Progress Panel — Add real-time N/N step progress tracker to /agent-approvals/agents and /agent-approvals/logs; reads WorkflowExecution.currentStep + stepResults from tRPC; shows named steps with status icons (pending/running/completed/failed) and a % progress bar matching the AEO workflow progress UI pattern | none → 2026-03-19 |  |

## Version 18 (saved 2026-04-09)

Note of the change: chore(tracker): update global sprint plan, task registry, and dependency graph

Changed:

| ID | Task | Start |
| --- | --- | --- |
| IFC-239 | Lead Router Data Integrity Fixes. Fix 5 HIGH issues: (1) update procedure ambiguous status field handling - may silently drop or bypass domain validation [S5]. (2) Score tier thresholds inconsistent - domain LeadScore uses 80/50 but router stats query uses 70/40 [S6]. (3) sortBy accepts arbitrary strings with no enum validation - Prisma orderBy injection risk [S7]. (4) leadListResponseSchema expects 'data' key but router returns 'leads' [W4]. (5) leadResponseSchema missing Lead 360 fields (aiInsight, activities, notes, files, tasks) [D5]. Fix: Explicitly handle status in update, unify thresholds, add sortBy enum, fix schema keys. | none → 2026-04-06 |
| IFC-269 | Account Backend Tenant Isolation & Security. (1) CRITICAL: filterOptions uses raw ctx.prisma instead of prismaWithTenant for user lookup — tenant data leak (B-01, account.router.ts:445). (2) PrismaAccountRepository has NO tenantId filter on any method — single-layer defense (B-02). (3) existsByName blocks same name across all tenants — should be per-tenant (B-03). (4) sortBy parameter unsanitized — potential Prisma orderBy injection (B-04). (5) TOCTOU window in update/delete without transaction (B-05). (6) Zero audit logging on all account mutations (B-07). Audit: docs/audit/account-detail-wiring-audit.md sections 11-12. | none → 2026-04-06 |

## Version 19 (saved 2026-04-12)

Note of the change: feat(web/legal+metrics): PG-051/PG-052 terms+cookie completed; sprint-17 attestations; cached queries; legal acceptance tracker

Added:

| ID | Task | Start | Finish |
| --- | --- | --- | --- |
| PG-195 | Subset Material Symbols font to unblock Lighthouse Performance >=90 gate — reduces 3.5 MB MaterialSymbolsOutlined.woff2 shipped by root layout to every route (PG-056 Lighthouse=63 baseline). Audit the 1,421 .material-symbols-outlined call sites, build a subsetter script that extracts the exact glyph set, regenerate a smaller woff2 (<500 KB target), add CI guard so new glyphs are added to the audit list. | 2026-08-20 | PG-056 |

Changed:

| ID | Task | Start |
| --- | --- | --- |
| IFC-031 | PHASE-005: Workflow Builder UI (React Flow) | 2026-08-09 → 2026-04-12 (-119d) |
| PG-051 | Terms of Service | 2026-08-11 → 2026-04-12 (-121d) |
| IFC-232 | Sidebar Broken Links Cleanup - 1 remaining broken navigation link: /deals/trash has no page.tsx (sidebar config deals.ts links to it but route 404s). Original 17 broken nav links and 6 settings links resolved by PG-025/PG-045/PG-174 and other sprint work. Fix: create trash/deleted-deals page at apps/web/src/app/deals/trash/page.tsx OR remove the sidebar item from deals.ts if soft-delete is not yet supported. | none → 2026-04-11 |

## Version 20 (saved 2026-04-13)

Note of the change: feat(IFC-031): wire workflow router, db schema, node-catalog, validators, sprint plan sync

Added:

| ID | Task | Start | Finish |
| --- | --- | --- | --- |
| IFC-309 | Server-side terms acceptance — persist immutable TermsAcceptance audit record (tenantId, userId, termsVersion, acceptedAt, ipAddress, userAgent, route) via tRPC legal.acceptTerms mutation and legal.getAcceptance query; wire Confirm UI on /terms for authenticated users only; replaces client-only localStorage tracker removed from PG-051 as a misleading legal-compliance signal. | 2026-04-20 | PG-051,IFC-058,IFC-124 |

Changed:

| ID | Task | Start | Finish |
| --- | --- | --- | --- |
| PG-053 | Data Processing Addendum | 2026-08-13 → 2026-04-13 (-122d) | PG-050 → PG-050,PG-051 |
| PG-057 | Maintenance | 2026-08-18 → 2026-04-13 (-127d) |  |
| IFC-196 | Home Page Response Caching - Redis caching for getWelcomeSummary with event-driven invalidation | none → 2026-04-13 |  |
| IFC-300 | Help Article Seed Script — Static to DB Migration | none → 2026-04-13 |  |
| PG-182 | Module Settings - Contacts (/contacts/contact-settings) | none → 2026-04-13 |  |
| PG-183 | Module Settings - Accounts (/accounts/account-settings) | none → 2026-04-13 |  |
| PG-195 | Subset Material Symbols font to unblock Lighthouse Performance >=90 gate — reduces 3.5 MB MaterialSymbolsOutlined.woff2 shipped by root layout to every route (PG-056 Lighthouse=63 baseline). Audit the 1,421 .material-symbols-outlined call sites, build a subsetter script that extracts the exact glyph set, regenerate a smaller woff2 (<500 KB target), add CI guard so new glyphs are added to the audit list. | 2026-08-20 → 2026-04-13 (-129d) |  |

## Version 21 (saved 2026-04-19)

Note of the change: chore(project-tracker): update metrics, sprint data, and tracker UI

Added:

| ID | Task | Finish |
| --- | --- | --- |
| IFC-310 | Duplicate-detection runtime for contacts + accounts (PG-182/PG-183 follow-up) — new DuplicateDetectionService (or per-entity services sharing a rule-evaluator) that reads {Contact,Account}DuplicateRule rows at create/update time and either flags or auto-merges/auto-links records; consumes autoMergeOnExactEmail + autoLinkContactsByDomain + notifyOnDuplicate + aiDuplicateDetection + aiIndustryInference + aiEnrichment toggles from the respective AutomationSetting table; transactional merge combines rows (activities, notes, opportunities, tags, aiInsight) with conflict resolution. | PG-182,PG-183 |
| IFC-311 | Reassign endpoints + notifyOnOwnerChange wiring for contacts + accounts (PG-182/PG-183 follow-up) — add contact.reassign/contact.bulkReassign and account.reassign/account.bulkReassign tRPC procedures; on owner change, invoke the notifyContactReassignment or notifyAccountReassignment helper (both already shipped — PG-182 in contact-automation.ts, PG-183 in account-automation.ts) with the bound createNotification from notifications.router.ts; contact_reassigned is already in NOTIFICATION_TYPES — add account_reassigned alongside it. | PG-182,PG-183 |
| IFC-312 | AI chains for contacts + accounts (PG-182/PG-183 follow-up) — wire the remaining AI toggles on both entities to real LLM/embedding consumers: aiEnrichment (external enrichment API + provider adapter, shared across entities), aiTagSuggestions (LLM prompt + surface on detail pages), aiInsightGeneration (LLM chain writing to {Contact,Account}AIInsight + surface), aiAutoReplyDrafting (contact inbox), aiIndustryInference (account-only LLM classifier that picks the best AccountIndustryOption), aiAccountScoring (account-only LLM scorer that writes to the Account score field). | PG-182,PG-183,IFC-310 |
| PG-196 | Module Settings - Account Tiers (/accounts/(list)/account-tiers) | PG-178,PG-183 |
| PG-197 | Module Settings - Territory Mapping (/accounts/(list)/territory-mapping) | PG-178,PG-183 |
| PG-198 | Module Settings - Approval Policies (/agent-approvals/approval-policies) | PG-178,PG-152,PG-192 |
| PG-199 | Module Settings - Model Config (/agent-approvals/model-config) | PG-178,PG-152,PG-192 |
| PG-200 | Module Settings - Report Templates (/analytics/report-templates) | PG-178,PG-187 |
| PG-201 | Module Settings - Scheduled Reports (/analytics/scheduled-reports) | PG-178,PG-187 |
| PG-202 | Module Settings - Availability (/calendar/availability) | PG-178,PG-189 |
| PG-203 | Module Settings - Event Types (/calendar/event-types) | PG-178,PG-189 |
| PG-204 | Module Settings - Case Types (/cases/case-types) | PG-178,PG-190 |
| PG-205 | Module Settings - Contact Types (/contacts/(list)/contact-types) | PG-178,PG-182 |
| PG-206 | Module Settings - Storage Policies (/documents/(list)/storage-policies) | PG-178,PG-186 |
| PG-207 | Module Settings - Email (/email/email-settings) | PG-178,PG-182 |
| PG-208 | Module Settings - Task Automation (/tasks/(list)/automation) | PG-178,PG-191 |
| PG-209 | Module Settings - Task Types (/tasks/(list)/task-types) | PG-178,PG-191 |

Changed:

| ID | Task | Start | Finish |
| --- | --- | --- | --- |
| PG-184 | Module Settings - Deals (/deals/deal-settings) | none → 2026-04-15 | PG-178 → PG-178,PG-182,PG-183 |
| PG-185 | Module Settings - Tickets (/tickets/sla-policies) | none → 2026-04-15 | PG-178 → PG-178,PG-182,PG-183 |
| PG-186 | Module Settings - Documents (/documents/document-settings) | none → 2026-04-15 | PG-178 → PG-178,PG-182,PG-183 |

## Version 22 (saved 2026-04-20)

Note of the change: chore(tracker): update Sprint_plan.csv

Changed:

| ID | Task | Start |
| --- | --- | --- |
| PG-059 | Leads List | 2026-08-25 → 2026-04-19 (-128d) |
| PG-180 | Help Article Admin List Page | none → 2026-04-19 |
| PG-187 | Module Settings - Reports (/analytics/report-settings) | none → 2026-04-19 |
| PG-189 | Module Settings - Appointments (/calendar/calendar-settings) | none → 2026-04-19 |
| PG-190 | Module Settings - Cases (/cases/case-settings) | none → 2026-04-19 |

## Version 23 (saved 2026-04-21)

Note of the change: chore(metrics): update sprint plan, metrics and task registry

Changed:

| ID | Task | Start |
| --- | --- | --- |
| IFC-310 | Duplicate-detection runtime for contacts + accounts (PG-182/PG-183 follow-up) — new DuplicateDetectionService (or per-entity services sharing a rule-evaluator) that reads {Contact,Account}DuplicateRule rows at create/update time and either flags or auto-merges/auto-links records; consumes autoMergeOnExactEmail + autoLinkContactsByDomain + notifyOnDuplicate + aiDuplicateDetection + aiIndustryInference + aiEnrichment toggles from the respective AutomationSetting table; transactional merge combines rows (activities, notes, opportunities, tags, aiInsight) with conflict resolution. | none → 2026-04-20 |
| IFC-311 | Reassign endpoints + notifyOnOwnerChange wiring for contacts + accounts (PG-182/PG-183 follow-up) — add contact.reassign/contact.bulkReassign and account.reassign/account.bulkReassign tRPC procedures; on owner change, invoke the notifyContactReassignment or notifyAccountReassignment helper (both already shipped — PG-182 in contact-automation.ts, PG-183 in account-automation.ts) with the bound createNotification from notifications.router.ts; contact_reassigned is already in NOTIFICATION_TYPES — add account_reassigned alongside it. | none → 2026-04-20 |
| IFC-312 | AI chains for contacts + accounts (PG-182/PG-183 follow-up) — wire the remaining AI toggles on both entities to real LLM/embedding consumers: aiEnrichment (external enrichment API + provider adapter, shared across entities), aiTagSuggestions (LLM prompt + surface on detail pages), aiInsightGeneration (LLM chain writing to {Contact,Account}AIInsight + surface), aiAutoReplyDrafting (contact inbox), aiIndustryInference (account-only LLM classifier that picks the best AccountIndustryOption), aiAccountScoring (account-only LLM scorer that writes to the Account score field). | none → 2026-04-20 |

## Version 24 (saved 2026-04-22)

Note of the change: chore(sprint-plan): update sprint plan, task registry, dependency graph

Added:

| ID | Task | Finish |
| --- | --- | --- |
| PG-210 | IFC-311 reassign UI wiring follow-up (contacts + accounts) — wire the four new tRPC procedures shipped by IFC-311 (api.contact.reassign, api.contact.bulkReassign, api.account.reassign, api.account.bulkReassign) into real UI so the notifyOnOwnerChange Cat-1 toggle is reachable for end users on both entities. Source: IFC-311 post-completion code review Finding 1 — all four procedures are dead-on-arrival at runtime (zero direct UI callers). The account SINGLE-reassign path is transitively reachable via AccountDetail.tsx:152 → api.account.assignOwner (refactored in IFC-311 to delegate to performAccountReassign, so the notification fires), but api.account.bulkReassign is fully orphaned and the account detail page still calls the legacy name. Scope: (a) contacts-list bulk-actions bar exposes a Reassign action that calls contact.bulkReassign; (b) contact detail page actions expose a Reassign option that calls contact.reassign; (c) accounts-list bulk-actions bar exposes a Reassign action that calls account.bulkReassign (brand-new UI surface — no legacy shim covers this); (d) migrate AccountDetail.tsx:152 from api.account.assignOwner.useMutation to api.account.reassign.useMutation so the canonical IFC-311 name is the production caller (assignOwner stays as a deprecated legacy alias); (e) one integration test per entity that exercises the toggle flipping the notification path end-to-end. Backend API surface is already shipped by IFC-311 — this task is UI + wiring + one cosmetic endpoint migration only. | IFC-311 |

## Version 25 (saved 2026-04-24)

Note of the change: chore(metrics): bulk sync sprint metrics JSON, Sprint_plan CSV/JSON, Sprint_plan_J split

Added:

| ID | Task | Finish |
| --- | --- | --- |
| IFC-313 | Real inbox integration - contact.draftReply real-thread resolver. IFC-312 audit fix F5 follow-up: the draftReply procedure currently requires the client to supply a full emailThread array (server returns PRECONDITION_FAILED otherwise). IFC-313 replaces this with a server-side resolver that takes input.emailThreadId and fetches the actual ContactEmailThread history (pending real inbox ingestion infra - to be scoped separately). Keep the client-supplied emailThread path as a fallback for power users / integrations. | IFC-312 |

## Version 26 (saved 2026-06-05)

Note of the change: feat(infra): add INFRA-TF-001..005 tasks for the Terraform IaC initiative

Added:

| ID | Task | Start | Finish |
| --- | --- | --- | --- |
| INFRA-TF-001 | Fix Terraform provider-schema drift (Railway + Vercel modules) so `terraform validate` is green. Migrate railway_deployment->railway_service source_image, default_environment object, and Vercel env->vercel_project_environment_variable / vercel_webhook / edge-config to the current provider schemas. | 2026-06-08 |  |
| INFRA-TF-002 | Provision the three apps/workers (events-worker, ingestion-worker, notifications-worker) as first-class Railway services in Terraform. Closes GH #230/#259/#270 (workers built/tested but never deployed). | 2026-06-08 | INFRA-TF-001 |
| INFRA-TF-003 | Replace the Supabase null_resource + curl scaffolding with the official supabase/supabase Terraform provider so Supabase auth/storage/extensions config is genuinely drift-detected. | 2026-06-08 | INFRA-TF-001 |
| INFRA-TF-004 | Environment tfvars (dev/staging/prod) + remote state backend + a monitoring Terraform module (Grafana/Prometheus/Loki/Tempo as observability-as-code) + wire ai-worker OpenTelemetry (IFC-032). | 2026-06-08 | INFRA-TF-001 |
| INFRA-TF-005 | CI + import + runbooks: add the three workers to build-images.yml and railway-deploy.yml; terraform import existing live Vercel/Railway/Supabase infra into state; update railway-deploy / workers / observability runbooks. | 2026-06-08 | INFRA-TF-002,INFRA-TF-004 |

## Version 27 (saved 2026-06-08)

Note of the change: chore(merge): sync fix/e2e-next-public-app-url with main

Added:

| ID | Task | Start |
| --- | --- | --- |
| IFC-314 | CRM-to-portal delivery & billing sync (Leangency 14-day flow). On deal-won, provision the portal tenant + push initial delivery state, then mirror billing as it changes. Adds SetupInstalment model + DeliveryTier enum + tenantSlug on Opportunity; Stripe invoice create/finalize for the 3x GBP167 Setup fee (D0/7/14); StripeSubscription persistence on customer.subscription.* webhooks; a PortalDeliverySync service that POSTs /api/internal/tenants then /api/internal/delivery via the domain_events outbox; extends CloseDealWonUseCase; registers a deal_won_enriched handler in events-worker; adds a daily portal-delivery-sweep BullMQ job in ai-worker; and verifies the Stripe webhook signature (handleSubscriptionWebhook moved off tRPC). | 2026-06-07 |

Changed:

| ID | Task | Other |
| --- | --- | --- |
| PG-085 | Email Templates (all auth/notification/in-app surfaces; findings: git issue #350 + debt EMAIL-BRAND-001/SEC-AUTH-NOTIF-001) | was named Email Templates |

## Version 28 (saved 2026-06-09)

Note of the change: docs(email): sync tracker + correct IFC-223 to reality (mock to Resend)

Changed:

| ID | Task | Other |
| --- | --- | --- |
| IFC-223 | Wire actual Email Outbound Adapter (Resolves R-018) [2026-06-09 audit: shipped as Completed but was MOCK in prod — container.ts had no resend branch; actually wired to Resend via #363/#360 + activated on Railway api service] | was named Wire actual Email Outbound Adapter (Resolves R-018) |

## Version 29 (saved 2026-06-10)

Note of the change: feat(PG-060): client-side lead enrichment + a11y on New Lead page

Changed:

| ID | Task | Start |
| --- | --- | --- |
| IFC-256 | Contact Detail Hardcoded Tabs — Tickets & Documents. (1) Tickets tab fully hardcoded with 'TKT-1234' and static timestamp (F-02, F-21). ContactWithRelations has no tickets relation. Tab badge hardcoded to 0. (2) Documents tab hardcoded with 2 static PDFs — apiContact.documents data exists in interface but is completely ignored (F-03). Need: wire tickets via TicketService query, wire documents from apiContact.documents or file infrastructure. Audit: docs/audit/contact-detail-wiring-audit.md §5,§9,§16. | none → 2026-06-10 |

## Version 30 (saved 2026-06-12)

Note of the change: feat(contacts): wire IFC-257 contact-detail action buttons

Changed:

| ID | Task | Start |
| --- | --- | --- |
| IFC-257 | Contact Detail Action Button Wiring. 18 buttons without onClick handlers: Email (1133), Log Call (1139), Log Activity submit (1426), Add Deal (1872), Create Ticket (1917), Upload (1958), Add Note (2007, 2214), View Map (1341), Play Recording (969), Download (1039), Reply/React/Add Note/Share activity actions (1076-1099), toolbar buttons (1410/1415/1420). Zero useMutation calls on entire page (F-04, F-05, F-06, F-23). Need: add logActivity mutation, wire compose/call to existing components, wire action buttons. Audit: docs/audit/contact-detail-wiring-audit.md §11,§16. | none → 2026-06-13 |

## Version 31 (saved 2026-06-13)

Note of the change: chore(metrics): mark IFC-265 Completed + refresh SESSION_CONTEXT (wave-3 reconcile) (#426)

Changed:

| ID | Task | Start |
| --- | --- | --- |
| IFC-265 | Contact Detail Page Tests. (1) Contact detail page (2242 lines) has ZERO page-level tests (T-01). (2) Tenant isolation NEVER tested in 2878 lines of router tests (T-04). (3) logActivity missing activity type coverage in tests (T-06). (4) getById relations (activities, notes, opportunities, aiInsight) not asserted (T-07). (5) Tab content rendering not verified in component tests (T-08). Audit: docs/audit/contact-detail-wiring-audit.md §19. | none → 2026-06-13 |
| IFC-270 | Account Router Missing Procedures & Update Fix. (1) Update procedure silently drops revenue/employees/industry/parentAccountId fields accepted by schema (B-08). (2) accountListResponseSchema uses 'data' key but router returns 'accounts' — mismatch (B-09). (3) No updateRevenue procedure — domain Account.updateRevenue() unreachable via API (B-10). (4) No updateEmployeeCount procedure (B-11). (5) No categorizeIndustry procedure (B-12). (6) mapAccountToResponse returns raw WebsiteUrl value object instead of string (B-13). Audit: docs/audit/account-detail-wiring-audit.md section 12. | none → 2026-06-12 |
| IFC-273 | Account List Page Type Safety & Filter Enums. (1) serverStats cast to any loses type safety (L-01, AccountsPageClient.tsx:154). (2) Double unsafe cast for withOpportunities stat (L-02, AccountsPageClient.tsx:206-208). (3) AccountTier type and getAccountTier() duplicated locally in AccountCard.tsx instead of using domain enum (L-04). (4) Contact status filter uses hardcoded inline option values instead of ContactStatus domain enum (F-09, AccountContactsList.tsx:81-83). (5) Opportunity stage filter uses hardcoded inline strings instead of OpportunityStage domain enum (F-12, AccountOpportunitiesList.tsx:109-114). Audit: docs/audit/account-detail-wiring-audit.md sections 4-5, 15. | none → 2026-06-13 |
| IFC-280 | Deal Detail Action Buttons — Wire 14 No-Ops. (1) EntityHeader 6 no-ops all with onClick: () => {} (F-08): Won → moveStage CLOSED_WON with success dialog; Lost → moveStage CLOSED_LOST with LossReasonModal (reuse from list page); Edit → navigate to edit form or open inline edit; Clone → duplicate mutation; Archive → set archived status; Delete → AlertDialog confirmation + delete mutation. (2) Stakeholder/Product/File 8 no-ops (F-09): Edit stakeholders → open edit dialog; Account icons → navigate to /accounts/[id] and website; Contact icons → mailto: and tel: links; Add Product → product association dialog; File upload → upload mutation; File links → presigned URL download. Depends on IFC-278 (real data needed for mutations). Audit: docs/audit/deal-detail-wiring-audit.md section 2. | none → 2026-06-13 |
| IFC-282 | Deal Router Correctness Fixes. (1) Name updates silently dropped — service has TODO 'Add updateName method' (B-04, OpportunityService.ts:313). Add updateName to domain and wire in service. (2) data.probability?.value unwrapping may be undefined if percentageSchema returns plain number (B-05, router:460). Verify and fix. (3) opportunityListResponseSchema key 'data' vs router key 'opportunities' mismatch (B-07, validators:88 vs router:437). (4) throwOpportunityCreateError maps VALIDATION_ERROR to NOT_FOUND — wrong HTTP semantic (B-09, router:55). (5) validateStageDeactivation throws plain Error → 500 instead of BAD_REQUEST (B-10, validators:214). (6) mapOpportunityToResponse drops closedAt field (B-11, mappers.ts:88-108). (7) CLOSED_LOST no-reason passes Zod but fails at service (B-12, router:322). Audit: docs/audit/deal-detail-wiring-audit.md section 6. | none → 2026-06-13 |

## Version 32 (saved 2026-06-14)

Note of the change: test(IFC-266): contact list/create page tests + E2E

Changed:

| ID | Task | Start |
| --- | --- | --- |
| IFC-266 | Contact List/Create Page Tests + E2E. (1) Contact list page has ZERO page tests (T-02). (2) Contact create page has ZERO page tests — auth guard gap F-07 would be caught (T-03). (3) Bulk selection (select all, bulk email, bulk export) untested (T-05). (4) Contract tests missing for bulkEmail, bulkExport, bulkDelete (T-09). (5) No E2E Playwright tests for contact CRUD flow (T-10). Audit: docs/audit/contact-detail-wiring-audit.md §19. | none → 2026-06-14 |

## Version 33 (saved 2026-06-15)

Note of the change: chore(metrics): mark IFC-301 Completed + fix test-artifact path (Tiptap editor) (#486)

Changed:

| ID | Task | Start |
| --- | --- | --- |
| IFC-287 | Deal Filter Wiring & Type Safety. (1) DealFilters state (filters) captured in page but NEVER passed to trpc.opportunity.list.useQuery — ownerId and dateRange selections have no effect on kanban view data (F-10, deals/(list)/page.tsx:214,226). (2) 'More Filters' button has no onClick handler (F-11, DealFilters.tsx). (3) Owner filter only has 2 hardcoded options: 'All Deals' and 'My Deals' — no dynamic user list (F-12). (4) transformDeals uses loose Record<string,unknown> casting at API boundary instead of typed response (F-19, types.ts:102-119). Wire filters to API query params; add server-side owner filter with user list; type-safe API response handling. Audit: docs/audit/deal-detail-wiring-audit.md sections 3, 8. | none → 2026-06-14 |
| IFC-301 | Rich Text Editor Integration — Tiptap | none → 2026-06-15 |

## Version 34 (saved 2026-06-27)

Note of the change: chore(IFC-302): flip CSV to Completed after #534 merge

Changed:

| ID | Task | Start |
| --- | --- | --- |
| IFC-302 | Refactor Help Article Page to Use Database | none → 2026-06-27 |

## Version 35 (saved 2026-06-29)

Note of the change: chore(sprint-18): mark IFC-309, PG-200 completed after fleet iteration 2

Changed:

| ID | Task | Start |
| --- | --- | --- |
| IFC-215 | AI Monitoring Payload Fidelity - Replace tokenCost model and hallucination placeholders with real chain metadata | none → 2026-06-29 |
| IFC-234 | Settings Pages Wiring - 4 settings pages with hardcoded data and inert buttons. Team: hardcoded 4-person array, inert Invite/Remove/Role buttons. Integrations: hardcoded provider list, inert Connect/Disconnect buttons. Notifications: hardcoded const, no useState, no onClick on toggles. Account: profile name/email has no save mutation, 3 security buttons (Change Password, Enable 2FA, Download Data) have no onClick. Wire all to real tRPC mutations and queries. | none → 2026-06-29 |
| IFC-247 | Lead Detail Page Tests. Lead detail page (2200+ lines) has ZERO component tests [T1]. Also untested: addNote procedure [T4] and logActivity procedure [T5] added 2026-03-04. Write comprehensive tests: (1) Component render tests for all tabs (Overview, Activity, AI Insights, Lead IQ, Notes, Files, Emails, Tasks). (2) Mutation tests for addNote and logActivity. (3) Error state tests (404, 500, retry). (4) AI insight null-state rendering. (5) Activity feed toggle. Must cover 2026-03-04 wiring fixes. | none → 2026-06-29 |
| PG-188 | Module Settings - Billing (/billing/settings) | none → 2026-06-29 |

## Version 36 (saved 2026-06-30)

Note of the change: chore(automation-003): mark Completed after PR #566 merge

Added:

| ID | Task | Start |
| --- | --- | --- |
| AUTOMATION-003 | Standardize attestation provenance fields (exec-attestation emits; schema declares; exec-preflight gate enforces; orchestrator DoD requires) | 2026-06-30 |

## Version 37 (saved 2026-07-22)

Note of the change: chore(pm-ops-003): sprint 19 rebaseline, planning & readiness gate

Added:

| ID | Task | Start | Finish |
| --- | --- | --- | --- |
| ENG-OPS-002 | Auditoria integral do estado técnico e arquitetural dos Sprints 1-18 (reconciliação + tooling + DDD/hexagonal/security/perf/quality/docs findings + Sonar baseline + remediation plan) | 2026-07-22 | ENG-OPS-001,GOV-001,IFC-131,EXP-REPORTS-002 |
| ENG-OPS-002.R01 | Remediation R01 [Critical/SEC-001]: tenant-isolation fix — scope email searchContacts query by tenantId (currently unscoped ctx.prisma, cross-tenant contact enumeration) | 2026-07-22 | ENG-OPS-002 |
| ENG-OPS-002.R02 | Remediation R02 [Critical/QUAL-003+004]: dedup evaluator correctness — threshold nullish-coalescing (?? 100) + empty-composite guard, un-skip the 2 property tests | 2026-07-22 | ENG-OPS-002 |
| ENG-OPS-002.R03 | Remediation R03 [Critical/STALE-001+002]: stale-doc cleanup — fix CLAUDE.md sprint/task-count anchor and regenerate/deprecate sprint-18 _summary.json | 2026-07-22 | ENG-OPS-002 |
| ENG-OPS-002.R04 | Remediation R04 [Critical/DDD-001][REVIEW]: Lead->Deal conversion transaction atomicity (unit-of-work across 4 aggregates) — HELD for design review | 2026-07-22 | ENG-OPS-002 |
| ENG-OPS-002.R05 | Remediation R05 [Critical/HEX-001][REVIEW]: wire ticket port into composition root or delete orphan port — HELD for design decision | 2026-07-22 | ENG-OPS-002 |
| ENG-OPS-002.R06 | Remediation R06 [Critical/HEX-005][REVIEW]: appointments router use-case migration (~28 direct prisma sites) — HELD, 20+ file refactor | 2026-07-22 | ENG-OPS-002 |
| ENG-OPS-002.R07 | Remediation R07 [Critical/QUAL-015][REVIEW]: consolidate diverging prompt-sanitizer into one canonical module — HELD, security design decision | 2026-07-22 | ENG-OPS-002 |
| ENG-OPS-002.R08 | Remediation R08 [High/HEX-002+003]: ticket hexagonal extraction (TicketService/TicketRoutingService -> use cases behind port) | 2026-07-22 | ENG-OPS-002.R05 |
| ENG-OPS-002.R09 | Remediation R09 [High/HEX-004]: LeadRoutingService depends on LeadRepositoryPort instead of raw PrismaClient | 2026-07-22 | ENG-OPS-002 |
| ENG-OPS-002.R10 | Remediation R10 [High/QUAL-001+002]: ticket + task aggregate state-machine transition guards, un-skip the property tests | 2026-07-22 | ENG-OPS-002 |
| ENG-OPS-002.R11 | Remediation R11 [High/DDD-002]: persist domain events (outbox) inside the same transaction as aggregate state (ADR-011 zero-lost-events) | 2026-07-22 | ENG-OPS-002.R04 |
| ENG-OPS-002.R12 | Remediation R12 [High/DDD-003+004]: TenantId value object + move lead auto-qualify policy into the Lead aggregate | 2026-07-22 | ENG-OPS-002 |
| ENG-OPS-002.R13 | Remediation R13 [High/QUAL-012]: add eslint no-disabled-tests gate (allow-list w/ linked issue) and reconcile the 21 skipped property tests | 2026-07-22 | ENG-OPS-002.R02,ENG-OPS-002.R10 |
| ENG-OPS-002.R14 | Remediation R14 [High/PERF-003]: enable pg_trgm + GIN trigram indexes for free-text search (kill ILIKE seq-scans) | 2026-07-22 | ENG-OPS-002 |
| ENG-OPS-002.R15 | Remediation R15 [High/GOV-A-003]: triage 175/447 schema-validation failures (regenerate vs fix) and wire validate:schemas into pre-ship | 2026-07-22 | ENG-OPS-002 |
| ENG-OPS-002.R16 | Remediation R16 [High/GOV-A-001+002]: backfill 18 missing Sprint-18 attestations + record the 177-task provenance gap in debt ledger | 2026-07-22 | ENG-OPS-002 |
| ENG-OPS-002.R17 | Remediation R17 [High/QUAL-013]: decide ERP/SAP connector — complete SAPAdapter to un-skip 19 tests OR formally mark deferred in sprint plan | 2026-07-22 | ENG-OPS-002 |
| ENG-OPS-002.R18 | Remediation R18 [Medium batch]: triage the 39 Medium findings (ddd/hexagonal/security/perf/quality/stale) into focused Sprint-19 follow-ups | 2026-07-22 | ENG-OPS-002 |
| PM-OPS-003 | Sprint 19 rebaseline, planning & readiness gate — validate 4 completed tasks (reopen phantom completions), reassess 11 backlog, dependency+duplication scan across all 616 tasks/PRs/issues/specs/debt-ledger, real multi-factor capacity model, remediation-findings triage (0 net-new duplicates), P0-P3 prioritization, execution waves 0-5, readiness verdict | 2026-07-22 | ENG-OPS-002 |

## Version 38 (saved 2026-07-24)

Note of the change: feat(contacts): extract Contact 360 view + insights components (PG-065)

Added:

| ID | Task | Start | Finish |
| --- | --- | --- | --- |
| ENG-OPS-003 | Harness hardening Gaps #1-#4 + OSV PRs A/B: retroactive umbrella for the 8 untracked CI/security/E2E-harness PRs merged 2026-07-24 (#623, #625, #627, #628, #629, #630, #631, #634) | 2026-07-25 | ENG-OPS-002 |

## Version 39 (saved 2026-08-02)

Note of the change: Merge bb42bd3186af12ac3ef30d341b3b9db924367c77 into 75673af16db904e343f844ea1691a510bd6425c1

Added:

| ID | Task | Start |
| --- | --- | --- |
| AUTOMATION-004 | Task-contract JSON schema + dispatch-binding enforcement (ADR-070) | 2026-07-26 |

## Version 40 (saved 2026-08-11)

Note of the change: chore(eng-ops-002.r13): backfill missing attestation + CSV status sync

Removed: AUTOMATION-004 Task-contract JSON schema + dispatch-binding enforcement (ADR-070)

## Version 41 (saved 2026-10-05)

Note of the change: fix(docs): remove invented people, teams and evidence hashes from the repo

Added:

| ID | Task | Start |
| --- | --- | --- |
| AUTOMATION-004 | Task-contract JSON schema + dispatch-binding enforcement (ADR-072) | 2026-07-26 |

Changed:

| ID | Task | Start |
| --- | --- | --- |
| ENV-008-AI | Automated Observability with Predictive Monitoring | 2025-12-17 → 2026-10-06 (+293d) |
| EP-001-AI | EasyPanel Internal Tools Deployment (Push-based OTLP Pipeline) | 2025-12-19 → 2026-10-06 (+291d) |
| IFC-032 | PHASE-005: OpenTelemetry Monitoring | 2026-08-23 → 2026-10-06 (+44d) |
| IFC-033 | PHASE-005: Load Testing with k6 | 2026-09-06 → 2026-10-06 (+30d) |
| IFC-056 | Team Upskilling Program | 2026-04-19 → 2026-10-06 (+170d) |
| IFC-074 | PHASE-040: Full Stack Observability | 2025-12-30 → 2026-10-06 (+280d) |
| IFC-097 | Distributed Tracing & Logging | 2026-04-21 → 2026-10-06 (+168d) |
| PG-014 | Status Page | 2026-06-10 → 2026-10-06 (+118d) |
| IFC-116 | Instrument application with OpenTelemetry, unify logs, metrics and traces | 2026-04-19 → 2026-10-06 (+170d) |
| IFC-117 | Monitor AI models for drift, latency, hallucination and ROI | 2026-05-05 → 2026-10-06 (+154d) |
| IFC-142 | Define SLOs/SLIs and alerting; establish on-call and incident management process; conduct restore drills; create capacity and cost budgets for AI inference and search | 2026-04-05 → 2026-10-06 (+184d) |
| INFRA-TF-004 | Environment tfvars (dev/staging/prod) + remote state backend + a monitoring Terraform module (Grafana/Prometheus/Loki/Tempo as observability-as-code) + wire ai-worker OpenTelemetry (IFC-032). | 2026-06-08 → 2026-10-06 (+120d) |

## Version 42 (saved 2026-10-06)

Note of the change: chore(plan): close IFC-032 on production evidence (#808)

Changed:

| ID | Task | Start |
| --- | --- | --- |
| IFC-027 | PHASE-001: Gate 2 Review - £2000 Investment | 2026-07-19 → 2026-10-06 (+79d) |
| IFC-151 | Event consumers framework: retries + DLQ + backoff + observability; standard webhook/idempotency utilities | 2026-04-19 → 2026-10-06 (+170d) |

## Version 43 (saved 2026-10-07)

Note of the change: chore(plan): reopen 8 sprint 20-29 tasks that were completed without evidence (#826)

Changed:

| ID | Task | Start |
| --- | --- | --- |
| PG-196 | Module Settings - Account Tiers (/accounts/(list)/account-tiers) | none → 2026-10-06 |
| PG-197 | Module Settings - Territory Mapping (/accounts/(list)/territory-mapping) | none → 2026-10-07 |

## Version 44 (saved 2026-10-12)

Note of the change: chore(pg-201): record spec-session status for scheduled reports

Changed:

| ID | Task | Start |
| --- | --- | --- |
| PG-201 | Module Settings - Scheduled Reports (/analytics/scheduled-reports) | none → 2026-10-13 |

## Version 45 (saved 2026-10-13)

Note of the change: chore(csv): mark pg-198 in progress during exec

Changed:

| ID | Task | Start |
| --- | --- | --- |
| PG-198 | Module Settings - Approval Policies (/agent-approvals/approval-policies) | none → 2026-10-13 |
| PG-201 | Module Settings - Scheduled Reports (/analytics/scheduled-reports) | 2026-10-13 → none |

## Version 46 (saved 2026-10-15)

Note of the change: refactor(workers): fold notifications-worker email consumer into ai-worker (#897)

Changed:

| ID | Task | Start |
| --- | --- | --- |
| PG-198 | Module Settings - Approval Policies (/agent-approvals/approval-policies) | 2026-10-13 → none |

## Version 47 (saved 2026-10-16)

Note of the change: feat(agent-approvals): tenant approval policies for ai work (pg-198) (#906)

Changed:

| ID | Task | Start | Finish |
| --- | --- | --- | --- |
| IFC-308 | Scheduled Report Generation — BullMQ cron job that generates daily/weekly analytics snapshots and emails summary reports to team leads. Includes: report template system (pipeline summary, lead conversion, revenue trends, SLA compliance), PDF/HTML report rendering, email delivery via notifications worker, configurable schedule per tenant, report archive storage |  | IFC-168,IFC-024 → IFC-168,IFC-024,PG-201 |
| PG-198 | Module Settings - Approval Policies (/agent-approvals/approval-policies) | none → 2026-10-13 |  |
| PG-201 | Module Settings - Scheduled Reports (/analytics/scheduled-reports) | none → 2026-10-13 |  |
| PG-204 | Module Settings - Case Types (/cases/case-types) | none → 2026-10-13 |  |

## Version 48 (saved 2026-10-17)

Note of the change: docs(pg-205): registries, findings, owner rulings 8-9, plan progress and tdd evidence

Changed:

| ID | Task | Start |
| --- | --- | --- |
| PG-205 | Module Settings - Contact Types (/contacts/(list)/contact-types) | none → 2026-10-17 |

## Version 49 (saved 2026-10-18)

Note of the change: feat(contacts): tenant contact types, type picker and contacts list type filter (PG-205) (#915)

Changed:

| ID | Task | Start |
| --- | --- | --- |
| PG-202 | Module Settings - Availability (/calendar/availability) | none → 2026-10-17 |

## Version 50 (saved 2026-10-19)

Note of the change: chore(pg-199): merge origin/main into feat/pg-199-model-config

Changed:

| ID | Task | Start |
| --- | --- | --- |
| PG-199 | Module Settings - Model Config (/agent-approvals/model-config) | none → 2026-10-19 |

## Version 51 (saved 2026-10-20)

Note of the change: docs(pg-203): tdd execution plan approved by the plan reviewer

Changed:

| ID | Task | Start |
| --- | --- | --- |
| PG-199 | Module Settings - Model Config (/agent-approvals/model-config) | 2026-10-19 → none |
| PG-203 | Module Settings - Event Types (/calendar/event-types) | none → 2026-10-20 |

## Version 52 (saved 2026-10-21)

Note of the change: chore(pg-203): merge origin/main into feat/pg-203-event-types

Added:

| ID | Task | Finish |
| --- | --- | --- |
| PG-211 | Public booking: booker self-service cancel/reschedule. A signed, single-purpose, expiring link in the PG-203 booking confirmation email lets the booker cancel or move a /book/<handle>/<slug> appointment without contacting the firm. The move goes through the same per-tenant booking advisory lock, availability re-check, notice/horizon and daily cap as publicBooking.book (ADR-083); tokens are stored only as HMACs and travel in the URL fragment (PG-203 DSAR pattern); the host is notified. Origin: PG-203 follow-up (spec Risks; PRD addendum). | PG-203 |
| PG-212 | Event types: per-type minimum notice and booking horizon. Replace the fixed BOOKING_MIN_NOTICE_MINUTES (60) and BOOKING_HORIZON_DAYS (60) constants (packages/domain/src/legal/appointments/event-types.ts) with per-event-type fields on event_types (Class A migration, named CHECKs, defaults 60 min / 60 days), editable in the /calendar/event-types dialog and honoured by listOpenSlots and the public booking re-check. Origin: PG-203 follow-up (PRD addendum). | PG-203 |
| PG-213 | Retention: purge public-booking PII after a firm-set period. Under the PG-206 retention policies, appointments.bookerName/bookerEmail/bookingAnswers/bookingConsentAt/bookingConsentVersion are cleared for public bookings older than a firm-configured retention period (the booking_attempts 48 h prune from PG-203 stays); the run is replica-safe and audit-logged with counts only. Origin: PG-203 follow-up (spec AC-022; PRD addendum). | PG-203,PG-206 |

Changed:

| ID | Task | Start |
| --- | --- | --- |
| PG-199 | Module Settings - Model Config (/agent-approvals/model-config) | none → 2026-10-19 |

## Version 53 (saved 2026-10-22)

Note of the change: docs(env-008-ai): spec, owner rulings, code audit and adr-087 for production observability

Removed: PG-211 Public booking: booker self-service cancel/reschedule. A signed, single-purpose, expiring link in the PG-203 booking confirmation email lets the booker cancel or move a /book/<handle>/<slug> appointment without contacting the firm. The move goes through the same per-tenant booking advisory lock, availability re-check, notice/horizon and daily cap as publicBooking.book (ADR-083); tokens are stored only as HMACs and travel in the URL fragment (PG-203 DSAR pattern); the host is notified. Origin: PG-203 follow-up (spec Risks; PRD addendum).; PG-212 Event types: per-type minimum notice and booking horizon. Replace the fixed BOOKING_MIN_NOTICE_MINUTES (60) and BOOKING_HORIZON_DAYS (60) constants (packages/domain/src/legal/appointments/event-types.ts) with per-event-type fields on event_types (Class A migration, named CHECKs, defaults 60 min / 60 days), editable in the /calendar/event-types dialog and honoured by listOpenSlots and the public booking re-check. Origin: PG-203 follow-up (PRD addendum).; PG-213 Retention: purge public-booking PII after a firm-set period. Under the PG-206 retention policies, appointments.bookerName/bookerEmail/bookingAnswers/bookingConsentAt/bookingConsentVersion are cleared for public bookings older than a firm-configured retention period (the booking_attempts 48 h prune from PG-203 stays); the run is replica-safe and audit-logged with counts only. Origin: PG-203 follow-up (spec AC-022; PRD addendum).

Changed:

| ID | Task | Start |
| --- | --- | --- |
| PG-203 | Module Settings - Event Types (/calendar/event-types) | 2026-10-20 → none |

## Version 54 (saved 2026-10-24)

Note of the change: chore(pg-203): add the four dsar follow-up tasks to sprint 19

Added:

| ID | Task | Finish |
| --- | --- | --- |
| PG-211 | Public booking: booker self-service cancel/reschedule. A signed, single-purpose, expiring link in the PG-203 booking confirmation email lets the booker cancel or move a /book/<handle>/<slug> appointment without contacting the firm. The move goes through the same per-tenant booking advisory lock, availability re-check, notice/horizon and daily cap as publicBooking.book (ADR-083); tokens are stored only as HMACs and travel in the URL fragment (PG-203 DSAR pattern); the host is notified. Origin: PG-203 follow-up (spec Risks; PRD addendum). | PG-203 |
| PG-212 | Event types: per-type minimum notice and booking horizon. Replace the fixed BOOKING_MIN_NOTICE_MINUTES (60) and BOOKING_HORIZON_DAYS (60) constants (packages/domain/src/legal/appointments/event-types.ts) with per-event-type fields on event_types (Class A migration, named CHECKs, defaults 60 min / 60 days), editable in the /calendar/event-types dialog and honoured by listOpenSlots and the public booking re-check. Origin: PG-203 follow-up (PRD addendum). | PG-203 |
| PG-213 | Retention: purge public-booking PII after a firm-set period. Under the PG-206 retention policies, appointments.bookerName/bookerEmail/bookingAnswers/bookingConsentAt/bookingConsentVersion are cleared for public bookings older than a firm-configured retention period (the booking_attempts 48 h prune from PG-203 stays); the run is replica-safe and audit-logged with counts only. Origin: PG-203 follow-up (spec AC-022; PRD addendum). | PG-203,PG-206 |
| IFC-315 | Suppress marketing email to people with an objection (PG-203 follow-up: blocksMarketing) | PG-203 |
| IFC-316 | Automate erasure of communications left on the PG-203 erasure checklist | PG-203 |
| IFC-317 | Add a CSV DSAR export and Art 20(2) direct transfer to another controller | PG-203 |
| IFC-318 | Notify recipients of rectification, erasure or restriction (Art 19) | PG-203 |

Changed:

| ID | Task | Start | Other |
| --- | --- | --- | --- |
| PG-084 | Emails Cross-entity scope: wire EmailCompose component (from PG-141) into Lead and Contact detail page Compose buttons. Pre-fill recipient with entity email. Replace activity-derived email list with real email integration data. Re-scoped 2026-10-21 (Category B; PG-207 owner ruling Q10): sending through the user's own Gmail/Outlook/SMTP mailbox is delivered by PG-207 (ADR-085 dispatchUserMail) so this task keeps the entity-page Compose wiring and the real email list. |  | was named Emails Cross-entity scope: wire EmailCompose component (from PG-141) into Lead and Contact detail page Compose buttons. Pre-fill recipient with entity email. Replace activity-derived email list with real email integration data. |
| IFC-221 | Email Open Tracking Integration - Real email open/click tracking. Backend: tracking pixel endpoint recording opens; click-through URL wrapper; EmailTracking model. Frontend: replace activity-derived open rate with real data on Lead and Contact detail. Inject pixel + wrap links on outbound send. Follows IFC-144 and IFC-099 (Pattern 1 - infra-only). Resolves WIRE-IFC-099-001. Broadened 2026-10-21 (PG-207): the pixel and link wrapping apply to mail sent through every user mailbox kind (SMTP/Gmail/Microsoft via dispatchUserMail; ADR-085) and honour the PG-207 Email Settings trackOpens/trackClicks toggles (category 2 until this ships). |  | was named Email Open Tracking Integration - Real email open/click tracking. Backend: tracking pixel endpoint recording opens; click-through URL wrapper; EmailTracking model. Frontend: replace activity-derived open rate with real data on Lead and Contact detail. Inject pixel + wrap links on outbound send. Follows IFC-144 and IFC-099 (Pattern 1 - infra-only). Resolves WIRE-IFC-099-001. |
| PG-203 | Module Settings - Event Types (/calendar/event-types) | none → 2026-10-20 |  |
| PG-207 | Module Settings - Email (/email/email-settings) | none → 2026-10-20 |  |

## Version 55 (saved 2026-10-25)

Note of the change: test(ai-worker): prove the declared ai instruments are what the recorders emit

Removed: IFC-315 Suppress marketing email to people with an objection (PG-203 follow-up: blocksMarketing); IFC-316 Automate erasure of communications left on the PG-203 erasure checklist; IFC-317 Add a CSV DSAR export and Art 20(2) direct transfer to another controller; IFC-318 Notify recipients of rectification, erasure or restriction (Art 19)

## Version 56 (saved 2026-10-27)

Note of the change: chore(pg-203): merge origin/main into the dsar branch

Added:

| ID | Task | Finish |
| --- | --- | --- |
| IFC-315 | Suppress marketing email to people with an objection (PG-203 follow-up: blocksMarketing) | PG-203 |
| IFC-316 | Automate erasure of communications left on the PG-203 erasure checklist | PG-203 |
| IFC-317 | Add a CSV DSAR export and Art 20(2) direct transfer to another controller | PG-203 |
| IFC-318 | Notify recipients of rectification, erasure or restriction (Art 19) | PG-203 |

## Version 57 (saved 2026-10-28)

Note of the change: feat(tasks): task automation rules engine and settings page (pg-208)

Removed: IFC-315 Suppress marketing email to people with an objection (PG-203 follow-up: blocksMarketing); IFC-316 Automate erasure of communications left on the PG-203 erasure checklist; IFC-317 Add a CSV DSAR export and Art 20(2) direct transfer to another controller; IFC-318 Notify recipients of rectification, erasure or restriction (Art 19)

Changed:

| ID | Task | Start |
| --- | --- | --- |
| PG-208 | Module Settings - Task Automation (/tasks/(list)/automation) | none → 2026-10-20 |

## Version 58 (saved 2026-10-29)

Note of the change: Merge remote-tracking branch 'origin/main' into feat/IFC-117-ai-model-monitoring

Changed:

| ID | Task | Start |
| --- | --- | --- |
| PG-208 | Module Settings - Task Automation (/tasks/(list)/automation) | 2026-10-20 → none |

## Version 59 (saved 2026-10-30)

Note of the change: chore(tasks): merge main into pg-208 after the pg-203 data subject requests (pg-208)

Added:

| ID | Task | Finish |
| --- | --- | --- |
| IFC-315 | Suppress marketing email to people with an objection (PG-203 follow-up: blocksMarketing) | PG-203 |
| IFC-316 | Automate erasure of communications left on the PG-203 erasure checklist | PG-203 |
| IFC-317 | Add a CSV DSAR export and Art 20(2) direct transfer to another controller | PG-203 |
| IFC-318 | Notify recipients of rectification, erasure or restriction (Art 19) | PG-203 |

Changed:

| ID | Task | Start |
| --- | --- | --- |
| PG-208 | Module Settings - Task Automation (/tasks/(list)/automation) | none → 2026-10-20 |

## Version 60 (saved 2026-11-06)

Note of the change: chore(merge): bring main into the sample content branch

Added:

| ID | Task |
| --- | --- |
| IFC-319 | Migrate tracing to OpenTelemetry JS SDK 3.x (sdk-node 0.300 with the 3.x trace packages) |

## Version 61 (saved 2026-11-15)

Note of the change: chore(plan): put the Leangency daily-use MVP first in sprints 24 and 25 (#1368)

Added:

| ID | Task | Start | Finish |
| --- | --- | --- | --- |
| MVP-001 | Email works end to end: the owner connects his Gmail or Microsoft mailbox in Email Settings, then sends, receives and sees threads in Aurora; replies stay in his own inbox; on the free plan. Email Settings stops firing errors. | 2026-11-15 | PG-207,PG-084 |
| MVP-002 | No trial badge on a contracted workspace: a workspace on a contract plan never shows "Trial: Nd left" and is never locked out when a trial date passes. | 2026-11-15 |  |
| MVP-003 | Lead to deal: the owner qualifies a lead and converts it to a deal from the lead page, then moves the deal through the pipeline stages; amounts show in pounds everywhere; an old pipeline link no longer hangs. | 2026-11-15 | IFC-062,IFC-233 |
| MVP-004 | Live updates work: the live-update connection opens on every page, so new mail, notifications and changes appear without a reload, and the dashboard says "Live" only when it is. |  | IFC-016 |
| MVP-005 | Find his own work: his own calls, notes and emails are easy to find among the synced leads; the Activity Log and notifications can be filtered to his own activity, and automated sync and AI-score entries do not bury it. |  | PG-130 |
| MVP-006 | Lead list on a phone: at 390px the lead list shows name, score, status and actions without sideways scrolling, and the header has one menu button. |  |  |
| MVP-007 | Fast first load: the dashboard opens quickly on the first visit of the day. |  |  |
| MVP-008 | Small fixes from the walkthrough: global search shows the person's name before the email; the deal empty state shows £0 in pounds. |  |  |
| MVP-009 | Dashboard Pipeline Summary shows the real funnel: where his leads stand, then his deals as they are created, with no empty space when the card is short. |  |  |
| MVP-010 | Dashboard Upcoming Tasks says what to do today: follow-ups due on contacted leads appear as tasks, and the card has one button to add a task. |  |  |

Changed:

| ID | Task | Start |
| --- | --- | --- |
| IFC-315 | Suppress marketing email to people with an objection (PG-203 follow-up: blocksMarketing) | none → 2026-11-12 |

## Version 62 (saved 2026-11-16)

Note of the change: chore(plan): reopen 29 self-claimed tasks whose definition of done is partly met

Changed:

| ID | Task | Start | Other |
| --- | --- | --- | --- |
| AI-SETUP-001 | Configure Claude Code with Custom Commands and Hooks REOPENED 16/11/2026 (self-claimed done, DoD partly met): DoD '.claude/commands configured': .claude/commands has no files on main. | 2025-12-14 → 2027-05-30 (+532d) | was named Configure Claude Code with Custom Commands and Hooks |
| AI-SETUP-002 | GitHub Copilot Enterprise Automation Setup REOPENED 16/11/2026 (self-claimed done, DoD partly met): DoD names copilot-setup-steps.yml; no such file exists on main. | 2025-12-15 → 2027-06-27 (+559d) | was named GitHub Copilot Enterprise Automation Setup |
| AI-SETUP-003 | External AI Tools Integration (Codex, Jules) REOPENED 16/11/2026 (self-claimed done, DoD partly met): DoD 'Codex CLI configured, Jules connected': tools/integrations/codex is absent. | 2025-12-15 → 2027-06-13 (+545d) | was named External AI Tools Integration (Codex, Jules) |
| IFC-030 | PHASE-005: Smart Lead Routing REOPENED 16/11/2026 (self-claimed done, DoD partly met): DoD 'routing-simulation-results.csv must contain real lead routing data from test database': the simulation uses a Prisma stub with fixture data; routeLead is not called on lead create. | 2026-08-09 → 2027-07-11 (+336d) | was named PHASE-005: Smart Lead Routing |
| IFC-034 | PHASE-001: Gate 3 Review - £3000 Investment | 2026-09-14 → 2026-11-15 (+62d) |  |
| IFC-035 | PHASE-006: WhatsApp Business API Research | 2026-09-20 → 2026-11-29 (+70d) |  |
| IFC-036 | PHASE-006: WhatsApp + tRPC Integration | 2026-10-04 → 2026-12-13 (+70d) |  |
| IFC-037 | PHASE-005: Analytics Dashboard Design | 2026-10-04 → 2027-05-16 (+224d) |  |
| IFC-038 | Analytics Implementation | 2026-10-18 → 2027-06-27 (+252d) |  |
| IFC-040 | Production hardening incl. HttpOnly auth sessions and release security gates | 2026-11-29 → 2027-09-19 (+294d) |  |
| IFC-041 | User Manual with Interactive Examples | 2026-10-18 → 2027-06-27 (+252d) |  |
| IFC-046 | Security Tests (OWASP ZAP + Snyk) | 2026-11-01 → 2027-04-18 (+168d) |  |
| IFC-047 | Performance Tests (k6 + Lighthouse) | 2026-10-18 → 2027-05-02 (+196d) |  |
| IFC-053 | Hypercare Period | 2027-01-10 → 2027-09-19 (+252d) |  |
| IFC-056 | Team Upskilling Program | 2026-10-06 → 2026-11-15 (+40d) |  |
| IFC-059 | ISO 42001 Readiness Assessment | 2026-11-29 → 2027-09-19 (+294d) |  |
| IFC-060 | Success Metrics Review | 2027-01-10 → 2027-09-19 (+252d) |  |
| IFC-071 | Multi-Region Setup | 2026-11-29 → 2027-10-03 (+308d) |  |
| IFC-072 | PHASE-040: Zero Trust Security Model REOPENED 16/11/2026 (self-claimed done, DoD partly met): DoD 'RLS, API authentication, mTLS': no mTLS code or config found. | 2026-01-11 → 2027-05-02 (+476d) | was named PHASE-040: Zero Trust Security Model |
| IFC-075 | IaC with Terraform REOPENED 16/11/2026 (self-claimed done, DoD partly met): No destroy-rebuild test log on main; INFRA-TF-001 later had to fix provider-schema drift. | 2025-12-28 → 2027-06-27 (+546d) | was named IaC with Terraform |
| IFC-083 | RAG Integration for Docs | 2026-11-01 → 2027-05-02 (+182d) |  |
| IFC-087 | Edge Functions Optimization | 2026-09-20 → 2027-01-10 (+112d) |  |
| IFC-094 | Documents Management - Upload & Sign REOPENED 16/11/2026 (self-claimed done, DoD partly met): DoD 'contracts signed electronically': no e-signature flow; the signedBy/signedAt/signatureHash columns are never written. | 2026-02-19 → 2027-09-05 (+563d) | was named Documents Management - Upload & Sign |
| IFC-099 | ERP/Payment/Email Connectors REOPENED 16/11/2026 (self-claimed done, DoD partly met): DoD 'ERP sync functional, payments processed, emails sent; each adapter wired to an API router': integrations.router.ts triggerSync returns a simulated result. | 2026-05-03 → 2027-08-08 (+462d) | was named ERP/Payment/Email Connectors |
| PG-003 | Pricing Page REOPENED 16/11/2026 (self-claimed done, DoD partly met): DoD 'calculator functional': pricing-calculator.tsx has no importer; the pricing page renders no calculator. | 2026-05-21 → 2028-03-05 (+654d) | was named Pricing Page |
| PG-009 | Blog Index REOPENED 16/11/2026 (self-claimed done, DoD partly met): DoD 'pagination working': blog-pagination.tsx has no importer; the blog page has no pagination. | 2026-05-31 → 2028-03-19 (+658d) | was named Blog Index |
| PG-016 | Sign Up REOPENED 16/11/2026 (self-claimed done, DoD partly met): welcome-email.ts (sendWelcomeEmail) is imported nowhere outside its own file, so the welcome email is never sent. | 2026-06-16 → 2027-05-16 (+334d) | was named Sign Up |
| PG-046 | Support Tickets REOPENED 16/11/2026 (self-claimed done, DoD partly met): DoD artifact sla-display.tsx is not imported; the ticket list renders without SLA. | 2026-03-02 → 2028-03-19 (+748d) | was named Support Tickets |
| PG-049 | Support Chat | 2026-10-18 → 2027-07-11 (+266d) |  |
| PG-066 | Edit Contact | 2026-09-10 → 2027-01-10 (+122d) |  |
| PG-067 | Import Contacts | 2026-09-11 → 2027-01-10 (+121d) |  |
| PG-068 | Merge Contacts | 2026-09-13 → 2027-01-24 (+133d) |  |
| PG-070 | Account Detail | 2026-09-20 → 2027-01-24 (+126d) |  |
| PG-071 | Edit Account | 2026-09-22 → 2027-02-07 (+138d) |  |
| PG-072 | Import Accounts | 2026-09-24 → 2027-01-24 (+122d) |  |
| PG-073 | Opportunities List: the /deals list view (DealListView), with the pipeline board at /deals?view=pipeline. Delivered by PG-135 and IFC-287. | 2026-09-26 → 2026-11-16 (+51d) | was named Opportunities List |
| PG-074 | Opportunity Detail: finish the four actions on /deals/[id] that still show a 'Coming soon' toast: Clone deal, Archive deal, Add product and File upload. The page already loads real data (api.opportunity.getById, IFC-278), and Won, Lost, Edit and Delete work (IFC-280). | 2026-09-28 → 2027-02-21 (+146d) | was named Opportunity Detail CRITICAL: Current page is fully hardcoded with SAMPLE_DEAL and SAMPLE_ACTIVITIES constants - zero API calls. Must: (1) Replace with api.opportunity.getById query (IFC-186 router already built with moveStage getHistory getProducts getPipeline endpoints). (2) Wire all 6 action buttons: Won/Lost to updateStage mutations with stage dialog Edit to navigate to edit form Clone to duplicate mutation Archive to set archived Delete to AlertDialog + delete mutation. (3) Add real activity timeline via ActivityFeed component (IFC-069). (4) Wire file section to real data. (5) Remove hardcoded SAMPLE_* constants. Cross-entity patterns from Lead 360 wiring (2026-03-04) should be followed. |
| PG-075 | Edit Opportunity | 2026-09-30 → 2027-03-07 (+158d) |  |
| PG-076 | Pipeline Board: the /deals?view=pipeline kanban. Deals drag between stages (@dnd-kit, opportunity.moveStage), columns show stage value totals, filters apply. Delivered by PG-135 and IFC-091. | 2026-10-04 → 2026-11-16 (+43d) | was named Pipeline Board |
| PG-077 | Pipeline stage insights: show each stage's conversion rate to the next stage and the average time deals spend in it on the /deals pipeline. Stage configuration already exists at /settings/pipeline (IFC-063); /deals/deal-stages redirects to deal settings. | 2026-10-06 → 2027-05-30 (+236d) | was named Pipeline Stages |
| PG-078 | Stage Detail | 2026-10-08 → 2027-06-13 (+248d) |  |
| PG-079 | Forecasts | 2026-10-10 → 2027-05-30 (+232d) |  |
| PG-080 | Activities | 2026-10-12 → 2027-05-30 (+230d) |  |
| PG-081 | Tasks | 2026-10-14 → 2027-06-13 (+242d) |  |
| PG-082 | Task Detail | 2026-10-18 → 2027-07-11 (+266d) |  |
| SALES-001 | Commercial Narrative + Pitch Deck Outline + One-Pager | 2025-12-28 → 2026-11-15 (+322d) |  |
| PG-083 | Calendar | 2026-10-20 → 2027-07-11 (+264d) |  |
| PG-084 | Emails Cross-entity scope: wire EmailCompose component (from PG-141) into Lead and Contact detail page Compose buttons. Pre-fill recipient with entity email. Replace activity-derived email list with real email integration data. Re-scoped 2026-10-21 (Category B; PG-207 owner ruling Q10): sending through the user's own Gmail/Outlook/SMTP mailbox is delivered by PG-207 (ADR-085 dispatchUserMail) so this task keeps the entity-page Compose wiring and the real email list. | 2026-10-22 → 2026-11-15 (+24d) |  |
| PG-085 | Email Templates (all auth/notification/in-app surfaces; findings: git issue #350 + debt EMAIL-BRAND-001/SEC-AUTH-NOTIF-001) | 2026-10-24 → 2027-07-25 (+274d) |  |
| PG-086 | SMS Templates | 2026-10-26 → 2027-08-08 (+286d) |  |
| PG-087 | Calls | 2026-10-28 → 2028-03-19 (+508d) |  |
| PG-088 | Notes | 2026-11-01 → 2027-08-22 (+294d) |  |
| PG-089 | Files Cross-entity scope: also wire file upload/download handlers on Lead detail (upload btn download btn) Contact detail (document section) and Deal detail (files section). Reuse upload/download infrastructure across all entity detail pages. | 2026-11-03 → 2028-04-02 (+516d) |  |
| PG-090 | File Detail | 2026-11-05 → 2028-04-02 (+514d) |  |
| PG-091 | Products | 2026-11-07 → 2027-08-22 (+288d) |  |
| PG-092 | Product Detail | 2026-11-09 → 2027-09-05 (+300d) |  |
| PG-093 | Price Books | 2026-11-10 → 2027-09-05 (+299d) |  |
| PG-094 | Price Book Detail | 2026-11-15 → 2027-09-19 (+308d) |  |
| PG-095 | Quotes | 2026-11-17 → 2027-10-03 (+320d) |  |
| PG-096 | New Quote | 2026-11-19 → 2027-10-17 (+332d) |  |
| PG-097 | Quote Detail | 2026-11-21 → 2027-10-17 (+330d) |  |
| PG-098 | Edit Quote | 2026-11-23 → 2027-10-31 (+342d) |  |
| PG-099 | Orders | 2026-11-24 → 2027-10-17 (+327d) |  |
| PG-100 | Order Detail | 2026-11-29 → 2027-10-31 (+336d) |  |
| PG-101 | Reports | 2026-11-30 → 2027-11-14 (+349d) |  |
| PG-102 | Custom Reports | 2026-12-02 → 2027-11-14 (+347d) |  |
| PG-103 | Report Schedules | 2026-12-06 → 2027-11-28 (+357d) |  |
| PG-105 | Profile Settings | 2026-12-10 → 2027-11-14 (+339d) |  |
| PG-106 | Account Settings | 2026-12-13 → 2027-12-12 (+364d) |  |
| PG-107 | Organization Settings | 2026-12-15 → 2027-12-12 (+362d) |  |

| ID | Task | Start | Other |
| --- | --- | --- | --- |
| PG-108 | Users | 2026-12-16 → 2027-12-12 (+361d) |  |
| PG-109 | Roles | 2026-12-18 → 2027-12-26 (+373d) |  |
| PG-110 | Permissions | 2026-12-20 → 2028-01-09 (+385d) |  |
| PG-111 | Teams | 2026-12-22 → 2027-12-26 (+369d) |  |
| PG-112 | Audit Log | 2026-12-27 → 2028-01-09 (+378d) |  |
| PG-113 | API Keys | 2026-12-29 → 2028-01-09 (+376d) |  |
| PG-114 | Webhooks | 2026-12-31 → 2028-01-23 (+388d) |  |
| PG-115 | Integrations | 2027-01-02 → 2028-01-23 (+386d) |  |
| PG-116 | Notifications | 2027-01-04 → 2028-01-23 (+384d) |  |
| PG-117 | Localization | 2027-01-06 → 2028-02-06 (+396d) |  |
| PG-118 | Data Retention | 2027-01-10 → 2028-02-06 (+392d) |  |
| PG-119 | Compliance | 2027-01-12 → 2028-02-06 (+390d) |  |
| PG-120 | Security | 2027-01-14 → 2028-02-20 (+402d) |  |
| PG-121 | Import/Export | 2027-01-16 → 2028-02-20 (+400d) |  |
| PG-122 | Privacy Export | 2027-01-17 → 2028-02-20 (+399d) |  |
| PG-123 | Privacy Delete | 2027-01-18 → 2028-03-05 (+412d) |  |
| IFC-112 | Implement blue/green deployment and rollback strategy REOPENED 16/11/2026 (self-claimed done, DoD partly met): DoD 'blue/green deployment pipeline configured': only vercel-rollback.yml and blue-green-metrics.csv; no blue/green pipeline. | 2026-02-24 → 2027-07-11 (+502d) | was named Implement blue/green deployment and rollback strategy |
| IFC-113 | Implement secrets management and encryption at rest and in transit REOPENED 16/11/2026 (self-claimed done, DoD partly met): vault-config.yaml describes a dev Vault server at a loopback address, so 'secrets stored in vault' is not shown for production. | 2026-05-03 → 2027-08-22 (+476d) | was named Implement secrets management and encryption at rest and in transit |
| IFC-114 | Implement API rate limiting and DDoS protection REOPENED 16/11/2026 (self-claimed done, DoD partly met): DoD 'WAF configured for DDoS': no WAF/DDoS configuration in infra/, .github/ or vercel.json. | 2026-03-22 → 2027-05-16 (+420d) | was named Implement API rate limiting and DDoS protection |
| IFC-115 | Setup backups and disaster recovery plan | 2026-11-29 → 2027-03-21 (+112d) |  |
| IFC-123 | Design caching strategy (Redis/CDN) and tune Prisma queries | 2026-10-04 → 2027-03-07 (+154d) |  |
| PG-127 | Partner Application Workflow - Dedicated partner application form with specialized fields, routing, and onboarding process | 2026-09-20 → 2027-02-07 (+140d) |  |
| IFC-138 | Integrate external calendar providers (Google/Microsoft) with bidirectional sync; webhook handling; idempotency; reconciliation REOPENED 16/11/2026 (self-claimed done, DoD partly met): DoD 'event sync both directions with idempotency': the Google/Microsoft calendar clients are exported but nothing under apps/ or packages/application instantiates them. | 2026-02-22 → 2027-01-10 (+322d) | was named Integrate external calendar providers (Google/Microsoft) with bidirectional sync; webhook handling; idempotency; reconciliation |
| IFC-143 | Perform threat modeling and abuse-case analysis for multi-tenancy and agent tool-calling; design mitigations; schedule penetration test; implement cookie consent mechanism REOPENED 16/11/2026 (self-claimed done, DoD partly met): DoD 'penetration test executed and findings triaged': only a summary document and a scope document. | 2026-05-17 → 2027-05-30 (+378d) | was named Perform threat modeling and abuse-case analysis for multi-tenancy and agent tool-calling; design mitigations; schedule penetration test; implement cookie consent mechanism |
| IFC-144 | Design and implement inbound/outbound email flows: SPF/DKIM/DMARC; inbound parsing; attachments; implement general webhook handling with idempotency and retries; publish public API specification (OpenAPI) with versioning; baseline inbound email feature delivered REOPENED 16/11/2026 (self-claimed done, DoD partly met): DoD 'Outbound emails signed with SPF/DKIM/DMARC': dkim-signer.ts is imported by nothing except its own test. | 2026-05-05 → 2027-02-07 (+278d) | was named Design and implement inbound/outbound email flows: SPF/DKIM/DMARC; inbound parsing; attachments; implement general webhook handling with idempotency and retries; publish public API specification (OpenAPI) with versioning; baseline inbound email feature delivered |
| EXC-SEC-001 | Implement Secrets Management (e.g., HashiCorp Vault) for API Keys (OpenAI, etc.). REOPENED 16/11/2026 (self-claimed done, DoD partly met): DoD 'all API keys stored in a vault': no evidence API keys are read from Vault. | 2025-12-14 → 2027-04-18 (+490d) | was named Implement Secrets Management (e.g., HashiCorp Vault) for API Keys (OpenAI, etc.). |
| IFC-157 | Notification service MVP: unified delivery (in-app + email) with preference model (backend), templates, and audit logging REOPENED 16/11/2026 (self-claimed done, DoD partly met): DoD says all four channels must be real: RealNotificationServiceAdapter returns 'SMS not configured' and 'Push not configured'. | 2026-05-19 → 2027-07-25 (+432d) | was named Notification service MVP: unified delivery (in-app + email) with preference model (backend), templates, and audit logging |
| IFC-164 | Ollama Local Development - Real Integration & Benchmarks | 2026-09-20 → 2026-12-13 (+84d) |  |
| IFC-165 | Performance Baseline - Real Benchmarks with Live Infrastructure | 2026-09-22 → 2027-02-21 (+152d) |  |
| IFC-166 | NBA Demo Video Recording | 2026-11-15 → 2027-05-16 (+182d) |  |
| IFC-175 | RAG Production Validation - Follow-up to IFC-039 | 2026-11-17 → 2027-05-16 (+180d) |  |
| IFC-169 | Require Supabase env vars - Follow-up to IFC-006 REOPENED 16/11/2026 (self-claimed done, DoD partly met): DoD 'remove mock key fallback': getDevelopmentSupabaseConfig still falls back to TEST_MOCK_KEY. | 2026-05-31 → 2027-06-13 (+378d) | was named Require Supabase env vars - Follow-up to IFC-006 |
| IFC-170 | Implement Twilio SMS channel - Follow-up to IFC-157 REOPENED 16/11/2026 (self-claimed done, DoD partly met): DoD 'real SMS delivery, status tracking, rate limiting': the Twilio client is imported by nothing outside the adapters package; SMS returns 'not configured'. | 2026-06-02 → 2027-08-22 (+446d) | was named Implement Twilio SMS channel - Follow-up to IFC-157 |
| IFC-171 | Implement webhook notification channel - Follow-up to IFC-157 REOPENED 16/11/2026 (self-claimed done, DoD partly met): DoD 'HTTP POST delivery, HMAC, backoff, DLQ': webhooks/outbound.ts is built but no app or application code uses it. | 2026-06-04 → 2027-08-22 (+444d) | was named Implement webhook notification channel - Follow-up to IFC-157 |
| IFC-172 | Complete Microsoft Calendar integration - Follow-up to IFC-138 REOPENED 16/11/2026 (self-claimed done, DoD partly met): MicrosoftCalendarAdapter is built and exported but nothing under apps/ instantiates it; not wired to a runtime path. | 2026-06-14 → 2027-02-21 (+252d) | was named Complete Microsoft Calendar integration - Follow-up to IFC-138 |
| IFC-182 | Home Page tRPC Router - Welcome summary activity feed AI insights pinned items daily goals REOPENED 16/11/2026 (self-claimed done, DoD partly met): home.router.ts has 7 of the 8 listed procedures; getActivityFeed is absent. | 2026-06-14 → 2027-07-25 (+406d) | was named Home Page tRPC Router - Welcome summary activity feed AI insights pinned items daily goals |
| PG-136 | Task Management Page - List calendar view assignments reminders entity linking REOPENED 16/11/2026 (self-claimed done, DoD partly met): DoD 'TaskCard ... TaskCalendar ... calendar and list views': TaskCard has no importer and TaskCalendar is not rendered, so /tasks has no calendar view. | 2026-02-09 → 2027-02-07 (+363d) | was named Task Management Page - List calendar view assignments reminders entity linking |
| PG-145 | Next Best Action Dashboard - NBA recommendations deal insights action cards success metrics Cross-entity scope: refine NextBestAction impact scoring from coarse 3-tier (HIGH/MEDIUM/LOW) to multi-factor model incorporating engagement score sentiment trend and activity recency. Apply refined scoring to NextBestActionCard on Lead and Contact detail pages. | 2026-12-15 → 2027-12-26 (+376d) |  |
| PG-147 | Workflow List & Status UI - Active workflows execution status step visualization logs | 2027-01-15 → 2028-03-05 (+415d) |  |
| IFC-193 | Activity Feed Type Registry - Enum-based mapping from AuditLogEntry.eventType to ActivityFeedType with metadata REOPENED 16/11/2026 (self-claimed done, DoD partly met): DoD 'enum-based mapping from AuditLogEntry.eventType to ActivityFeedType': ActivityTypeRegistry is used nowhere outside its test. | 2026-03-08 → 2027-08-08 (+518d) | was named Activity Feed Type Registry - Enum-based mapping from AuditLogEntry.eventType to ActivityFeedType with metadata |
| IFC-199 | Document Domain Core - lifecycle, signature state machine, ACL and retention invariants | 2026-02-16 → 2027-06-27 (+496d) |  |
| IFC-201 | Settings Control Plane Foundations - domain models, adapters, and router for users/teams/roles/permissions/audit/integrations/webhooks/security | 2026-02-17 → 2027-09-19 (+579d) |  |
| IFC-204 | Activity Feed Performance Observability - queryDurationMs tracking structured logging and latency alerting | none → 2026-12-13 |  |
| PG-168 | Monitoring and Sentry error tracking for home route - error boundaries breadcrumbs performance spans | none → 2027-02-21 |  |
| IFC-208 | Lighthouse SEO CI enforcement and og:image - change lighthouserc.js SEO assertion from warn to error and add og:image meta tag to root layout (content audit findings F-005 F-006) | none → 2027-06-13 |  |
| A11Y-REVIEW-001 | Execute first quarterly accessibility documentation review using template | none → 2027-02-21 |  |
| IFC-216 | Entity Detail File Upload/Download Wiring - Wire file upload and download handlers on entity detail pages (Lead Contact Deal). Upload: file picker to upload mutation to Supabase Storage. Download: presigned URL to browser download. Follows IFC-094 (Pattern 1 - infra-only). Resolves WIRE-IFC-094-001. | none → 2027-10-03 |  |
| IFC-217 | Entity Detail Email Compose Wiring - Wire existing EmailCompose component into Compose buttons on Lead and Contact detail pages. Pre-fill recipient. Open as Sheet overlay. Connect to email send API via EmailServiceAdapter. Follows IFC-144 and PG-141 (Pattern 1 + Pattern 2). Resolves WIRE-IFC-144-001 and WIRE-PG-141-001. | none → 2027-07-25 |  |
| IFC-218 | Similar Entity API (pgvector) - Build lead.getSimilar and contact.getSimilar tRPC queries using pgvector embedding similarity. Top 5 matches exclude self tenant-isolated. Wire to Lead detail sidebar (replace empty state) and Contact detail sidebar. Follows IFC-039 (Pattern 1 - infra-only). Resolves WIRE-IFC-039-001. | none → 2026-12-27 |  |
| IFC-219 | Activity Feed Interactions (Reactions + Comments) - Add ActivityReaction and ActivityComment models to Prisma schema. tRPC mutations: addReaction removeReaction addComment. Wire into Lead and Contact detail activity action buttons. Remove hardcoded [] arrays. Follows IFC-069 (Pattern 2 - scope oversight). Resolves WIRE-IFC-069-001. | none → 2026-12-27 |  |
| IFC-221 | Email Open Tracking Integration - Real email open/click tracking. Backend: tracking pixel endpoint recording opens; click-through URL wrapper; EmailTracking model. Frontend: replace activity-derived open rate with real data on Lead and Contact detail. Inject pixel + wrap links on outbound send. Follows IFC-144 and IFC-099 (Pattern 1 - infra-only). Resolves WIRE-IFC-099-001. Broadened 2026-10-21 (PG-207): the pixel and link wrapping apply to mail sent through every user mailbox kind (SMTP/Gmail/Microsoft via dispatchUserMail; ADR-085) and honour the PG-207 Email Settings trackOpens/trackClicks toggles (category 2 until this ships). | none → 2027-08-08 |  |
| IFC-222 | Implement real Twilio SMS SDK calls (Resolves R-006) REOPENED 16/11/2026 (self-claimed done, DoD partly met): DoD 'real Twilio SDK calls replace mock logic': the notification path does not call the Twilio client (SMS returns 'not configured'). | 2026-03-06 → 2027-09-05 (+548d) | was named Implement real Twilio SMS SDK calls (Resolves R-006) |
| IFC-224 | Implement Calendar Webhook Ingestion Routes (Resolves R-008) REOPENED 16/11/2026 (self-claimed done, DoD partly met): DoD 'webhook endpoints receive external calendar events': CalendarWebhookService runs in stub mode; no calendar sync service behind it. | 2026-03-07 → 2027-01-24 (+323d) | was named Implement Calendar Webhook Ingestion Routes (Resolves R-008) |
| IFC-228 | Lead Owner Reassignment UI - Owner card on Lead detail (lines 1468-1487) is read-only. Add reassignment capability for MANAGER/ADMIN roles: user picker dropdown, reassign mutation via lead.update, audit trail entry. Apply RBAC check to show/hide reassign button. Extend to Contact and Account detail pages. | none → 2027-03-07 |  |
| IFC-229 | Lead Detail Map View - Current map section (lines 1453-1465) is a gradient placeholder with non-functional 'View Map' button. Options: (A) Integrate Mapbox/Leaflet with geocoded address, (B) Link to Google Maps in new tab, (C) Remove placeholder entirely if map not in MVP scope. Needs product decision. | none → 2027-03-07 |  |
| IFC-231 | Lead List Saved Views and Filter Persistence - Sidebar view params (?view=my, ?view=starred, ?segment=hot) are completely ignored by LeadsPageClient (no useSearchParams call). Fix: (1) Wire URL params to filter state, (2) Add saved views CRUD (name, filters, columns, sort), (3) Column visibility picker UI exposing DataTable VisibilityState, (4) Persist filter/sort/view selection in localStorage or user preferences. | none → 2027-08-08 |  |
| IFC-233 | Wire Unused Backend tRPC Endpoints - ~20 built but unused tRPC procedures. Lead: convertToDeal, getHotLeads, getReadyForQualification, bulkScore. Contact: getByEmail, linkToAccount, unlinkFromAccount, search, linkToLead, unlinkFromLead, getTimeline, logActivity. Opportunity: create, getById, getHistory, getProducts, getPipeline, stats. Account: create, update. Task: stats, assign, reschedule. Wire each to appropriate frontend UI or remove if not needed. | none → 2026-11-15 |  |
| IFC-234 | Settings Pages Wiring - 4 settings pages with hardcoded data and inert buttons. Team: hardcoded 4-person array, inert Invite/Remove/Role buttons. Integrations: hardcoded provider list, inert Connect/Disconnect buttons. Notifications: hardcoded const, no useState, no onClick on toggles. Account: profile name/email has no save mutation, 3 security buttons (Change Password, Enable 2FA, Download Data) have no onClick. Wire all to real tRPC mutations and queries. | 2026-06-29 → 2026-12-27 (+181d) |  |
| IFC-235 | Lead Detail AI Chat Panel - Add AI chat panel to Lead detail page for entity-scoped conversations. Backend: conversation.router.ts is fully built with 13 endpoints but NOT registered in router.ts - register it. Frontend: build LeadChatPanel component using conversation API with contextType=LEAD, contextId=leadId. Similar to dashboard TeamChatWidget but with real API calls (TeamChatWidget is decorative with hardcoded messages). ConversationRecord/MessageRecord Prisma models exist. | none → 2027-02-21 |  |
| IFC-241 | Lead Router Dead Code & Missing Events Cleanup. Fix 4 MEDIUM/LOW issues: (1) scoreWithAI notification variables at lines 517-527 set but never referenced - dead code [S10]. (2) LeadRoutedEvent defined in domain but never published by any procedure or service [S11]. (3) Only 3 of ~10 lead event types trigger notifications [W10]. (4) Lead notifications processed synchronously, not queued via BullMQ [W11]. Fix: Remove dead notification code, publish LeadRoutedEvent from routing logic, add notification handlers for remaining event types, enqueue via BullMQ. | none → 2027-01-10 |  |
| IFC-243 | Lead Frontend Consistency - StatusBadge, Toast, window.prompt. Fix 3 MEDIUM issues: (1) window.prompt() used for note input at line 1951 - blocks UI, no multi-line, poor UX [F5]. Replace with Dialog/Sheet component. (2) Two different StatusBadge implementations - inline LeadStatusBadge vs shared component with different color schemes [F6]. Consolidate to shared component. (3) Two Toast patterns - sonner toast.success() vs shadcn useToast() used inconsistently across lead pages [F7]. Standardize to one pattern. | none → 2027-03-21 |  |
| IFC-244 | Dashboard Widget Real Data - ActiveLeads, TotalLeads, Analytics. Fix 3 HIGH/MEDIUM issues: (1) ActiveLeadsWidget fully hardcoded with static '1,240' and 'vs 1,100 last month' [F2]. (2) TotalLeadsWidget shows hardcoded '+12%' trend [W6]. (3) Analytics page for leads uses sample data arrays, no API queries [W7]. Fix: Wire ActiveLeadsWidget to lead.stats API, compute real trend from monthly comparison, wire Analytics page to real lead data endpoints. | none → 2027-03-21 |  |
| IFC-245 | Lead Activity Timeline Unification. Fix HIGH issue: logActivity creates LeadActivity records but these are NOT fed into the unified TimelineEvent system (IFC-069). Lead activities exist in a parallel silo [W1]. Also fix: No email-to-lead association - inbound emails not linked to leads by sender address [W2]. Fix: Create TimelineEvent adapter for LeadActivity, add email-to-lead matching in inbound parser, ensure lead detail 'All Sources' toggle shows unified data. | none → 2027-01-10 |  |
| IFC-246 | Domain Model Lead 360 Alignment. Fix 4 HIGH issues: (1) Lead.toJSON() omits aiInsight, activities, notes, files, tasks relations - domain events carry incomplete snapshots [D1]. (2) qualify() only allows from NEW/CONTACTED but UI doesn't reflect this constraint [D2]. (3) LeadScoringChain throws unhandled error for unknown AI_PROVIDER [D3]. (4) AI scoring prompt only receives basic lead data, ignores activity count, engagement history, note count [D4]. Fix: Extend toJSON, expose allowed transitions, add provider fallback, enrich scoring prompt. | none → 2027-01-24 |  |
| IFC-249 | Lead Edit Page Tests + E2E. Fix remaining test gaps: (1) Edit page onSuccess/onError callbacks untested, as any cast hides type errors [T9]. (2) No E2E tests for complete lead CRUD flow (create -> view -> edit -> delete) [T6]. Write: (1) Edit page component tests with mutation mocking. (2) Playwright E2E test for full lead lifecycle. E2E should cover: create lead with required fields, view on detail page, edit fields, archive/delete. | none → 2026-10-05 |  |
| IFC-250 | Lead Event Pipeline - Persistent Outbox + Webhooks. Fix HIGH/LOW issues: (1) InMemoryEventBus loses all events on server restart - no persistent outbox pattern [W3]. (2) No webhook handlers for lead events - external systems cannot subscribe [W9]. Fix: Implement transactional outbox pattern for lead domain events (LeadCreatedEvent, LeadQualifiedEvent, etc.). Add webhook dispatch for lead events. Ensure event ordering and at-least-once delivery. | none → 2027-03-07 |  |
| IFC-251 | Lead CSV Import/Export. Add bulk import and export for leads [W8]. Import: CSV upload with validation, duplicate detection, field mapping UI, error report. Export: CSV and JSON formats, filtered export (current view), all-fields export. Common CRM feature needed for data migration and reporting. Also cleanup: Prisma schema backslash comments to standard // format [S12]. | none → 2027-10-03 |  |
| IFC-258 | Contact Frontend Consistency — Avatars, Owner Title, Confidence. (1) Default avatars are Unsplash stranger photos — replace with initials-based generated avatar (F-09). (2) Owner title hardcoded 'Account Executive' — map from owner.role like lead detail (F-16). (3) Confidence hardcoded 0.85 for churnRisk and nextBestAction — use API data (F-17). (4) quietPeriodAlert always null (F-22). (5) ContactForm duplicated between create and edit (F-24). Audit: docs/audit/contact-detail-wiring-audit.md §16. | none → 2027-03-21 |  |
| IFC-259 | Contact Dead UI Fields & Unused Components. (1) location/timezone always empty (F-10). (2) isOnline/isVIP always false — dead badges (F-11). (3) tags always empty array (F-12). (4) ContactDetail.tsx component unused by page — 597 lines with tests but never imported (F-14). (5) ContactCard.tsx unused by list page (F-28). (6) emailsOpened always 0 (F-20). Decision needed: wire to real data, show placeholder states, or remove dead UI. Audit: docs/audit/contact-detail-wiring-audit.md §16. | none → 2027-04-04 |  |
| IFC-260 | Contact Domain Model Fixes. (1) reconstitute() silently substitutes unknown@unknown.com for invalid emails — should Result.fail or throw (D-01). (2) mergeContacts no cross-tenant check — linkToLead correctly checks but merge doesn't (D-02). (3) No ContactDeletedEvent — deleteContact publishes no events, audit handler has mapping but event never emitted (D-04). (4) No ContactEmailChangedEvent — old email not captured in generic ContactUpdatedEvent (D-05). (5) Tags update always emits event without deep equality check (D-07). Audit: docs/audit/contact-detail-wiring-audit.md §18. | none → 2027-01-24 |  |

| ID | Task | Start | Finish | Other |
| --- | --- | --- | --- | --- |
| IFC-261 | Contact Event Pipeline — Worker Handlers + Event Types. (1) Zero contact event handlers in events worker (W-02). (2) Only 2/8 contact event types in DOMAIN_EVENT_TYPES — missing deleted, account_associated, account_disassociated, converted_from_lead, linked_to_lead, interacted (W-04). (3) No webhook routing for contact events (W-05). (4) No notifications for contact events (W-11). Cross-ref: W-01 (InMemoryEventBus) shared with IFC-250. Audit: docs/audit/contact-detail-wiring-audit.md §17. | none → 2027-03-07 |  |  |
| IFC-262 | Contact Merge & Duplicate Detection Wiring. (1) mergeContacts deletes secondary without re-parenting all child records — orphaned opportunities/tasks (W-03). (2) findPotentialDuplicates exists in service but no tRPC procedure exposes it (W-09). (3) mergeContacts exists but no router procedure wraps it (W-10). (4) mergeContacts no cross-tenant check between primary and secondary (W-12). (5) associateWithAccount inside mergeContacts causes double-save and potential double event emission (W-13). Audit: docs/audit/contact-detail-wiring-audit.md §17. | none → 2027-03-21 |  |  |
| IFC-263 | Contact Email & AI Integration. (1) No email-to-contact matching — inbound emails not linked to contacts by sender address (W-06). (2) No automated AI insight triggering — contact create/update doesn't trigger scoring like lead does (W-07). (3) No contact routing rules — leads have routing but contacts don't (W-14). Audit: docs/audit/contact-detail-wiring-audit.md §17. | none → 2027-03-21 |  |  |
| IFC-264 | Contact Bulk Import & Service Layer Fixes. (1) No CSV upload or bulk create for contacts (W-08). (2) listContacts service returns empty array as default when no ownerId/accountId — latent bug for future callers (W-15). (3) getContactStatistics returns empty for undefined ownerId (W-16). Audit: docs/audit/contact-detail-wiring-audit.md §17. | none → 2027-05-30 |  |  |
| IFC-272 | Account Event Pipeline — Worker Handlers + Event Types. (1) Zero account event handlers in events worker (W-01). (2) Zero account event types in DOMAIN_EVENT_TYPES map (W-02). (3) Audit handler has 3 account event mappings (Created/Updated/Deleted) but events never reach it because worker has no handlers and dispatcher has no types (W-03). Add event handlers for AccountCreated, AccountUpdated, AccountDeleted (requires IFC-271), AccountRevenueUpdated, AccountHierarchyUpdated, AccountIndustryCategorized to events worker. Register all types in DOMAIN_EVENT_TYPES. Cross-ref: W-01/W-02 pattern shared with Contact (IFC-261). Audit: docs/audit/account-detail-wiring-audit.md section 14. | none → 2027-04-04 |  |  |
| IFC-274 | Account Activity Timeline — Replace Stub Data. AccountService.getAccountActivity() (lines 748-785) returns synthetic/stub activities with hardcoded descriptions and broken cursor pagination — not real Activity model records (F-13). Replace with real activity feed from ActivityFeed component or Activity model queries. Should use same pattern as Lead/Contact activity tabs. Audit: docs/audit/account-detail-wiring-audit.md section 6. | none → 2027-02-07 |  |  |
| IFC-275 | Account Create & Edit Forms. (1) No account create form page — router has create procedure but no frontend consumer (F-16). Create page at accounts/(list)/new/page.tsx with form for all account fields. (2) No account edit form — Edit button navigates but lands on 404 (F-17). Create edit form page or inline edit mode using router update procedure. Both forms should validate with accountSchema. Audit: docs/audit/account-detail-wiring-audit.md section 10. | none → 2027-04-04 |  |  |
| IFC-276 | Account Contract Test + Test Gaps. (1) Accounts is the ONLY entity without a contract test file (T-01). (2) No-op buttons untested — 6 CRITICAL no-op buttons have no click behavior tests (T-02). (3) Tenant isolation untested in router tests (T-03). (4) No E2E Playwright tests for account CRUD flow (T-04). (5) Owner display untested — tests don't verify owner name/title rendering (T-05). Audit: docs/audit/account-detail-wiring-audit.md section 19. | none → 2027-04-04 |  |  |
| IFC-277 | Account Service Dead Code & Minor Fixes. (1) calculateAccountHealth() unreachable from router — decide: wire (D-02). (2) getAccountWithContext() unreachable from router — decide: wire (D-03). (3) Revenue NaN risk — Number(revenue) on non-numeric string renders '$NaNM' (F-14). (4) Health bar arbitrary scale — no documented max value (F-15). (5) Contact firstName[0] undefined risk in AccountContactsList (F-18). (6) findAncestors N+1 query pattern (B-14). (7) Merge/Archive toast stubs referencing IFC-044 (F-03/F-04). Audit: docs/audit/account-detail-wiring-audit.md sections 9, 13, 16-17. | none → 2027-05-30 |  |  |
| IFC-283 | Deal Event Pipeline — Worker Handlers. (1) Only opportunity.won has a handler in events worker; opportunity.created, opportunity.stage_changed, and opportunity.lost are defined in DOMAIN_EVENT_TYPES but have NO registered handlers (W-01). (2) No OpportunityDescriptionUpdatedEvent defined — description changes emit no event (W-02). Add handlers for the 3 missing event types. Add OpportunityDescriptionUpdatedEvent to domain. Cross-ref: same pattern as Account (IFC-272) and Contact (IFC-261). Audit: docs/audit/deal-detail-wiring-audit.md section 7. | none → 2027-04-04 |  |  |
| IFC-284 | Deal Forecast Algorithm Fixes. (1) buildWinRateTrend hardcodes months ['May','Jun','Jul','Aug','Sep','Oct'] regardless of current date — semantically incorrect data (B-06, forecast-algorithm.ts:283). Fix to derive from actual 6-month window. (2) DEFAULT_STAGE_PROBABILITIES diverge: validators has NEEDS_ANALYSIS=30/PROPOSAL=70 while domain/service/router/forecast-algorithm uses 40/60 (B-08). Unify to single source of truth. (3) buildMonthlyRevenue uses locale-dependent toLocaleString for month names — breaks on non-en-US servers (B-15, forecast-algorithm.ts:269). (4) Forecast trend values hardcoded as 12 and 5 in forecast page (F-16, deals/forecast/page.tsx:709-710). Compute from API data. Audit: docs/audit/deal-detail-wiring-audit.md sections 4, 6. | none → 2027-02-07 |  |  |
| IFC-285 | Deal Service Dead Code & Minor Fixes. (1) 11 dead service methods unreachable from router: listOpportunities, advanceStage, updateValue, updateProbability, updateExpectedCloseDate, reopenOpportunity, getPipelineForecast, getOpportunitiesClosingSoon, getHighValueOpportunities, getOpportunitiesByAccount, getOpportunitiesByContact, getWinRateStatistics (B-13). Decide: wire to router or remove. (2) toMoney/toPercentage silent zero fallback on DB corruption (B-14). (3) TOCTOU in stage transitions — no optimistic locking (B-16). (4) Event publish failure swallowed with console.error only (B-17). (5) DealQuickView is a 49-line stub not used anywhere (F-13). (6) RecommendedActions.onActionClick not wired at forecast page level (F-18). (7) Sidebar deals config settingsHref points to /settings/deals instead of /settings/pipeline (W-03). Audit: docs/audit/deal-detail-wiring-audit.md sections 6-7. | none → 2027-06-13 |  |  |
| IFC-286 | Deal Detail Page Tests + E2E. (1) Deal detail page (792 lines) has ZERO test coverage (T-01). (2) No E2E Playwright tests for /deals, /deals/[id], or /deals/forecast — only pipeline-settings has E2E (T-02). (3) No cross-tenant access attempt test in router tests (T-03). (4) Contract test missing NEEDS_ANALYSIS stage in test data (T-04). Depends on IFC-278 (real data) and IFC-280 (wired buttons). Audit: docs/audit/deal-detail-wiring-audit.md section 10. | none → 2027-04-18 |  |  |
| IFC-288 | Analytics Dashboard Endpoint Wiring. Wire 9 dead analytics router endpoints: exportConversionFunnel, exportMetrics, exportReport, getConversionFunnel, getLeadMetrics, getOverview, getSalesMetrics, getTimeSeriesData, leadStats. Backend built (ANALYTICS-001), zero web callers. Decision: wire to analytics dashboard UI (IFC-037) with charts/export buttons. Audit: artifacts/reports/dead-endpoints-audit.csv rows 20-28. | none → 2027-06-27 |  |  |
| IFC-289 | Agent/Conversation Router Frontend Wiring. 17 dead endpoints (13 conversation.* + 4 agent.*) with zero frontend callers. Frontend uses autoResponse/aiReview/aiMonitoring routers that query the same DB tables directly bypassing the canonical conversation router. Fix: wire all endpoints to proper frontend consumers — chat panel, agent-approvals, AI Search, admin dashboard — and refactor aiMonitoring to delegate to conversation router instead of duplicating DB queries. Audit: artifacts/reports/dead-endpoints-audit.csv rows 4-18. | none → 2027-08-08 |  |  |
| IFC-290 | Integrations Dashboard Endpoint Wiring. Wire 5 dead integrations router endpoints: getAllConnectorsHealth, getConnectorHealth, getConnectorsByType, getDashboardConfig, triggerSync. Backend built (IFC-003), zero web callers. Decision: build integrations settings page to consume these. Audit: artifacts/reports/dead-endpoints-audit.csv rows 61-65. | none → 2027-09-19 |  |  |
| IFC-291 | Feedback Submission UI Wiring. Wire 5 dead feedback router endpoints: checkRetraining, exportTrainingData, getForLead, submitCorrection, submitSimple. Backend built (IFC-068), zero web callers. Decision: add feedback UI to AI review workflow. Audit: artifacts/reports/dead-endpoints-audit.csv rows 55-60. | none → 2027-09-19 |  |  |
| IFC-292 | Legal Document Management UI Wiring. Wire 6 dead legal router endpoints: appointments.findNextSlot, documents.grantAccess, documents.placeLegalHold, documents.releaseLegalHold, documents.revokeAccess, documents.submitForReview. Backend built (IFC-137, IFC-140, IFC-152), zero web callers. Decision: build legal management UIs to consume these. Audit: artifacts/reports/dead-endpoints-audit.csv rows 78-83. | none → 2027-10-03 |  |  |
| IFC-293 | Security Admin + Notifications Settings Wiring. Wire 6 dead endpoints: security.audit.getByResource, security.audit.getMyActivity, security.audit.getSecurityEvents, notifications.batchAction, notifications.getPreferences, notifications.updatePreferences. Backend built (IFC-098, IFC-072, IFC-046, IFC-157), zero web callers. Decision: build admin security page + notification settings page (PG-116). Audit: artifacts/reports/dead-endpoints-audit.csv rows 93-95, 101-103. | none → 2027-10-31 |  |  |
| IFC-294 | Experiment + Intelligence + AI Monitoring Wiring. Wire 7 dead endpoints: experiment.assignVariant, experiment.recordConversion, experiment.recordScore, intelligence.getInsightsSummary, intelligence.triggerPrediction, intelligence.updateContactInsights, ai-monitoring.getHallucinationReport. Backend built (IFC-025, IFC-095, IFC-117), zero web callers. Decision: wire to experiment dashboard (IFC-181) and AI monitoring page. Audit: artifacts/reports/dead-endpoints-audit.csv rows 19, 52-54, 66-69. | none → 2027-11-28 |  |  |
| IFC-295 | Billing/Auth/Subscription/Admin Miscellaneous Wiring. Wire 8 dead endpoints: billing.ensureCustomer, billing.getUsageMetrics, billing.updateBillingInformation, auth.getSessions, subscription.getPlans, subscription.toggleModule, autoresponse.submitForApproval, admin.queues.getByName. Backend built across IFC-006/IFC-014/IFC-028/IFC-099, zero web callers. admin.queues.getByName is completely phantom (no tests, no matrix entry) � needs queue inspector or admin tools UI. Audit: artifacts/reports/dead-endpoints-audit.csv rows 2, 29, 33-37, 104-105. | none → 2027-11-28 |  |  |
| IFC-304 | Article Analytics Dashboard | none → 2026-12-13 |  |  |
| IFC-305 | Componentize CRM entity detail pages (Leads, Contacts) — extract shared SOLID-compliant components from 5284 lines of duplicated god-files; wire bypassed shared components (EntityHeader, SearchFilterBar, ActivityFeed); create cross-entity reusable components (EntityProfileCard, ActivityFilterBar, AiInsightMetricsGrid, ai-insight-transforms utility, EntityErrorState, EntityDetailSkeleton, ConfirmationDialog); reduce page files from 2691/2593 to ~200 lines each | none → 2027-04-18 |  |  |
| PG-194 | Governance Compliance Dashboard — register and wire existing /governance/compliance page; replace 5 hardcoded ComplianceCard scores (ISO 27001 92%, ISO 42001 45%, ISO 14001 78%, GDPR 98%, ADR 60%) with real compliance API data; remove hardcoded overall score 74.6 and '16 Total' action items; remove ISO 14001 card (irrelevant to SaaS); connect ComplianceTimeline and RiskHeatMap to live API endpoints; ensure ComplianceDetailPanel drilldown shows real control data; tests >=90% | none → 2027-04-18 |  |  |
| IFC-307 | Contact Enrichment Pipeline — Automated background job that periodically enriches contact/lead data from external providers (Clearbit, Apollo). Includes: BullMQ queue intelliflow-contact-enrichment, enrichment adapter with rate limiting, on-create trigger in contact.router.ts, periodic cron sweep for stale profiles (>30 days), cost tracking via CostTracker, field updates (company, title, social profiles, industry) | none → 2027-04-18 |  |  |
| IFC-308 | Scheduled Report Generation — BullMQ cron job that generates daily/weekly analytics snapshots and emails summary reports to team leads. Includes: report template system (pipeline summary, lead conversion, revenue trends, SLA compliance), PDF/HTML report rendering, email delivery via notifications worker, configurable schedule per tenant, report archive storage | none → 2027-06-13 |  |  |
| PG-206 | Module Settings - Storage Policies (/documents/(list)/storage-policies) | none → 2026-12-27 |  |  |
| PG-209 | Module Settings - Task Types (/tasks/(list)/task-types) | none → 2026-12-27 |  |  |
| PG-210 | IFC-311 reassign UI wiring follow-up (contacts + accounts) — wire the four new tRPC procedures shipped by IFC-311 (api.contact.reassign, api.contact.bulkReassign, api.account.reassign, api.account.bulkReassign) into real UI so the notifyOnOwnerChange Cat-1 toggle is reachable for end users on both entities. Source: IFC-311 post-completion code review Finding 1 — all four procedures are dead-on-arrival at runtime (zero direct UI callers). The account SINGLE-reassign path is transitively reachable via AccountDetail.tsx:152 → api.account.assignOwner (refactored in IFC-311 to delegate to performAccountReassign, so the notification fires), but api.account.bulkReassign is fully orphaned and the account detail page still calls the legacy name. Scope: (a) contacts-list bulk-actions bar exposes a Reassign action that calls contact.bulkReassign; (b) contact detail page actions expose a Reassign option that calls contact.reassign; (c) accounts-list bulk-actions bar exposes a Reassign action that calls account.bulkReassign (brand-new UI surface — no legacy shim covers this); (d) migrate AccountDetail.tsx:152 from api.account.assignOwner.useMutation to api.account.reassign.useMutation so the canonical IFC-311 name is the production caller (assignOwner stays as a deprecated legacy alias); (e) one integration test per entity that exercises the toggle flipping the notification path end-to-end. Backend API surface is already shipped by IFC-311 — this task is UI + wiring + one cosmetic endpoint migration only. | none → 2027-05-02 |  |  |
| IFC-313 | Real inbox integration - contact.draftReply real-thread resolver. IFC-312 audit fix F5 follow-up: the draftReply procedure currently requires the client to supply a full emailThread array (server returns PRECONDITION_FAILED otherwise). IFC-313 replaces this with a server-side resolver that takes input.emailThreadId and fetches the actual ContactEmailThread history (pending real inbox ingestion infra - to be scoped separately). Keep the client-supplied emailThread path as a fallback for power users / integrations. | none → 2027-02-21 |  |  |
| ENG-OPS-002.R04 | Remediation R04 [Critical/DDD-001][REVIEW]: Lead->Deal conversion transaction atomicity (unit-of-work across 4 aggregates) — HELD for design review | 2026-07-22 → 2026-11-29 (+130d) |  |  |
| ENG-OPS-002.R05 | Remediation R05 [Critical/HEX-001][REVIEW]: wire ticket port into composition root or delete orphan port — HELD for design decision | 2026-07-22 → 2026-12-13 (+144d) |  |  |
| ENG-OPS-002.R06 | Remediation R06 [Critical/HEX-005][REVIEW]: appointments router use-case migration (~28 direct prisma sites) — HELD, 20+ file refactor | 2026-07-22 → 2026-12-27 (+158d) |  |  |
| ENG-OPS-002.R07 | Remediation R07 [Critical/QUAL-015][REVIEW]: consolidate diverging prompt-sanitizer into one canonical module — HELD, security design decision | 2026-07-22 → 2027-01-10 (+172d) |  |  |
| ENG-OPS-002.R08 | Remediation R08 [High/HEX-002+003]: ticket hexagonal extraction (TicketService/TicketRoutingService -> use cases behind port) | 2026-07-22 → 2027-01-24 (+186d) |  |  |
| ENG-OPS-002.R09 | Remediation R09 [High/HEX-004]: LeadRoutingService depends on LeadRepositoryPort instead of raw PrismaClient | 2026-07-22 → 2027-02-07 (+200d) |  |  |
| ENG-OPS-002.R11 | Remediation R11 [High/DDD-002]: persist domain events (outbox) inside the same transaction as aggregate state (ADR-011 zero-lost-events) | 2026-07-22 → 2027-02-21 (+214d) |  |  |
| ENG-OPS-002.R12 | Remediation R12 [High/DDD-003+004]: TenantId value object + move lead auto-qualify policy into the Lead aggregate | 2026-07-22 → 2027-03-07 (+228d) |  |  |
| ENG-OPS-002.R14 | Remediation R14 [High/PERF-003]: enable pg_trgm + GIN trigram indexes for free-text search (kill ILIKE seq-scans) | 2026-07-22 → 2027-03-21 (+242d) |  |  |
| ENG-OPS-002.R15 | Remediation R15 [High/GOV-A-003]: triage 175/447 schema-validation failures (regenerate vs fix) and wire validate:schemas into pre-ship | 2026-07-22 → 2027-04-04 (+256d) |  |  |
| ENG-OPS-002.R17 | Remediation R17 [High/QUAL-013]: decide ERP/SAP connector — complete SAPAdapter to un-skip 19 tests OR formally mark deferred in sprint plan | 2026-07-22 → 2027-05-16 (+298d) |  |  |
| ENG-OPS-002.R18 | Remediation R18 [Medium batch]: triage the 39 Medium findings (ddd/hexagonal/security/perf/quality/stale) into focused Sprint-19 follow-ups | 2026-07-22 → 2027-04-18 (+270d) |  |  |
| PG-211 | Public booking: booker self-service cancel/reschedule. A signed, single-purpose, expiring link in the PG-203 booking confirmation email lets the booker cancel or move a /book/<handle>/<slug> appointment without contacting the firm. The move goes through the same per-tenant booking advisory lock, availability re-check, notice/horizon and daily cap as publicBooking.book (ADR-083); tokens are stored only as HMACs and travel in the URL fragment (PG-203 DSAR pattern); the host is notified. Origin: PG-203 follow-up (spec Risks; PRD addendum). | none → 2027-05-02 |  |  |
| PG-212 | Event types: per-type minimum notice and booking horizon. Replace the fixed BOOKING_MIN_NOTICE_MINUTES (60) and BOOKING_HORIZON_DAYS (60) constants (packages/domain/src/legal/appointments/event-types.ts) with per-event-type fields on event_types (Class A migration, named CHECKs, defaults 60 min / 60 days), editable in the /calendar/event-types dialog and honoured by listOpenSlots and the public booking re-check. Origin: PG-203 follow-up (PRD addendum). | none → 2027-05-02 |  |  |
| PG-213 | Retention: purge public-booking PII after a firm-set period. Under the PG-206 retention policies, appointments.bookerName/bookerEmail/bookingAnswers/bookingConsentAt/bookingConsentVersion are cleared for public bookings older than a firm-configured retention period (the booking_attempts 48 h prune from PG-203 stays); the run is replica-safe and audit-logged with counts only. Origin: PG-203 follow-up (spec AC-022; PRD addendum). | none → 2027-05-16 |  |  |
| IFC-316 | Automate erasure of communications left on the PG-203 erasure checklist | none → 2026-11-15 |  |  |
| IFC-317 | Add a CSV DSAR export and Art 20(2) direct transfer to another controller | none → 2026-11-29 |  |  |
| IFC-318 | Notify recipients of rectification, erasure or restriction (Art 19) | none → 2026-11-29 |  |  |
| IFC-319 | Migrate tracing to OpenTelemetry JS SDK 3.x (sdk-node 0.300 with the 3.x trace packages) | none → 2027-02-07 |  |  |
| MVP-001 | Email works end to end: the owner connects his Gmail, Microsoft or Zoho mailbox in Email Settings, then sends, receives and sees threads in Aurora; replies stay in his own inbox; on the free plan. Email Settings stops firing errors. |  |  | was named Email works end to end: the owner connects his Gmail or Microsoft mailbox in Email Settings, then sends, receives and sees threads in Aurora; replies stay in his own inbox; on the free plan. Email Settings stops firing errors. |
| MVP-003 | Lead to deal: the owner qualifies a lead and converts it to a deal from the lead page, then moves the deal through the pipeline stages; amounts show in pounds everywhere; an old pipeline link no longer hangs. |  | IFC-062,IFC-233 → IFC-062 |  |
| MVP-004 | Live updates work: the live-update connection opens on every page, so new mail, notifications and changes appear without a reload, and the dashboard says "Live" only when it is. | none → 2026-11-15 |  |  |
| MVP-005 | Find his own work: his own calls, notes and emails are easy to find among the synced leads; the Activity Log and notifications can be filtered to his own activity, and automated sync and AI-score entries do not bury it. | none → 2026-11-15 |  |  |
| MVP-006 | Lead list on a phone: at 390px the lead list shows name, score, status and actions without sideways scrolling, and the header has one menu button. | none → 2026-11-29 |  |  |
| MVP-007 | Fast first load: the dashboard opens quickly on the first visit of the day. | none → 2026-11-29 |  |  |
| MVP-008 | Small fixes from the walkthrough: global search shows the person's name before the email; the deal empty state shows £0 in pounds. | none → 2026-11-29 |  |  |
| MVP-009 | Dashboard Pipeline Summary shows the real funnel: where his leads stand, then his deals as they are created, with no empty space when the card is short. | none → 2026-11-29 |  |  |
| MVP-010 | Dashboard Upcoming Tasks says what to do today: follow-ups due on contacted leads appear as tasks, and the card has one button to add a task. | none → 2026-11-29 |  |  |

## Version 63 (saved 2026-11-17)

Note of the change: chore(plan): close seven shipped mvp rows with attestations, note what is left on two (#1445)

Changed:

| ID | Task | Start | Other |
| --- | --- | --- | --- |
| MVP-001 | Email works end to end: the owner connects his Gmail, Microsoft or Zoho mailbox in Email Settings, then sends, receives and sees threads in Aurora; replies stay in his own inbox; on the free plan. Email Settings stops firing errors. Left: Gmail and Microsoft one-click sign-in (a lead reply was proven on Zoho). |  | was named Email works end to end: the owner connects his Gmail, Microsoft or Zoho mailbox in Email Settings, then sends, receives and sees threads in Aurora; replies stay in his own inbox; on the free plan. Email Settings stops firing errors. |
| MVP-003 | Lead to deal: the owner qualifies a lead and converts it to a deal from the lead page, then moves the deal through the pipeline stages; amounts show in pounds everywhere; an old pipeline link no longer hangs. Left: the createdContactId migration, undo, and the Pilates conversion. |  | was named Lead to deal: the owner qualifies a lead and converts it to a deal from the lead page, then moves the deal through the pipeline stages; amounts show in pounds everywhere; an old pipeline link no longer hangs. |
| MVP-005 | Find his own work: his own calls, notes and emails are easy to find among the synced leads; the Activity Log and notifications can be filtered to his own activity, and automated sync and AI-score entries do not bury it. | 2026-11-15 → 2026-11-16 (+1d) |  |
| MVP-006 | Lead list on a phone: at 390px the lead list shows name, score, status and actions without sideways scrolling, and the header has one menu button. | 2026-11-29 → 2026-11-16 (-13d) |  |
| MVP-007 | Fast first load: the dashboard opens quickly on the first visit of the day. | 2026-11-29 → 2026-11-16 (-13d) |  |
| MVP-008 | Small fixes from the walkthrough: global search shows the person's name before the email; the deal empty state shows £0 in pounds. | 2026-11-29 → 2026-11-16 (-13d) |  |
| MVP-009 | Dashboard Pipeline Summary shows the real funnel: where his leads stand, then his deals as they are created, with no empty space when the card is short. | 2026-11-29 → 2026-11-16 (-13d) |  |
| MVP-010 | Dashboard Upcoming Tasks says what to do today: follow-ups due on contacted leads appear as tasks, and the card has one button to add a task. | 2026-11-29 → 2026-11-17 (-12d) |  |

## Version 64 (saved 2026-11-18)

Note of the change: feat(email): gmail reader for mailbox sync, by label and history (#1450)

Added:

| ID | Task | Start | Finish |
| --- | --- | --- | --- |
| MVP-011 | Read a Workspace customer's Gmail: enquiries land on leads as Received, drafts offered, once their admin trusts Aurora. Connecting Google asks for read as well as send; a domain that does not trust Aurora keeps send-only and shows a card asking its admin to trust Aurora (client ID and four Admin console steps). | 2026-11-18 | MVP-001 |
| IFC-320 | WhatsApp seam: transport port, types, fake transport and the contract test suite | 2026-11-18 | IFC-106 |
| IFC-321 | WhatsApp data model: connections, webhook archive, chat columns, activity type (one additive migration) | 2026-11-20 | IFC-320 |
| IFC-322 | WAHA tenant isolation: decision record and a spike with a cross-tenant negative test | 2026-11-18 |  |
| IFC-323 | WhatsApp inbound webhook route: raw body, connection token, fail-closed signature check, authenticated archive | 2026-11-24 | IFC-320,IFC-321 |
| IFC-324 | WhatsApp ingest: match the number to a lead or contact (or create the lead), store, show as Received | 2026-11-29 | IFC-320,IFC-321,IFC-323 |
| IFC-325 | WhatsApp transport A: Meta Cloud API adapter (signature, handshake logic, parse, send, status) | 2026-11-29 | IFC-320,IFC-323 |
| IFC-326 | WhatsApp transport B: WAHA adapter (signature, parse, send) with a client bound to one tenant | 2026-11-29 | IFC-320,IFC-322,IFC-323 |
| IFC-328 | WhatsApp connection backend: tRPC to choose a transport, record the notice, save credentials, disconnect | 2026-11-29 | IFC-320,IFC-321 |
| IFC-331 | WAHA deployment: the pinned container on the private network, its volume, health check and runbook | 2026-11-29 | IFC-322 |
| IFC-327 | Reply to a WhatsApp chat from Aurora: send use case, tRPC procedures, window rule, delivery status | 2026-12-03 | IFC-320,IFC-321,IFC-324 |
| IFC-329 | WhatsApp privacy: restrictions, objection, erasure, export and the record of processing | 2026-12-03 | IFC-324,IFC-316 |
| IFC-330 | WAHA session manager: a session, an API key and a webhook HMAC key per tenant, QR and status | 2026-12-05 | IFC-322,IFC-326,IFC-328,IFC-331 |
| PG-215 | Settings: choose the WhatsApp connection after a plain-words notice of the differences | 2026-12-05 | IFC-328,IFC-035 |
| PG-214 | Lead and contact pages: the WhatsApp thread on the timeline and a reply box | 2026-12-07 | IFC-324,IFC-327 |
| PG-216 | Settings: connect panels for the official transport (guided form) and the unofficial one (QR) | 2026-12-09 | PG-215,IFC-325,IFC-330 |

Changed:

| ID | Task | Start | Finish | Other |
| --- | --- | --- | --- | --- |
| IFC-035 | PHASE-006: WhatsApp research: verify both transports, costs and terms, with a live sandbox proof |  |  | was named PHASE-006: WhatsApp Business API Research |
| IFC-036 | PHASE-006: WhatsApp end to end and the first demo, on both transports | 2026-12-13 → 2026-12-11 (-2d) | IFC-035,IFC-106 → IFC-035,IFC-106,IFC-324,IFC-325,IFC-326,IFC-327,IFC-329,IFC-330,IFC-331,PG-214,PG-216 | was named PHASE-006: WhatsApp + tRPC Integration |

## Version 65 (saved 2026-11-19)

Note of the change: Merge remote-tracking branch 'origin/main' into feat/mvp013-calendar-sync

Added:

| ID | Task | Start | Finish |
| --- | --- | --- | --- |
| MVP-012 | Approve an AI-drafted reply: a reply Aurora drafts for an inbound enquiry waits as "Reply drafted by Aurora: waiting for you" with Send (from the connected mailbox, recorded as sent), Edit (opens Compose with the draft) and Dismiss; nothing is sent without the click (ADR-037); new inbound mail queues a draft when AI reply drafting is on. | 2026-11-18 | MVP-011,IFC-312 |
| MVP-013 | Google Calendar connected: the owner connects his Google calendar at setup; Aurora's appointments and his calendar sync both ways. Connect uses the same Google connect as mail (calendar scope); an Aurora appointment appears in Google Calendar and a Google event appears in Aurora within 5 minutes; tenant-scoped; revoked access shows a reconnect card; tests. Note: packages/adapters/src/calendar/google/client.ts exists but nothing in apps/api or apps/workers uses it yet. | 2026-11-19 | MVP-011 |
| MVP-014 | Who is waiting: enquiries that came in by email with no reply since, oldest first, on the dashboard and the leads list. An inbound email on a lead with no later outbound email lists the lead with its wait time; a reply removes it; counts match the list; phone-width layout; tests. | 2026-11-19 | MVP-011 |

Changed:

| ID | Task | Finish | Other |
| --- | --- | --- | --- |
| IFC-138 | Integrate external calendar providers (Google/Microsoft) with bidirectional sync; webhook handling; idempotency; reconciliation REOPENED 16/11/2026 (self-claimed done, DoD partly met): DoD 'event sync both directions with idempotency': the Google/Microsoft calendar clients are exported but nothing under apps/ or packages/application instantiates them. Google half delivered by MVP-013 (sprint 24); close that half with MVP-013's evidence. This row keeps Microsoft, webhook-driven sync under 30s, the reconcilers shared by both providers and the provider tests. | IFC-137,IFC-106 → IFC-137,IFC-106,MVP-013 | was named Integrate external calendar providers (Google/Microsoft) with bidirectional sync; webhook handling; idempotency; reconciliation REOPENED 16/11/2026 (self-claimed done, DoD partly met): DoD 'event sync both directions with idempotency': the Google/Microsoft calendar clients are exported but nothing under apps/ or packages/application instantiates them. |
| IFC-263 | Contact Email & AI Integration. (1) No email-to-contact matching — inbound emails not linked to contacts by sender address (W-06). (2) No automated AI insight triggering — contact create/update doesn't trigger scoring like lead does (W-07). (3) No contact routing rules — leads have routing but contacts don't (W-14). Audit: docs/audit/contact-detail-wiring-audit.md §17. Email-to-contact matching for mail read from a connected mailbox is delivered by MVP-011 (sprint 24, on the MVP-001 sync); close that part with MVP-011's evidence. This row keeps matching on the inbound webhook route, AI scoring on contact create/update and contact routing rules. | none → MVP-011 | was named Contact Email & AI Integration. (1) No email-to-contact matching — inbound emails not linked to contacts by sender address (W-06). (2) No automated AI insight triggering — contact create/update doesn't trigger scoring like lead does (W-07). (3) No contact routing rules — leads have routing but contacts don't (W-14). Audit: docs/audit/contact-detail-wiring-audit.md §17. |
| IFC-313 | Real inbox integration - contact.draftReply real-thread resolver. IFC-312 audit fix F5 follow-up: the draftReply procedure currently requires the client to supply a full emailThread array (server returns PRECONDITION_FAILED otherwise). IFC-313 replaces this with a server-side resolver that takes input.emailThreadId and fetches the actual ContactEmailThread history (pending real inbox ingestion infra - to be scoped separately). Replies drafted automatically for inbound enquiries from the real synced thread are delivered by MVP-012 (sprint 24); close that part with MVP-012's evidence. This row keeps the contact.draftReply server-side emailThreadId resolver. Keep the client-supplied emailThread path as a fallback for power users / integrations. | IFC-312 → IFC-312,MVP-012 | was named Real inbox integration - contact.draftReply real-thread resolver. IFC-312 audit fix F5 follow-up: the draftReply procedure currently requires the client to supply a full emailThread array (server returns PRECONDITION_FAILED otherwise). IFC-313 replaces this with a server-side resolver that takes input.emailThreadId and fetches the actual ContactEmailThread history (pending real inbox ingestion infra - to be scoped separately). Keep the client-supplied emailThread path as a fallback for power users / integrations. |

## Version 66 (saved 2026-11-21)

Note of the change: Merge remote-tracking branch 'origin/main' into feat/ui-partner-followups

Changed:

| ID | Task | Finish |
| --- | --- | --- |
| PG-084 | Emails Cross-entity scope: wire EmailCompose component (from PG-141) into Lead and Contact detail page Compose buttons. Pre-fill recipient with entity email. Replace activity-derived email list with real email integration data. Re-scoped 2026-10-21 (Category B; PG-207 owner ruling Q10): sending through the user's own Gmail/Outlook/SMTP mailbox is delivered by PG-207 (ADR-085 dispatchUserMail) so this task keeps the entity-page Compose wiring and the real email list. | IFC-099,IFC-144 → PG-207 |

## Version 67 (saved 2026-11-22)

Note of the change: chore(plan): clear 49 forward dependencies in sprint plan (#1532)

Changed:

| ID | Task | Finish |
| --- | --- | --- |
| ENV-001-AI | Automated Monorepo Creation | AI-SETUP-001 → none |
| EP-001-AI | EasyPanel Internal Tools Deployment (Push-based OTLP Pipeline) | ENV-003-AI,ENV-008-AI → ENV-003-AI |
| AUTOMATION-001 | Continuous AI Agent Coordination System | AI-SETUP-001,AI-SETUP-002,ENV-005-AI,ENV-008-AI,ENV-010-AI → ENV-005-AI,ENV-010-AI |
| IFC-010 | PHASE-001: Phase 1 Go/No-Go Decision | IFC-001,IFC-002,IFC-003,IFC-004,IFC-005,IFC-006,IFC-007,IFC-008,IFC-009,IFC-089,IFC-098,IFC-112 → IFC-001,IFC-002,IFC-003,IFC-004,IFC-005,IFC-006,IFC-007,IFC-008,IFC-009,IFC-089,IFC-098 |
| IFC-032 | PHASE-005: OpenTelemetry Monitoring | IFC-030 → none |
| IFC-033 | PHASE-005: Load Testing with k6 | IFC-030,IFC-032 → IFC-032 |
| IFC-073 | PHASE-040: Privacy Impact Assessment | IFC-072 → none |
| PG-010 | Blog Post | PG-009,GTM-002,BRAND-001 → GTM-002,BRAND-001 |
| PG-017 | Sign Up Success | PG-016 → none |
| PG-023 | Email Verification | PG-016,IFC-006 → IFC-006 |
| PG-025 | Billing Portal | IFC-099,IFC-198 → IFC-198 |
| PG-047 | New Ticket | PG-046 → none |
| PG-048 | Ticket Detail | PG-046 → none |
| SALES-002 | Sales Motion Playbook (outreach sequences, discovery + demo scripts) | SALES-001,GTM-002 → GTM-002 |
| IFC-115 | Setup backups and disaster recovery plan | IFC-071 → none |
| IFC-121 | Schedule periodic secret rotation and dependency vulnerability updates | IFC-113 → none |
| IFC-127 | Implement tenant isolation at database and application layers | IFC-098,IFC-072 → IFC-098 |
| IFC-141 | Evaluate n8n; custom engine; and Temporal; document decision via ADR; build event-driven minimal rules engine and integrate selected workflow engine | IFC-136,IFC-137,IFC-135,IFC-150,IFC-151 → IFC-136,IFC-137,IFC-135,IFC-150 |
| IFC-142 | Define SLOs/SLIs and alerting; establish on-call and incident management process; conduct restore drills; create capacity and cost budgets for AI inference and search | ENV-008-AI → none |
| IFC-153 | Ingestion pipeline for case files: upload/email attachment intake, antivirus scan, metadata extraction, storage, and indexing triggers | IFC-152,IFC-144,IFC-151,IFC-106 → IFC-152,IFC-106 |
| IFC-158 | Scheduling communications: ICS invites, reschedule/cancel flows, reminders; integrated with notification service and calendar sync | IFC-138,IFC-157,IFC-137 → IFC-137 |
| IFC-159 | Case timeline enrichment: include documents/versions, communications (email/WhatsApp), and agent actions/approvals as timeline events | IFC-147,IFC-153,IFC-144,IFC-149,IFC-148 → IFC-147,IFC-153,IFC-149,IFC-148 |
| IFC-163 | Standardize worker runtime under apps/workers (events, ingestion, notifications) with shared job framework, metrics, and deployment packaging | IFC-150,IFC-151,IFC-153,IFC-157,IFC-106 → IFC-150,IFC-153,IFC-106 |
| TRACK-005 | Security Dashboard UI - Vulnerability tracking scan results security posture | EXC-SEC-001,IFC-121 → IFC-121 |
| IFC-173 | Complete inbound email parsing endpoint - Follow-up to IFC-144 | IFC-144 → none |
| IFC-183 | Notifications tRPC Router - List mark read preferences real-time subscription | IFC-003,IFC-157 → IFC-003 |
| PG-129 | Authenticated Home Page - Welcome summary activity feed AI insights pinned items goals | IFC-182,IFC-069,IFC-095 → IFC-069,IFC-095 |
| PG-132 | Smart Lead Routing UI - Rules configuration assignment dashboard SLA monitoring | IFC-030 → none |
| PG-141 | Email Compose & History Page - Thread view compose attachments templates | IFC-144 → none |
| IFC-191 | User Timezone Support - Add timezone field to User model with preference UI and timezone-aware greeting | IFC-182 → none |
| IFC-192 | Contact Activity Tracking - Add lastContactedAt field to Contact model with auto-update on interactions | IFC-182,IFC-184 → IFC-184 |
| IFC-194 | Router Middleware Standardization - Migrate all routers from manual getTenantId to tenantProcedure | IFC-182,IFC-003 → IFC-003 |
| IFC-195 | Customizable Daily Goals - Multi-type goal support (revenue calls meetings tasks custom) with user preferences | IFC-182 → none |
| IFC-196 | Home Page Response Caching - Redis caching for getWelcomeSummary with event-driven invalidation | IFC-182,IFC-075 → none |
| IFC-198 | Billing Domain Core - Invoice/Receipt aggregates, payment state machine, tax/refund rules | IFC-099,IFC-107 → IFC-107 |
| PG-174 | Notification Configuration Pages - Channels and Quiet Hours | IFC-157 → none |
| IFC-213 | Replace Math.random connector health checks with adapter-backed health checks in integrations router | IFC-099 → none |
| IFC-223 | Wire actual Email Outbound Adapter (Resolves R-018) [2026-06-09 audit: shipped as Completed but was MOCK in prod — container.ts had no resend branch; actually wired to Resend via #363/#360 + activated on Railway api service] | IFC-157 → none |

## Version 68 (saved 2026-11-23)

Note of the change: Merge remote-tracking branch 'origin/main' into feat/byok-provider-key

Added:

| ID | Task | Start | Finish |
| --- | --- | --- | --- |
| IFC-332 | Customer feedback survey collection: send an NPS survey by email, a public one-response-per-token page, and write feedback_surveys | 2026-12-02 | IFC-065,IFC-189,PG-203,IFC-315,IFC-316,MVP-001 |
| IFC-333 | Enquiry triage and extraction: every inbound email from a synced mailbox is classified as new enquiry, existing customer, supplier or spam/automated, and a new enquiry's job details (what work, address or postcode, when, budget, phone) are extracted into the lead with the source email linked | 2026-12-01 | MVP-011,IFC-005 |
| IFC-336 | Lead scoring from real engagement signals with reasons: replies, response time, enquiry completeness, job value and recency, so scores spread instead of clustering | 2026-12-04 | IFC-333,IFC-005,IFC-212,MVP-014 |
| IFC-334 | Reply draft on every new enquiry built from the business's own services, prices and availability, with booking slots from the connected calendar; the user approves, edits or sends, and the acceptance rate is measured | 2026-12-06 | IFC-333,MVP-012,MVP-013,PG-202,PG-203 |
| IFC-335 | Follow-up autopilot: when a lead or a sent quote has had no reply in N days, a drafted follow-up appears in a "to send" list, and nothing is ever sent without approval | 2026-12-13 | IFC-334,MVP-014,MVP-010,IFC-315 |
| IFC-337 | Next best action that is an action: per lead and deal one concrete step with a one-click button (send the drafted reply, send the follow-up, book a visit, send a quote, mark lost), chosen from real signals and replacing restating insights; click-through tracked | 2026-12-20 | IFC-334,IFC-335,IFC-336 |

Changed:

| ID | Task | Other |
| --- | --- | --- |
| PG-145 | Next Best Action Dashboard - NBA recommendations deal insights action cards success metrics Cross-entity scope: refine NextBestAction impact scoring from coarse 3-tier (HIGH/MEDIUM/LOW) to multi-factor model incorporating engagement score sentiment trend and activity recency. Apply refined scoring to NextBestActionCard on Lead and Contact detail pages. [Note 23/11/2026: for small service businesses the NBA action cards, deal insights, success metrics and recommendations are delivered by IFC-337 (sprint 26, a concrete step with a one-click button chosen from real signals); this row keeps the multi-factor impact scoring and the dashboard remainder.] | was named Next Best Action Dashboard - NBA recommendations deal insights action cards success metrics Cross-entity scope: refine NextBestAction impact scoring from coarse 3-tier (HIGH/MEDIUM/LOW) to multi-factor model incorporating engagement score sentiment trend and activity recency. Apply refined scoring to NextBestActionCard on Lead and Contact detail pages. |
| IFC-263 | Contact Email & AI Integration. (1) No email-to-contact matching — inbound emails not linked to contacts by sender address (W-06). (2) No automated AI insight triggering — contact create/update doesn't trigger scoring like lead does (W-07). (3) No contact routing rules — leads have routing but contacts don't (W-14). Audit: docs/audit/contact-detail-wiring-audit.md §17. Email-to-contact matching for mail read from a connected mailbox is delivered by MVP-011 (sprint 24, on the MVP-001 sync); close that part with MVP-011's evidence. This row keeps matching on the inbound webhook route, AI scoring on contact create/update and contact routing rules. [Note 23/11/2026: the AI reading of inbound mail (classifying it and extracting the job details into the lead) is delivered by IFC-333 (sprint 25); this row keeps the webhook matching, contact scoring triggers and routing.] | was named Contact Email & AI Integration. (1) No email-to-contact matching — inbound emails not linked to contacts by sender address (W-06). (2) No automated AI insight triggering — contact create/update doesn't trigger scoring like lead does (W-07). (3) No contact routing rules — leads have routing but contacts don't (W-14). Audit: docs/audit/contact-detail-wiring-audit.md §17. Email-to-contact matching for mail read from a connected mailbox is delivered by MVP-011 (sprint 24, on the MVP-001 sync); close that part with MVP-011's evidence. This row keeps matching on the inbound webhook route, AI scoring on contact create/update and contact routing rules. |
