How a schedule from an exported table changed from version to version. A marks actual dates.

## Version 1 (saved 2026-04-12)

Note of the change: fix(ci): track sprint task JSONs, registry files, and split CSVs to pass CI gates

| ID | Task | Start | Finish |
| --- | --- | --- | --- |
| EXC-INIT-001 | Sprint 0 - Environment Setup with Agent Ecosystem | 2025-12-14 |  |
| AI-SETUP-001 | Configure Claude Code with Custom Commands and Hooks | 2025-12-14 | EXC-INIT-001 |
| AI-SETUP-002 | GitHub Copilot Enterprise Automation Setup | 2025-12-15 | AI-SETUP-001 |
| AI-SETUP-003 | External AI Tools Integration (Codex, Jules) | 2025-12-15 | AI-SETUP-001 |
| ENV-001-AI | Automated Monorepo Creation | 2025-12-15 | AI-SETUP-001 |
| ENV-002-AI | Automated Development Tools Configuration | 2025-12-16 | ENV-001-AI |
| ENV-003-AI | Docker Environment with Optimized Configuration | 2025-12-16 | ENV-001-AI |
| ENV-004-AI | Supabase Integration with Automated Schema Design | 2025-12-17 | ENV-003-AI |
| ENV-005-AI | CI/CD Pipeline with Predictive Optimization | 2025-12-16 | ENV-002-AI |
| ENV-006-AI | Prisma Schema with Generated Optimizations | 2025-12-18 | ENV-004-AI |
| ENV-007-AI | tRPC Setup with Automated Type Generation | 2025-12-19 | ENV-006-AI |
| ENV-008-AI | Automated Observability with Predictive Monitoring | 2025-12-17 | ENV-005-AI |
| ENV-009-AI | Frontend with Generated Components and Optimization | 2025-12-16 | ENV-001-AI |
| ENV-010-AI | Automated Test Generation and Automation | 2025-12-20 | ENV-007-AI,ENV-009-AI |
| ENV-011-AI | LangChain Integration with Optimized Chains | 2025-12-20 | ENV-007-AI |
| ENV-012-AI | Documentation with Auto-Generation | 2025-12-16 | ENV-001-AI |
| ENV-013-AI | Automated Security Implementation | 2025-12-20 | ENV-005-AI,ENV-007-AI,ENV-009-AI |
| ENV-014-AI | Performance Optimization with AI Profiling | 2025-12-18 | ENV-009-AI |
| ENV-015-AI | AI-Managed Feature Flags with Predictive Rollout | 2025-12-20 | ENV-007-AI |
| ENV-016-AI | Privacy-First Analytics with AI Insights | 2025-12-22 | ENV-009-AI,ANALYTICS-001 |
| ENV-017-AI | Automated Integration Testing | 2025-12-28 | ENV-001-AI,ENV-003-AI,ENV-005-AI,ENV-010-AI,IFC-001 |
| ENV-018-AI | Sprint Planning and Velocity Prediction | 2026-01-02 | ENV-017-AI |
| EP-001-AI | EasyPanel Internal Tools Deployment (Push-based OTLP Pipeline) | 2025-12-19 | ENV-003-AI,ENV-008-AI |
| AUTOMATION-001 | Continuous AI Agent Coordination System | 2025-12-21 | AI-SETUP-001,AI-SETUP-002,ENV-005-AI,ENV-008-AI,ENV-010-AI |
| AUTOMATION-002 | AI Performance Dashboard and Optimization Loop | 2025-12-25 | AUTOMATION-001 |
| IFC-000 | IntelliFlow CRM Feasibility Assessment | 2025-12-14 |  |
| IFC-001 | PHASE-001: Technical Architecture Spike - Modern Stack | 2025-12-28 | IFC-000 |
| IFC-002 | PHASE-001: Domain Model Design (DDD) | 2025-12-28 | IFC-000 |
| IFC-003 | PHASE-001: tRPC API Foundation | 2026-01-03 | IFC-002 |
| IFC-004 | PHASE-002: Next.js 16.0.10 Lead Capture UI | 2026-01-11 | IFC-003 |
| IFC-005 | FLOW-002, FLOW-011: LangChain AI Scoring Prototype | 2026-01-15 | IFC-004 |
| IFC-006 | PHASE-002: Supabase Integration Test | 2026-01-25 | IFC-003 |
| IFC-007 | PHASE-003: Performance Benchmarks - Modern Stack | 2026-01-25 | IFC-004,IFC-005 |
| IFC-008 | PHASE-003: Security Assessment - OWASP + ISO 42001 Prep | 2026-01-11 | IFC-001 |
| IFC-009 | PHASE-002: Team Capability Assessment - Modern Stack (Next.js 16.0.10 App Router, Turbopack FS caching, Cache Components, proxy replacing middleware) | 2026-02-08 | IFC-001,IFC-005 |
| IFC-010 | PHASE-001: Phase 1 Go/No-Go Decision | 2026-03-08 | IFC-001,IFC-002,IFC-003,IFC-004,IFC-005,IFC-006,IFC-007,IFC-008,IFC-009,IFC-089,IFC-098,IFC-112 |
| IFC-011 | PHASE-002: Supabase Free Tier Optimization | 2026-01-25 | IFC-000 |
| IFC-012 | PHASE-002: Turborepo Monorepo Setup | 2026-03-08 | IFC-010 |
| IFC-013 | PHASE-002: tRPC Router Implementation | 2026-03-11 | IFC-012 |
| IFC-014 | PHASE-002: Next.js 16.0.10 App Router UI | 2026-03-22 | IFC-013 |
| IFC-015 | PHASE-002: BullMQ Job Queue Setup | 2026-03-22 | IFC-013 |
| IFC-016 | PHASE-002: Real-time Subscriptions | 2026-03-27 | IFC-014 |
| IFC-017 | PHASE-002: Prisma + Supabase Data Layer | 2026-03-11 | IFC-012,IFC-013 |
| IFC-018 | PHASE-002: Vitest Testing Suite | 2026-03-30 | IFC-014,IFC-015,IFC-016 |
| IFC-019 | PHASE-001: Gate 1 Review - £500 Investment | 2026-04-05 | IFC-018 |
| IFC-020 | PHASE-011: LangChain Pipeline Design | 2026-05-31 | IFC-019 |
| IFC-021 | PHASE-011: CrewAI Agent Framework | 2026-06-14 | IFC-020 |
| IFC-022 | PHASE-011: Structured AI Output Implementation | 2026-06-17 | IFC-021 |
| IFC-023 | PHASE-011: AI Explainability UI | 2026-06-20 | IFC-022 |
| IFC-024 | PHASE-011: Human-in-the-Loop Feedback | 2026-06-28 | IFC-023 |
| IFC-025 | PHASE-011: A/B Testing Framework | 2026-06-28 | IFC-022 |
| IFC-026 | PHASE-011: Playwright E2E Testing | 2026-07-12 | IFC-022,IFC-024 |
| IFC-027 | PHASE-001: Gate 2 Review - £2000 Investment | 2026-07-19 | IFC-026 |
| IFC-028 | PHASE-005: Workflow Engine with LangGraph | 2026-07-26 | IFC-027 |
| IFC-029 | PHASE-005: Auto-Response with Approval Gate | 2026-01-31 | IFC-028 |
| IFC-030 | PHASE-005: Smart Lead Routing | 2026-08-09 | IFC-029 |
| IFC-031 | PHASE-005: Workflow Builder UI (React Flow) | 2026-04-12 | IFC-028 |
| IFC-032 | PHASE-005: OpenTelemetry Monitoring | 2026-08-23 | IFC-030 |
| IFC-033 | PHASE-005: Load Testing with k6 | 2026-09-06 | IFC-030,IFC-032 |
| IFC-034 | PHASE-001: Gate 3 Review - £3000 Investment | 2026-09-14 | IFC-033 |
| IFC-035 | PHASE-006: WhatsApp Business API Research | 2026-09-20 | IFC-034 |
| IFC-036 | PHASE-006: WhatsApp + tRPC Integration | 2026-10-04 | IFC-035,IFC-106 |
| IFC-037 | PHASE-005: Analytics Dashboard Design | 2026-10-04 | IFC-032,ANALYTICS-001,IFC-190 |
| IFC-038 | Analytics Implementation | 2026-10-18 | IFC-037,ANALYTICS-001,IFC-190 |
| IFC-039 | Advanced AI Features (RAG) | 2026-11-01 | IFC-025 |
| IFC-040 | Production hardening incl. HttpOnly auth sessions and release security gates | 2026-11-29 | IFC-046,IFC-111,IFC-112,IFC-113,IFC-115,IFC-122,IFC-127,IFC-043,IFC-033,IFC-130,IFC-132,IFC-133,IFC-134,IFC-169 |
| IFC-041 | User Manual with Interactive Examples | 2026-10-18 | IFC-018,IFC-026,IFC-033 |
| IFC-042 | tRPC API Client SDK Docs | 2026-05-31 | IFC-013 |

## Version 2 (saved 2026-10-05)

Note of the change: fix(docs): remove invented people, teams and evidence hashes from the repo

Changed:

| ID | Task | Start |
| --- | --- | --- |
| ENV-008-AI | Automated Observability with Predictive Monitoring | 2025-12-17 → 2026-10-06 (+293d) |
| EP-001-AI | EasyPanel Internal Tools Deployment (Push-based OTLP Pipeline) | 2025-12-19 → 2026-10-06 (+291d) |
| IFC-032 | PHASE-005: OpenTelemetry Monitoring | 2026-08-23 → 2026-10-06 (+44d) |
| IFC-033 | PHASE-005: Load Testing with k6 | 2026-09-06 → 2026-10-06 (+30d) |

## Version 3 (saved 2026-10-07)

Note of the change: Merge remote-tracking branch 'origin/main' into ci/affected-only-fast-checks

Added:

| ID | Task | Start | Finish |
| --- | --- | --- | --- |
| IFC-043 | Operational runbooks (deploy, rollback, incident response, backup/restore, access requests) | 2026-11-29 | ENV-008-AI,IFC-112,IFC-113,IFC-115,IFC-130 |

Changed:

| ID | Task | Start |
| --- | --- | --- |
| IFC-027 | PHASE-001: Gate 2 Review - £2000 Investment | 2026-07-19 → 2026-10-06 (+79d) |

## Version 4 (saved 2026-10-25)

Note of the change: Merge origin/main into feat/env-008-ai-env008

Removed: IFC-042 tRPC API Client SDK Docs; IFC-043 Operational runbooks (deploy, rollback, incident response, backup/restore, access requests)

## Version 5 (saved 2026-11-08)

Note of the change: Merge remote-tracking branch 'origin/main' into test/copied-logic-tracker

Removed: IFC-041 User Manual with Interactive Examples

## Version 6 (saved 2026-11-12)

Note of the change: Merge remote-tracking branch 'origin/main' into perf/preship-skip-db-when-unaffected

Removed: IFC-040 Production hardening incl. HttpOnly auth sessions and release security gates

## Version 7 (saved 2026-11-16)

Note of the change: chore(plan): reopen 29 self-claimed tasks whose definition of done is partly met

Changed:

| ID | Task | Start | Other |
| --- | --- | --- | --- |
| AI-SETUP-001 | Configure Claude Code with Custom Commands and Hooks REOPENED 16/11/2026 (self-claimed done, DoD partly met): DoD '.claude/commands configured': .claude/commands has no files on main. | 2025-12-14 → 2027-05-30 (+532d) | was named Configure Claude Code with Custom Commands and Hooks |
| AI-SETUP-002 | GitHub Copilot Enterprise Automation Setup REOPENED 16/11/2026 (self-claimed done, DoD partly met): DoD names copilot-setup-steps.yml; no such file exists on main. | 2025-12-15 → 2027-06-27 (+559d) | was named GitHub Copilot Enterprise Automation Setup |
| AI-SETUP-003 | External AI Tools Integration (Codex, Jules) REOPENED 16/11/2026 (self-claimed done, DoD partly met): DoD 'Codex CLI configured, Jules connected': tools/integrations/codex is absent. | 2025-12-15 → 2027-06-13 (+545d) | was named External AI Tools Integration (Codex, Jules) |
| IFC-030 | PHASE-005: Smart Lead Routing REOPENED 16/11/2026 (self-claimed done, DoD partly met): DoD 'routing-simulation-results.csv must contain real lead routing data from test database': the simulation uses a Prisma stub with fixture data; routeLead is not called on lead create. | 2026-08-09 → 2027-07-11 (+336d) | was named PHASE-005: Smart Lead Routing |
| IFC-034 | PHASE-001: Gate 3 Review - £3000 Investment | 2026-09-14 → 2026-11-15 (+62d) |  |
| IFC-035 | PHASE-006: WhatsApp Business API Research | 2026-09-20 → 2026-11-29 (+70d) |  |
| IFC-036 | PHASE-006: WhatsApp + tRPC Integration | 2026-10-04 → 2026-12-13 (+70d) |  |
| IFC-037 | PHASE-005: Analytics Dashboard Design | 2026-10-04 → 2027-05-16 (+224d) |  |
| IFC-038 | Analytics Implementation | 2026-10-18 → 2027-06-27 (+252d) |  |

## Version 8 (saved 2026-11-18)

Note of the change: Merge remote-tracking branch 'origin/main' into feat/mvp-011-gmail-inbound

Changed:

| ID | Task | Start | Finish | Other |
| --- | --- | --- | --- | --- |
| IFC-035 | PHASE-006: WhatsApp research: verify both transports, costs and terms, with a live sandbox proof |  |  | was named PHASE-006: WhatsApp Business API Research |
| IFC-036 | PHASE-006: WhatsApp end to end and the first demo, on both transports | 2026-12-13 → 2026-12-11 (-2d) | IFC-035,IFC-106 → IFC-035,IFC-106,IFC-324,IFC-325,IFC-326,IFC-327,IFC-329,IFC-330,IFC-331,PG-214,PG-216 | was named PHASE-006: WhatsApp + tRPC Integration |

## Version 9 (saved 2026-11-22)

Note of the change: chore(plan): keep 5 real completed-to-completed dependencies

Changed:

| ID | Task | Finish |
| --- | --- | --- |
| ENV-001-AI | Automated Monorepo Creation | AI-SETUP-001 → none |
| EP-001-AI | EasyPanel Internal Tools Deployment (Push-based OTLP Pipeline) | ENV-003-AI,ENV-008-AI → ENV-003-AI |
| AUTOMATION-001 | Continuous AI Agent Coordination System | AI-SETUP-001,AI-SETUP-002,ENV-005-AI,ENV-008-AI,ENV-010-AI → ENV-005-AI,ENV-010-AI |
| IFC-010 | PHASE-001: Phase 1 Go/No-Go Decision | IFC-001,IFC-002,IFC-003,IFC-004,IFC-005,IFC-006,IFC-007,IFC-008,IFC-009,IFC-089,IFC-098,IFC-112 → IFC-001,IFC-002,IFC-003,IFC-004,IFC-005,IFC-006,IFC-007,IFC-008,IFC-009,IFC-089,IFC-098 |
| IFC-032 | PHASE-005: OpenTelemetry Monitoring | IFC-030 → none |
| IFC-033 | PHASE-005: Load Testing with k6 | IFC-030,IFC-032 → IFC-032 |
