How a schedule from an exported table changed from version to version. A marks actual dates.

## Version 1 (saved 2026-04-12)

Note of the change: fix(ci): track sprint task JSONs, registry files, and split CSVs to pass CI gates

| ID | Task | Start | Finish |
| --- | --- | --- | --- |
| IFC-043 | Operational runbooks (deploy, rollback, incident response, backup/restore, access requests) | 2026-11-29 | ENV-008-AI,IFC-112,IFC-113,IFC-115,IFC-130 |
| IFC-044 | Unit Tests (Vitest + TDD) | 2025-12-20 | ENV-010-AI |
| IFC-045 | Integration Tests (Vitest + MSW) | 2026-06-28 | IFC-044 |
| IFC-046 | Security Tests (OWASP ZAP + Snyk) | 2026-11-01 | IFC-008 |
| IFC-047 | Performance Tests (k6 + Lighthouse) | 2026-10-18 | IFC-007 |
| IFC-048 | User Acceptance Testing | 2026-11-29 | IFC-039 |
| IFC-049 | Gate 4 Review - £5000 Investment | 2026-12-13 | IFC-048 |
| IFC-050 | Internal Launch Preparation | 2026-12-13 | IFC-048 |
| IFC-051 | Pilot Customer Selection | 2026-12-27 | IFC-049 |
| IFC-052 | Production Deployment | 2026-12-27 | IFC-040,IFC-050 |
| IFC-053 | Hypercare Period | 2027-01-10 | IFC-052 |
| IFC-054 | Technical Complexity Monitoring | 2026-03-22 |  |
| IFC-055 | Budget Tracking with FinOps | 2026-04-05 |  |
| IFC-056 | Team Upskilling Program | 2026-04-19 | IFC-009 |
| IFC-057 | Vendor Lock-in Mitigation | 2026-04-19 | IFC-011 |
| IFC-058 | GDPR baseline controls: Supabase RLS policies, data minimisation, retention hooks | 2026-05-17 | IFC-017,IFC-127,IFC-008 |
| IFC-059 | ISO 42001 Readiness Assessment | 2026-11-29 | IFC-040 |
| IFC-060 | Success Metrics Review | 2027-01-10 | IFC-052 |
| IFC-061 | FLOW-006: Lead to Contact Conversion Logic | 2026-06-28 | IFC-089,IFC-101,IFC-102 |
| IFC-062 | FLOW-006: Lead to Deal Conversion Logic | 2026-02-20 | IFC-061,IFC-104 |
| IFC-063 | FLOW-007: Pipeline Stage Customization | 2026-06-28 | IFC-091,IFC-104 |
| IFC-064 | FLOW-007: Kanban Drag-Drop Persistence | 2026-07-03 | IFC-091,IFC-063 |
| IFC-065 | FLOW-009: Deal Won Closure Workflow | 2026-02-21 | IFC-091,IFC-092 |
| IFC-066 | FLOW-009: Deal Lost Closure Workflow | 2026-02-22 | IFC-091,IFC-092 |
| IFC-067 | FLOW-012: Automatic Ticket Routing Engine | 2026-02-21 | IFC-093,IFC-095 |
| IFC-068 | FLOW-015: Feedback Analytics Dashboard | 2026-02-21 | IFC-090,IFC-096 |
| IFC-069 | FLOW-020: Unified Activity Feed Service | 2026-06-28 | IFC-089,IFC-091,IFC-093,IFC-109 |
| IFC-070 | Data Migration from Legacy | 2026-08-23 | IFC-017 |
| IFC-071 | Multi-Region Setup | 2026-11-29 | IFC-040 |
| IFC-072 | PHASE-040: Zero Trust Security Model | 2026-01-11 | IFC-001,IFC-008 |
| IFC-073 | PHASE-040: Privacy Impact Assessment | 2026-01-15 | IFC-072 |
| IFC-074 | PHASE-040: Full Stack Observability | 2025-12-30 | IFC-003 |
| IFC-075 | IaC with Terraform | 2025-12-28 | IFC-001 |
| IFC-076 | Component Library (shadcn/ui) | 2026-05-03 | IFC-014,BRAND-002 |
| IFC-077 | PHASE-035: API Rate Limiting (tRPC + Upstash) | 2026-04-05 | IFC-013 |
| IFC-078 | Platform Engineering Foundation | 2026-08-23 | IFC-012 |
| IFC-079 | PHASE-041: Docusaurus Setup | 2026-03-22 | IFC-012 |
| IFC-080 | PHASE-041: LLM-Friendly Documentation Templates | 2026-03-24 | IFC-079 |
| IFC-081 | API Documentation (tRPC + OpenAPI) | 2026-05-31 | IFC-013 |
| IFC-082 | Domain Knowledge Base | 2026-03-26 | IFC-080 |
| IFC-083 | RAG Integration for Docs | 2026-11-01 | IFC-039,IFC-082 |
| IFC-084 | Video Tutorials & Demos | 2026-12-27 | IFC-050,SALES-002 |
| IFC-085 | PHASE-040: Ollama Local Development | 2026-01-11 | IFC-005 |
| IFC-086 | Model Versioning with Zep | 2026-06-28 | IFC-020 |
| IFC-087 | Edge Functions Optimization | 2026-09-20 | IFC-014 |
| IFC-088 | Continuous Quality Metrics | 2026-06-28 | IFC-044 |
| IFC-089 | FLOW-005-A, FLOW-006, FLOW-014, FLOW-010-A: Contacts Module - Create/Edit/Search | 2026-02-22 | IFC-002,IFC-004,IFC-102 |
| IFC-090 | Contact 360 Page - Full Detail View | 2026-03-08 | IFC-089 |
| IFC-091 | Deals Pipeline - Kanban Board | 2026-03-10 | IFC-002,IFC-004,IFC-104 |
| IFC-092 | Deal Forecasting & Reporting | 2026-03-22 | IFC-091 |
| IFC-093 | Tickets Module - SLA Tracking | 2026-03-24 | IFC-002,IFC-004,IFC-188 |
| IFC-094 | Documents Management - Upload & Sign | 2026-02-19 | IFC-090,IFC-106 |
| IFC-095 | Churn Risk & Next Best Action | 2026-04-07 | IFC-005,IFC-090,IFC-108 |
| IFC-096 | Custom Reports & Dashboards | 2026-04-19 | IFC-091,IFC-092,IFC-108 |
| IFC-097 | Distributed Tracing & Logging | 2026-04-21 | IFC-007 |
| IFC-098 | RBAC/ABAC & Audit Trail | 2026-02-24 | IFC-008 |
| IFC-099 | ERP/Payment/Email Connectors | 2026-05-03 | IFC-006,IFC-106 |
| IFC-100 | ADR Registry & Compliance Reporting | 2026-05-07 | IFC-008,GOV-001 |
| PG-001 | Home Page (Public) | 2026-05-17 | IFC-076,GTM-002,BRAND-001 |
| PG-002 | Features Page | 2026-05-19 | PG-001,GTM-002,BRAND-001 |
| PG-003 | Pricing Page | 2026-05-21 | PG-001,GTM-002,BRAND-001 |
| PG-004 | About Page | 2026-05-23 | PG-001,GTM-002,BRAND-001 |
| PG-005 | Contact Page | 2026-05-25 | PG-001,GTM-002,BRAND-001 |
| PG-006 | Partners Page | 2026-05-27 | PG-001,GTM-002,BRAND-001 |
| PG-007 | Press Page | 2026-05-28 | PG-001,GTM-002,BRAND-001 |
| PG-008 | Security Page | 2026-05-29 | PG-001,GTM-002,BRAND-001 |
| PG-009 | Blog Index | 2026-05-31 | PG-001,GTM-002,BRAND-001 |
| PG-010 | Blog Post | 2026-06-02 | PG-009,GTM-002,BRAND-001 |
| PG-011 | Careers Page | 2026-06-04 | PG-001,GTM-002,BRAND-001 |
| PG-012 | Career Detail | 2026-06-06 | PG-011,GTM-002,BRAND-001 |

| ID | Task | Start | Finish |
| --- | --- | --- | --- |
| PG-013 | Landing Page Template | 2026-06-08 | PG-001,GTM-002,BRAND-001 |
| PG-014 | Status Page | 2026-06-10 | PG-001,GTM-002,BRAND-001 |
| PG-015 | Sign In | 2026-06-14 | IFC-006,IFC-076,IFC-098 |

## Version 2 (saved 2026-04-13)

Note of the change: chore(project-tracker): sprint metrics JSON updates

Added:

| ID | Task | Start | Finish |
| --- | --- | --- | --- |
| PG-016 | Sign Up | 2026-06-16 | PG-015,IFC-006 |

## Version 3 (saved 2026-10-06)

Note of the change: Merge branch 'main' into fix/789-readiness-checks-redis

Changed:

| ID | Task | Start |
| --- | --- | --- |
| IFC-056 | Team Upskilling Program | 2026-04-19 → 2026-10-06 (+170d) |
| IFC-074 | PHASE-040: Full Stack Observability | 2025-12-30 → 2026-10-06 (+280d) |
| IFC-097 | Distributed Tracing & Logging | 2026-04-21 → 2026-10-06 (+168d) |
| PG-014 | Status Page | 2026-06-10 → 2026-10-06 (+118d) |

## Version 4 (saved 2026-10-07)

Note of the change: Merge remote-tracking branch 'origin/main' into fix/tooling-sonar-hard-files

Added:

| ID | Task | Start | Finish |
| --- | --- | --- | --- |
| PG-017 | Sign Up Success | 2026-06-18 | PG-016 |

Removed: IFC-043 Operational runbooks (deploy, rollback, incident response, backup/restore, access requests)

## Version 5 (saved 2026-10-22)

Note of the change: docs(ifc-074): tdd execution plan for observability rebuild

Added:

| ID | Task | Start | Finish |
| --- | --- | --- | --- |
| IFC-042 | tRPC API Client SDK Docs | 2026-05-31 | IFC-013 |
| IFC-043 | Operational runbooks (deploy, rollback, incident response, backup/restore, access requests) | 2026-11-29 | ENV-008-AI,IFC-112,IFC-113,IFC-115,IFC-130 |

Removed: PG-016 Sign Up; PG-017 Sign Up Success

## Version 6 (saved 2026-11-08)

Note of the change: test(adapters): test the real Outlook, Teams and PayPal adapters, not fetch stubs (#1270)

Added:

| ID | Task | Start | Finish |
| --- | --- | --- | --- |
| IFC-041 | User Manual with Interactive Examples | 2026-10-18 | IFC-018,IFC-026,IFC-033 |

Removed: PG-015 Sign In

## Version 7 (saved 2026-11-12)

Note of the change: Merge remote-tracking branch 'origin/main' into chore/ifc-056-lane-playbook-dod

Added:

| ID | Task | Start | Finish |
| --- | --- | --- | --- |
| IFC-040 | Production hardening incl. HttpOnly auth sessions and release security gates | 2026-11-29 | IFC-046,IFC-111,IFC-112,IFC-113,IFC-115,IFC-122,IFC-127,IFC-043,IFC-033,IFC-130,IFC-132,IFC-133,IFC-134,IFC-169 |

Removed: PG-013 Landing Page Template; PG-014 Status Page

## Version 8 (saved 2026-11-15)

Note of the change: Merge remote-tracking branch 'origin/main' into chore/ifc-319-otel-sdk-3

Removed: PG-012 Career Detail

## Version 9 (saved 2026-11-16)

Note of the change: Merge remote-tracking branch 'origin/main' into feat/mail-sync-core

Changed:

| ID | Task | Start | Other |
| --- | --- | --- | --- |
| IFC-040 | Production hardening incl. HttpOnly auth sessions and release security gates | 2026-11-29 → 2027-09-19 (+294d) |  |
| IFC-041 | User Manual with Interactive Examples | 2026-10-18 → 2027-06-27 (+252d) |  |
| IFC-046 | Security Tests (OWASP ZAP + Snyk) | 2026-11-01 → 2027-04-18 (+168d) |  |
| IFC-047 | Performance Tests (k6 + Lighthouse) | 2026-10-18 → 2027-05-02 (+196d) |  |
| IFC-053 | Hypercare Period | 2027-01-10 → 2027-09-19 (+252d) |  |
| IFC-056 | Team Upskilling Program | 2026-10-06 → 2026-11-15 (+40d) |  |
| IFC-059 | ISO 42001 Readiness Assessment | 2026-11-29 → 2027-09-19 (+294d) |  |
| IFC-060 | Success Metrics Review | 2027-01-10 → 2027-09-19 (+252d) |  |
| IFC-071 | Multi-Region Setup | 2026-11-29 → 2027-10-03 (+308d) |  |
| IFC-072 | PHASE-040: Zero Trust Security Model REOPENED 16/11/2026 (self-claimed done, DoD partly met): DoD 'RLS, API authentication, mTLS': no mTLS code or config found. | 2026-01-11 → 2027-05-02 (+476d) | was named PHASE-040: Zero Trust Security Model |
| IFC-075 | IaC with Terraform REOPENED 16/11/2026 (self-claimed done, DoD partly met): No destroy-rebuild test log on main; INFRA-TF-001 later had to fix provider-schema drift. | 2025-12-28 → 2027-06-27 (+546d) | was named IaC with Terraform |
| IFC-083 | RAG Integration for Docs | 2026-11-01 → 2027-05-02 (+182d) |  |
| IFC-087 | Edge Functions Optimization | 2026-09-20 → 2027-01-10 (+112d) |  |
| IFC-094 | Documents Management - Upload & Sign REOPENED 16/11/2026 (self-claimed done, DoD partly met): DoD 'contracts signed electronically': no e-signature flow; the signedBy/signedAt/signatureHash columns are never written. | 2026-02-19 → 2027-09-05 (+563d) | was named Documents Management - Upload & Sign |
| IFC-099 | ERP/Payment/Email Connectors REOPENED 16/11/2026 (self-claimed done, DoD partly met): DoD 'ERP sync functional, payments processed, emails sent; each adapter wired to an API router': integrations.router.ts triggerSync returns a simulated result. | 2026-05-03 → 2027-08-08 (+462d) | was named ERP/Payment/Email Connectors |
| PG-003 | Pricing Page REOPENED 16/11/2026 (self-claimed done, DoD partly met): DoD 'calculator functional': pricing-calculator.tsx has no importer; the pricing page renders no calculator. | 2026-05-21 → 2028-03-05 (+654d) | was named Pricing Page |
| PG-009 | Blog Index REOPENED 16/11/2026 (self-claimed done, DoD partly met): DoD 'pagination working': blog-pagination.tsx has no importer; the blog page has no pagination. | 2026-05-31 → 2028-03-19 (+658d) | was named Blog Index |

## Version 10 (saved 2026-11-22)

Note of the change: chore(plan): clear 49 forward dependencies in sprint plan

Changed:

| ID | Task | Finish |
| --- | --- | --- |
| IFC-073 | PHASE-040: Privacy Impact Assessment | IFC-072 → none |
| PG-010 | Blog Post | PG-009,GTM-002,BRAND-001 → GTM-002,BRAND-001 |
