How a schedule from an exported table changed from version to version. A marks actual dates.

## Version 1 (saved 2026-04-12)

Note of the change: fix(ci): track sprint task JSONs, registry files, and split CSVs to pass CI gates

| ID | Task | Start | Finish |
| --- | --- | --- | --- |
| PG-016 | Sign Up | 2026-06-16 | PG-015,IFC-006 |
| PG-017 | Sign Up Success | 2026-06-18 | PG-016 |
| PG-018 | Logout | 2026-06-17 | PG-015,IFC-006 |
| PG-019 | Forgot Password | 2026-06-19 | PG-015,IFC-006 |
| PG-020 | Reset Password | 2026-06-21 | PG-019 |
| PG-021 | MFA Setup | 2026-06-20 | PG-015,IFC-006,IFC-098 |
| PG-022 | MFA Verify | 2026-02-17 | PG-021,PG-015 |
| PG-023 | Email Verification | 2026-02-19 | PG-016,IFC-006 |
| PG-024 | SSO Callback | 2026-02-20 | PG-015,IFC-006 |
| PG-025 | Billing Portal | 2026-06-28 | IFC-099,IFC-198 |
| PG-026 | Checkout | 2026-07-01 | PG-025,IFC-198 |
| PG-027 | Invoices | 2026-02-20 | PG-025,IFC-198 |
| PG-028 | Invoice Detail | 2026-02-22 | PG-027,IFC-198 |
| PG-029 | Payment Methods | 2026-02-22 | PG-025,IFC-198 |
| PG-030 | Subscriptions | 2026-02-22 | PG-025,IFC-198 |
| PG-031 | Receipts | 2026-07-08 | PG-025,IFC-198 |
| PG-032 | Docs Index | 2026-02-09 | IFC-079 |
| PG-033 | API Docs | 2026-07-14 | PG-032 |
| PG-034 | Webhooks Docs | 2026-02-23 | PG-032 |
| PG-035 | Changelog | 2026-07-18 | PG-032 |
| PG-036 | SDK Guides | 2026-02-24 | PG-032 |
| PG-037 | CLI Docs | 2026-02-25 | PG-032 |
| PG-038 | Auth Guides | 2026-02-25 | PG-032 |
| PG-039 | Dev Apps | 2026-02-23 | PG-032 |
| PG-040 | New Dev App | 2026-02-25 | PG-039 |
| PG-041 | Dev App Detail | 2026-02-24 | PG-039 |
| PG-042 | Dev App Edit | 2026-02-27 | PG-041 |
| PG-043 | Help Center Index | 2026-02-28 | IFC-076 |
| PG-044 | Help Search | 2026-03-07 | PG-043 |
| PG-045 | Help Article | 2026-03-08 | PG-043 |
| PG-046 | Support Tickets | 2026-03-02 | IFC-093 |
| PG-047 | New Ticket | 2026-03-08 | PG-046 |
| PG-048 | Ticket Detail | 2026-03-08 | PG-046 |
| PG-049 | Support Chat | 2026-10-18 | IFC-036 |
| PG-050 | Privacy Policy | 2026-08-09 | IFC-058 |
| PG-051 | Terms of Service | 2026-04-12 | PG-050 |
| PG-052 | Cookie Policy | 2026-08-12 | PG-050 |
| PG-053 | Data Processing Addendum | 2026-08-13 | PG-050 |
| PG-054 | Acceptable Use Policy | 2026-08-15 | PG-050 |
| PG-055 | 404 Not Found | 2026-08-16 | IFC-076 |
| PG-056 | 500 Error | 2026-08-17 | PG-055 |
| PG-057 | Maintenance | 2026-08-18 | PG-055 |
| PG-058 | Dashboard | 2026-08-23 | IFC-089,IFC-091,IFC-095 |
| PG-059 | Leads List | 2026-08-25 | IFC-089 |
| PG-060 | New Lead | 2026-08-27 | PG-059 |
| PG-061 | Lead Detail | 2026-08-28 | PG-059 |
| PG-062 | Edit Lead | 2026-08-30 | PG-061 |
| PG-063 | Import Leads | 2026-09-01 | PG-059 |
| PG-064 | Contacts List | 2026-09-06 | IFC-089 |
| PG-065 | Contact 360 | 2026-09-08 | IFC-090 |
| PG-066 | Edit Contact | 2026-09-10 | PG-065 |
| PG-067 | Import Contacts | 2026-09-11 | PG-064 |
| PG-068 | Merge Contacts | 2026-09-13 | PG-064 |
| PG-069 | Accounts List | 2026-09-14 | IFC-089 |
| PG-070 | Account Detail | 2026-09-20 | PG-069 |
| PG-071 | Edit Account | 2026-09-22 | PG-070 |
| PG-072 | Import Accounts | 2026-09-24 | PG-069 |
| PG-073 | Opportunities List | 2026-09-26 | IFC-091 |
| PG-074 | Opportunity Detail CRITICAL: Current page is fully hardcoded with SAMPLE_DEAL and SAMPLE_ACTIVITIES constants - zero API calls. Must: (1) Replace with api.opportunity.getById query (IFC-186 router already built with moveStage getHistory getProducts getPipeline endpoints). (2) Wire all 6 action buttons: Won/Lost to updateStage mutations with stage dialog Edit to navigate to edit form Clone to duplicate mutation Archive to set archived Delete to AlertDialog + delete mutation. (3) Add real activity timeline via ActivityFeed component (IFC-069). (4) Wire file section to real data. (5) Remove hardcoded SAMPLE_* constants. Cross-entity patterns from Lead 360 wiring (2026-03-04) should be followed. | 2026-09-28 | PG-073 |
| PG-075 | Edit Opportunity | 2026-09-30 | PG-074 |
| PG-076 | Pipeline Board | 2026-10-04 | IFC-091 |
| PG-077 | Pipeline Stages | 2026-10-06 | PG-076 |
| PG-078 | Stage Detail | 2026-10-08 | PG-077 |
| PG-079 | Forecasts | 2026-10-10 | IFC-092 |
| PG-080 | Activities | 2026-10-12 | IFC-089 |
| PG-081 | Tasks | 2026-10-14 | PG-080 |
| PG-082 | Task Detail | 2026-10-18 | PG-081 |
| DOC-001 | Company & Product Master Brief (single source of truth) | 2025-12-14 |  |
| BRAND-001 | Visual Identity System (palette, typography, spacing, logo usage) | 2025-12-16 | DOC-001 |
| BRAND-002 | Design Tokens Integration Plan (Tailwind/shadcn theme mapping) | 2025-12-28 | BRAND-001,ENV-002-AI |

| ID | Task | Start | Finish |
| --- | --- | --- | --- |
| GTM-001 | ICP & Personas Pack (target customers, job stories, objections) | 2025-12-16 | DOC-001 |
| GTM-002 | Messaging Framework (positioning, value props, copy blocks) | 2025-12-18 | GTM-001,BRAND-001 |
| SALES-001 | Commercial Narrative + Pitch Deck Outline + One-Pager | 2025-12-28 | GTM-002,BRAND-001 |
| SALES-002 | Sales Motion Playbook (outreach sequences, discovery + demo scripts) | 2026-01-11 | SALES-001,GTM-002 |

## Version 2 (saved 2026-04-13)

Note of the change: chore(project-tracker): sprint metrics JSON updates

Added:

| ID | Task | Start | Finish |
| --- | --- | --- | --- |
| PM-OPS-001 | Project Operating Model & Delivery Playbook (cadence, WIP, ticket sizing, ABC) | 2025-12-18 | AUTOMATION-001,ENV-005-AI |

Removed: PG-016 Sign Up

Changed:

| ID | Task | Start | Finish |
| --- | --- | --- | --- |
| PG-053 | Data Processing Addendum | 2026-08-13 → 2026-04-13 (-122d) | PG-050 → PG-050,PG-051 |
| PG-057 | Maintenance | 2026-08-18 → 2026-04-13 (-127d) |  |

## Version 3 (saved 2026-04-20)

Note of the change: chore(sprint-18): project-tracker global plan and sprint-0 metrics

Changed:

| ID | Task | Start |
| --- | --- | --- |
| PG-059 | Leads List | 2026-08-25 → 2026-04-19 (-128d) |

## Version 4 (saved 2026-10-07)

Note of the change: chore(plan): settle sprint 19 completion-integrity findings

Removed: PG-017 Sign Up Success

## Version 5 (saved 2026-10-27)

Note of the change: chore(pg-203): merge origin/main into the dsar branch

Added:

| ID | Task | Start | Finish |
| --- | --- | --- | --- |
| PG-016 | Sign Up | 2026-06-16 | PG-015,IFC-006 |
| PG-017 | Sign Up Success | 2026-06-18 | PG-016 |

Removed: SALES-002 Sales Motion Playbook (outreach sequences, discovery + demo scripts); PM-OPS-001 Project Operating Model & Delivery Playbook (cadence, WIP, ticket sizing, ABC)

## Version 6 (saved 2026-11-09)

Note of the change: Merge remote-tracking branch 'origin/main' into fix/codex-review-large-diff

Added:

| ID | Task | Start | Finish |
| --- | --- | --- | --- |
| PG-015 | Sign In | 2026-06-14 | IFC-006,IFC-076,IFC-098 |

Removed: SALES-001 Commercial Narrative + Pitch Deck Outline + One-Pager

## Version 7 (saved 2026-11-13)

Note of the change: fix(status): count every queue the AI worker consumes, by name

Added:

| ID | Task | Start | Finish |
| --- | --- | --- | --- |
| PG-012 | Career Detail | 2026-06-06 | PG-011,GTM-002,BRAND-001 |
| PG-013 | Landing Page Template | 2026-06-08 | PG-001,GTM-002,BRAND-001 |
| PG-014 | Status Page | 2026-10-06 | PG-001,GTM-002,BRAND-001 |

Removed: BRAND-002 Design Tokens Integration Plan (Tailwind/shadcn theme mapping); GTM-001 ICP & Personas Pack (target customers, job stories, objections); GTM-002 Messaging Framework (positioning, value props, copy blocks)

## Version 8 (saved 2026-11-16)

Note of the change: chore(plan): reopen 29 self-claimed tasks whose definition of done is partly met

Added:

| ID | Task | Start | Finish |
| --- | --- | --- | --- |
| BRAND-002 | Design Tokens Integration Plan (Tailwind/shadcn theme mapping) | 2025-12-28 | BRAND-001,ENV-002-AI |

Changed:

| ID | Task | Start | Other |
| --- | --- | --- | --- |
| PG-016 | Sign Up REOPENED 16/11/2026 (self-claimed done, DoD partly met): welcome-email.ts (sendWelcomeEmail) is imported nowhere outside its own file, so the welcome email is never sent. | 2026-06-16 → 2027-05-16 (+334d) | was named Sign Up |
| PG-046 | Support Tickets REOPENED 16/11/2026 (self-claimed done, DoD partly met): DoD artifact sla-display.tsx is not imported; the ticket list renders without SLA. | 2026-03-02 → 2028-03-19 (+748d) | was named Support Tickets |
| PG-049 | Support Chat | 2026-10-18 → 2027-07-11 (+266d) |  |
| PG-066 | Edit Contact | 2026-09-10 → 2027-01-10 (+122d) |  |
| PG-067 | Import Contacts | 2026-09-11 → 2027-01-10 (+121d) |  |
| PG-068 | Merge Contacts | 2026-09-13 → 2027-01-24 (+133d) |  |
| PG-070 | Account Detail | 2026-09-20 → 2027-01-24 (+126d) |  |
| PG-071 | Edit Account | 2026-09-22 → 2027-02-07 (+138d) |  |
| PG-072 | Import Accounts | 2026-09-24 → 2027-01-24 (+122d) |  |
| PG-073 | Opportunities List: the /deals list view (DealListView), with the pipeline board at /deals?view=pipeline. Delivered by PG-135 and IFC-287. | 2026-09-26 → 2026-11-16 (+51d) | was named Opportunities List |
| PG-074 | Opportunity Detail: finish the four actions on /deals/[id] that still show a 'Coming soon' toast: Clone deal, Archive deal, Add product and File upload. The page already loads real data (api.opportunity.getById, IFC-278), and Won, Lost, Edit and Delete work (IFC-280). | 2026-09-28 → 2027-02-21 (+146d) | was named Opportunity Detail CRITICAL: Current page is fully hardcoded with SAMPLE_DEAL and SAMPLE_ACTIVITIES constants - zero API calls. Must: (1) Replace with api.opportunity.getById query (IFC-186 router already built with moveStage getHistory getProducts getPipeline endpoints). (2) Wire all 6 action buttons: Won/Lost to updateStage mutations with stage dialog Edit to navigate to edit form Clone to duplicate mutation Archive to set archived Delete to AlertDialog + delete mutation. (3) Add real activity timeline via ActivityFeed component (IFC-069). (4) Wire file section to real data. (5) Remove hardcoded SAMPLE_* constants. Cross-entity patterns from Lead 360 wiring (2026-03-04) should be followed. |
| PG-075 | Edit Opportunity | 2026-09-30 → 2027-03-07 (+158d) |  |
| PG-076 | Pipeline Board: the /deals?view=pipeline kanban. Deals drag between stages (@dnd-kit, opportunity.moveStage), columns show stage value totals, filters apply. Delivered by PG-135 and IFC-091. | 2026-10-04 → 2026-11-16 (+43d) | was named Pipeline Board |
| PG-077 | Pipeline stage insights: show each stage's conversion rate to the next stage and the average time deals spend in it on the /deals pipeline. Stage configuration already exists at /settings/pipeline (IFC-063); /deals/deal-stages redirects to deal settings. | 2026-10-06 → 2027-05-30 (+236d) | was named Pipeline Stages |
| PG-078 | Stage Detail | 2026-10-08 → 2027-06-13 (+248d) |  |
| PG-079 | Forecasts | 2026-10-10 → 2027-05-30 (+232d) |  |
| PG-080 | Activities | 2026-10-12 → 2027-05-30 (+230d) |  |
| PG-081 | Tasks | 2026-10-14 → 2027-06-13 (+242d) |  |
| PG-082 | Task Detail | 2026-10-18 → 2027-07-11 (+266d) |  |

## Version 9 (saved 2026-11-27)

Note of the change: Merge remote-tracking branch 'origin/main' into chore/ifc-319-otel-sdk-3

Changed:

| ID | Task | Finish |
| --- | --- | --- |
| PG-017 | Sign Up Success | PG-016 → none |
| PG-023 | Email Verification | PG-016,IFC-006 → IFC-006 |
| PG-025 | Billing Portal | IFC-099,IFC-198 → IFC-198 |
| PG-047 | New Ticket | PG-046 → none |
| PG-048 | Ticket Detail | PG-046 → none |
