How a schedule from an exported table changed from version to version. A marks actual dates.

## Version 1 (saved 2026-04-12)

Note of the change: fix(ci): track sprint task JSONs, registry files, and split CSVs to pass CI gates

| ID | Task | Start | Finish |
| --- | --- | --- | --- |
| PM-OPS-001 | Project Operating Model & Delivery Playbook (cadence, WIP, ticket sizing, ABC) | 2025-12-18 | AUTOMATION-001,ENV-005-AI |
| ENG-OPS-001 | Engineering Playbook (SDLC, PR rules, quality gates, release/rollback) | 2025-12-18 | ENV-002-AI,ENV-005-AI,ENV-010-AI |
| GOV-001 | Architecture Governance Pack (ADR + ARP templates, decision workflow, flowcharts) | 2025-12-28 | ENG-OPS-001 |
| ANALYTICS-001 | Customer Segmentation Spec (RFM + ABC) + Event Taxonomy | 2025-12-19 | DOC-001,GTM-001 |
| PG-083 | Calendar | 2026-10-20 | PG-080 |
| PG-084 | Emails Cross-entity scope: wire EmailCompose component (from PG-141) into Lead and Contact detail page Compose buttons. Pre-fill recipient with entity email. Replace activity-derived email list with real email integration data. | 2026-10-22 | IFC-099,IFC-144 |
| PG-085 | Email Templates | 2026-10-24 | PG-084,IFC-144 |
| PG-086 | SMS Templates | 2026-10-26 | PG-085,IFC-144 |
| PG-087 | Calls | 2026-10-28 | IFC-099,IFC-144 |
| PG-088 | Notes | 2026-11-01 | PG-080 |
| PG-089 | Files Cross-entity scope: also wire file upload/download handlers on Lead detail (upload btn download btn) Contact detail (document section) and Deal detail (files section). Reuse upload/download infrastructure across all entity detail pages. | 2026-11-03 | IFC-094 |
| PG-090 | File Detail | 2026-11-05 | PG-089 |
| PG-091 | Products | 2026-11-07 | IFC-089 |
| PG-092 | Product Detail | 2026-11-09 | PG-091 |
| PG-093 | Price Books | 2026-11-10 | PG-091 |
| PG-094 | Price Book Detail | 2026-11-15 | PG-093 |
| PG-095 | Quotes | 2026-11-17 | PG-093 |
| PG-096 | New Quote | 2026-11-19 | PG-095 |
| PG-097 | Quote Detail | 2026-11-21 | PG-095 |
| PG-098 | Edit Quote | 2026-11-23 | PG-097 |
| PG-099 | Orders | 2026-11-24 | PG-095 |
| PG-100 | Order Detail | 2026-11-29 | PG-099 |
| PG-101 | Reports | 2026-11-30 | IFC-096 |
| PG-102 | Custom Reports | 2026-12-02 | IFC-096 |
| PG-103 | Report Schedules | 2026-12-06 | PG-102 |
| PG-104 | Settings Home | 2026-06-21 | IFC-076 |
| PG-105 | Profile Settings | 2026-12-10 | PG-104 |
| PG-106 | Account Settings | 2026-12-13 | PG-104 |
| PG-107 | Organization Settings | 2026-12-15 | PG-104 |
| PG-108 | Users | 2026-12-16 | IFC-098,IFC-201 |
| PG-109 | Roles | 2026-12-18 | IFC-098,IFC-201 |
| PG-110 | Permissions | 2026-12-20 | PG-109,IFC-201 |
| PG-111 | Teams | 2026-12-22 | PG-108,IFC-201 |
| PG-112 | Audit Log | 2026-12-27 | IFC-098,IFC-124,IFC-201 |
| PG-113 | API Keys | 2026-12-29 | PG-104 |
| PG-114 | Webhooks | 2026-12-31 | IFC-099,IFC-201 |
| PG-115 | Integrations | 2027-01-02 | IFC-099,IFC-201 |
| PG-116 | Notifications | 2027-01-04 | PG-104 |
| PG-117 | Localization | 2027-01-06 | PG-104 |
| PG-118 | Data Retention | 2027-01-10 | IFC-058 |
| PG-119 | Compliance | 2027-01-12 | IFC-058 |
| PG-120 | Security | 2027-01-14 | IFC-072,IFC-201 |
| PG-121 | Import/Export | 2027-01-16 | IFC-070 |
| PG-122 | Privacy Export | 2027-01-17 | IFC-058 |
| PG-123 | Privacy Delete | 2027-01-18 | IFC-058 |
| IFC-101 | PHASE-039: Lead Aggregate and Value Objects | 2026-01-11 | IFC-002 |
| IFC-102 | PHASE-039: Contact Aggregate and Value Objects | 2026-01-13 | IFC-002 |
| IFC-103 | PHASE-039: Account Aggregate and Value Objects | 2026-01-15 | IFC-002 |
| IFC-104 | PHASE-039: Opportunity Aggregate and Value Objects | 2026-01-25 | IFC-002 |
| IFC-105 | PHASE-039: Task Aggregate and Value Objects | 2026-01-27 | IFC-002 |
| IFC-106 | PHASE-039: Define Hexagonal module boundaries + create canonical packages/application + packages/adapters skeleton | 2025-12-28 | IFC-002 |
| IFC-107 | PHASE-039: Implement Repositories and Factories | 2026-01-29 | IFC-101,IFC-102,IFC-103,IFC-104,IFC-105 |
| IFC-108 | Implement Domain Services & Business Logic | 2026-02-08 | IFC-107 |
| IFC-109 | Define TDD Process, Coverage & Review Checklist | 2026-01-11 | IFC-002 |
| IFC-110 | Write Unit & Integration Tests for Domain Entities | 2026-02-10 | IFC-101,IFC-102,IFC-103,IFC-104,IFC-105 |
| IFC-111 | Set up SonarQube and integrate static analysis into CI/CD | 2026-02-22 | ENV-005-AI |
| IFC-112 | Implement blue/green deployment and rollback strategy | 2026-02-24 | ENV-005-AI |
| IFC-113 | Implement secrets management and encryption at rest and in transit | 2026-05-03 | IFC-072,IFC-098 |
| IFC-114 | Implement API rate limiting and DDoS protection | 2026-03-22 | IFC-003,IFC-072 |
| IFC-115 | Setup backups and disaster recovery plan | 2026-11-29 | IFC-071 |
| IFC-116 | Instrument application with OpenTelemetry, unify logs, metrics and traces | 2026-04-19 | IFC-074 |
| IFC-117 | Monitor AI models for drift, latency, hallucination and ROI | 2026-05-05 | IFC-005,AUTOMATION-002 |
| IFC-118 | Establish and maintain a risk register with mitigation actions | 2026-04-05 | IFC-010,IFC-054 |
| IFC-119 | Define recurring backlog refinement, sprint planning, review and retrospective ceremonies | 2025-12-28 |  |
| IFC-120 | Implement password reset and email verification flows | 2026-02-20 | PG-019,PG-020,PG-023,IFC-006 |
| PG-124 | Implement SSO (SAML/OAuth) and social login providers | 2026-07-12 | PG-015,PG-024,IFC-006 |
| PG-125 | Add MFA using TOTP or SMS and allow users to enable/disable from security settings | 2026-03-08 | PG-021,PG-022,IFC-006 |
| IFC-121 | Schedule periodic secret rotation and dependency vulnerability updates | 2026-05-07 | IFC-113 |
| IFC-122 | Implement circuit breaker and retry policies for external service calls | 2026-03-24 | IFC-106,IFC-107 |
| IFC-123 | Design caching strategy (Redis/CDN) and tune Prisma queries | 2026-10-04 | IFC-007,IFC-087 |

## Version 2 (saved 2026-04-13)

Note of the change: chore(project-tracker): sprint metrics JSON updates

Added:

| ID | Task | Start | Finish |
| --- | --- | --- | --- |
| IFC-124 | Encrypt and aggregate audit logs; automate compliance reporting | 2026-04-21 | IFC-098 |

Removed: PM-OPS-001 Project Operating Model & Delivery Playbook (cadence, WIP, ticket sizing, ABC)

## Version 3 (saved 2026-06-08)

Note of the change: feat(auth): complete + enable branded GoTrue security emails (issue #350)

Changed:

| ID | Task | Other |
| --- | --- | --- |
| PG-085 | Email Templates (all auth/notification/in-app surfaces; findings: git issue #350 + debt EMAIL-BRAND-001/SEC-AUTH-NOTIF-001) | was named Email Templates |

## Version 4 (saved 2026-10-06)

Note of the change: chore(plan): dated exemption for the 14 reopened tasks; schedule them by 2026-10-11

Changed:

| ID | Task | Start |
| --- | --- | --- |
| IFC-116 | Instrument application with OpenTelemetry, unify logs, metrics and traces | 2026-04-19 → 2026-10-06 (+170d) |
| IFC-117 | Monitor AI models for drift, latency, hallucination and ROI | 2026-05-05 → 2026-10-06 (+154d) |

## Version 5 (saved 2026-10-23)

Note of the change: feat(email): user mailboxes, bounce reading and email settings (pg-207) (#983)

Changed:

| ID | Task | Other |
| --- | --- | --- |
| PG-084 | Emails Cross-entity scope: wire EmailCompose component (from PG-141) into Lead and Contact detail page Compose buttons. Pre-fill recipient with entity email. Replace activity-derived email list with real email integration data. Re-scoped 2026-10-21 (Category B; PG-207 owner ruling Q10): sending through the user's own Gmail/Outlook/SMTP mailbox is delivered by PG-207 (ADR-085 dispatchUserMail) so this task keeps the entity-page Compose wiring and the real email list. | was named Emails Cross-entity scope: wire EmailCompose component (from PG-141) into Lead and Contact detail page Compose buttons. Pre-fill recipient with entity email. Replace activity-derived email list with real email integration data. |

## Version 6 (saved 2026-10-25)

Note of the change: test(ai-worker): prove the declared ai instruments are what the recorders emit

Removed: IFC-124 Encrypt and aggregate audit logs; automate compliance reporting

## Version 7 (saved 2026-10-29)

Note of the change: chore(ifc-117): track the delivered monitoring files on the sprint plan row

Added:

| ID | Task | Start | Finish |
| --- | --- | --- | --- |
| SALES-002 | Sales Motion Playbook (outreach sequences, discovery + demo scripts) | 2026-01-11 | SALES-001,GTM-002 |
| PM-OPS-001 | Project Operating Model & Delivery Playbook (cadence, WIP, ticket sizing, ABC) | 2025-12-18 | AUTOMATION-001,ENV-005-AI |

Removed: IFC-121 Schedule periodic secret rotation and dependency vulnerability updates; IFC-122 Implement circuit breaker and retry policies for external service calls; IFC-123 Design caching strategy (Redis/CDN) and tune Prisma queries

## Version 8 (saved 2026-11-10)

Note of the change: Merge remote-tracking branch 'origin/main' into fix/ui-1222-app-wide

Added:

| ID | Task | Start | Finish |
| --- | --- | --- | --- |
| SALES-001 | Commercial Narrative + Pitch Deck Outline + One-Pager | 2025-12-28 | GTM-002,BRAND-001 |

Removed: PG-125 Add MFA using TOTP or SMS and allow users to enable/disable from security settings

## Version 9 (saved 2026-11-12)

Note of the change: Merge remote-tracking branch 'origin/main' into feat/ifc-097-worker-consumer-spans

Added:

| ID | Task | Start | Finish |
| --- | --- | --- | --- |
| GTM-002 | Messaging Framework (positioning, value props, copy blocks) | 2025-12-18 | GTM-001,BRAND-001 |

Removed: PG-124 Implement SSO (SAML/OAuth) and social login providers

## Version 10 (saved 2026-11-13)

Note of the change: Merge remote-tracking branch 'origin/main' into chore/ifc-056-lane-playbook-dod

Added:

| ID | Task | Start | Finish |
| --- | --- | --- | --- |
| GTM-001 | ICP & Personas Pack (target customers, job stories, objections) | 2025-12-16 | DOC-001 |

Removed: IFC-120 Implement password reset and email verification flows

## Version 11 (saved 2026-11-16)

Note of the change: chore(plan): reopen 29 self-claimed tasks whose definition of done is partly met

Changed:

| ID | Task | Start | Other |
| --- | --- | --- | --- |
| SALES-001 | Commercial Narrative + Pitch Deck Outline + One-Pager | 2025-12-28 → 2026-11-15 (+322d) |  |
| PG-083 | Calendar | 2026-10-20 → 2027-07-11 (+264d) |  |
| PG-084 | Emails Cross-entity scope: wire EmailCompose component (from PG-141) into Lead and Contact detail page Compose buttons. Pre-fill recipient with entity email. Replace activity-derived email list with real email integration data. Re-scoped 2026-10-21 (Category B; PG-207 owner ruling Q10): sending through the user's own Gmail/Outlook/SMTP mailbox is delivered by PG-207 (ADR-085 dispatchUserMail) so this task keeps the entity-page Compose wiring and the real email list. | 2026-10-22 → 2026-11-15 (+24d) |  |
| PG-085 | Email Templates (all auth/notification/in-app surfaces; findings: git issue #350 + debt EMAIL-BRAND-001/SEC-AUTH-NOTIF-001) | 2026-10-24 → 2027-07-25 (+274d) |  |
| PG-086 | SMS Templates | 2026-10-26 → 2027-08-08 (+286d) |  |
| PG-087 | Calls | 2026-10-28 → 2028-03-19 (+508d) |  |
| PG-088 | Notes | 2026-11-01 → 2027-08-22 (+294d) |  |
| PG-089 | Files Cross-entity scope: also wire file upload/download handlers on Lead detail (upload btn download btn) Contact detail (document section) and Deal detail (files section). Reuse upload/download infrastructure across all entity detail pages. | 2026-11-03 → 2028-04-02 (+516d) |  |
| PG-090 | File Detail | 2026-11-05 → 2028-04-02 (+514d) |  |
| PG-091 | Products | 2026-11-07 → 2027-08-22 (+288d) |  |
| PG-092 | Product Detail | 2026-11-09 → 2027-09-05 (+300d) |  |
| PG-093 | Price Books | 2026-11-10 → 2027-09-05 (+299d) |  |
| PG-094 | Price Book Detail | 2026-11-15 → 2027-09-19 (+308d) |  |
| PG-095 | Quotes | 2026-11-17 → 2027-10-03 (+320d) |  |
| PG-096 | New Quote | 2026-11-19 → 2027-10-17 (+332d) |  |
| PG-097 | Quote Detail | 2026-11-21 → 2027-10-17 (+330d) |  |
| PG-098 | Edit Quote | 2026-11-23 → 2027-10-31 (+342d) |  |
| PG-099 | Orders | 2026-11-24 → 2027-10-17 (+327d) |  |
| PG-100 | Order Detail | 2026-11-29 → 2027-10-31 (+336d) |  |
| PG-101 | Reports | 2026-11-30 → 2027-11-14 (+349d) |  |
| PG-102 | Custom Reports | 2026-12-02 → 2027-11-14 (+347d) |  |
| PG-103 | Report Schedules | 2026-12-06 → 2027-11-28 (+357d) |  |
| PG-105 | Profile Settings | 2026-12-10 → 2027-11-14 (+339d) |  |
| PG-106 | Account Settings | 2026-12-13 → 2027-12-12 (+364d) |  |
| PG-107 | Organization Settings | 2026-12-15 → 2027-12-12 (+362d) |  |
| PG-108 | Users | 2026-12-16 → 2027-12-12 (+361d) |  |
| PG-109 | Roles | 2026-12-18 → 2027-12-26 (+373d) |  |
| PG-110 | Permissions | 2026-12-20 → 2028-01-09 (+385d) |  |
| PG-111 | Teams | 2026-12-22 → 2027-12-26 (+369d) |  |
| PG-112 | Audit Log | 2026-12-27 → 2028-01-09 (+378d) |  |
| PG-113 | API Keys | 2026-12-29 → 2028-01-09 (+376d) |  |
| PG-114 | Webhooks | 2026-12-31 → 2028-01-23 (+388d) |  |
| PG-115 | Integrations | 2027-01-02 → 2028-01-23 (+386d) |  |
| PG-116 | Notifications | 2027-01-04 → 2028-01-23 (+384d) |  |
| PG-117 | Localization | 2027-01-06 → 2028-02-06 (+396d) |  |
| PG-118 | Data Retention | 2027-01-10 → 2028-02-06 (+392d) |  |
| PG-119 | Compliance | 2027-01-12 → 2028-02-06 (+390d) |  |
| PG-120 | Security | 2027-01-14 → 2028-02-20 (+402d) |  |
| PG-121 | Import/Export | 2027-01-16 → 2028-02-20 (+400d) |  |
| PG-122 | Privacy Export | 2027-01-17 → 2028-02-20 (+399d) |  |
| PG-123 | Privacy Delete | 2027-01-18 → 2028-03-05 (+412d) |  |
| IFC-112 | Implement blue/green deployment and rollback strategy REOPENED 16/11/2026 (self-claimed done, DoD partly met): DoD 'blue/green deployment pipeline configured': only vercel-rollback.yml and blue-green-metrics.csv; no blue/green pipeline. | 2026-02-24 → 2027-07-11 (+502d) | was named Implement blue/green deployment and rollback strategy |
| IFC-113 | Implement secrets management and encryption at rest and in transit REOPENED 16/11/2026 (self-claimed done, DoD partly met): vault-config.yaml describes a dev Vault server at a loopback address, so 'secrets stored in vault' is not shown for production. | 2026-05-03 → 2027-08-22 (+476d) | was named Implement secrets management and encryption at rest and in transit |
| IFC-114 | Implement API rate limiting and DDoS protection REOPENED 16/11/2026 (self-claimed done, DoD partly met): DoD 'WAF configured for DDoS': no WAF/DDoS configuration in infra/, .github/ or vercel.json. | 2026-03-22 → 2027-05-16 (+420d) | was named Implement API rate limiting and DDoS protection |
| IFC-115 | Setup backups and disaster recovery plan | 2026-11-29 → 2027-03-21 (+112d) |  |

## Version 12 (saved 2026-11-21)

Note of the change: Merge remote-tracking branch 'origin/main' into feat/ifc-320-whatsapp-seam

Changed:

| ID | Task | Finish |
| --- | --- | --- |
| PG-084 | Emails Cross-entity scope: wire EmailCompose component (from PG-141) into Lead and Contact detail page Compose buttons. Pre-fill recipient with entity email. Replace activity-derived email list with real email integration data. Re-scoped 2026-10-21 (Category B; PG-207 owner ruling Q10): sending through the user's own Gmail/Outlook/SMTP mailbox is delivered by PG-207 (ADR-085 dispatchUserMail) so this task keeps the entity-page Compose wiring and the real email list. | IFC-099,IFC-144 → PG-207 |

## Version 13 (saved 2026-11-27)

Note of the change: Merge remote-tracking branch 'origin/main' into fix/pg-014-status-page-real-data

Changed:

| ID | Task | Finish |
| --- | --- | --- |
| SALES-002 | Sales Motion Playbook (outreach sequences, discovery + demo scripts) | SALES-001,GTM-002 → GTM-002 |
| IFC-115 | Setup backups and disaster recovery plan | IFC-071 → none |
