How a schedule from an exported table changed from version to version. A marks actual dates.

## Version 1 (saved 2026-04-12)

Note of the change: fix(ci): track sprint task JSONs, registry files, and split CSVs to pass CI gates

| ID | Task | Start | Finish |
| --- | --- | --- | --- |
| IFC-124 | Encrypt and aggregate audit logs; automate compliance reporting | 2026-04-21 | IFC-098 |
| PG-126 | Add in‑app onboarding, guided product tours and feedback collection | 2026-08-09 | PG-001,PG-002 |
| PG-127 | Partner Application Workflow - Dedicated partner application form with specialized fields, routing, and onboarding process | 2026-09-20 | PG-006,PG-005,GTM-002 |
| IFC-125 | Implement guardrails for prompt injection, data leakage, and monitor AI bias | 2026-05-17 | IFC-005,IFC-008 |
| IFC-126 | Continuously maintain ADR registry and developer guide updates | 2026-05-31 | IFC-100,GOV-001 |
| IFC-127 | Implement tenant isolation at database and application layers | 2026-05-03 | IFC-098,IFC-072 |
| IFC-128 | Establish AI output review and manual fallback processes | 2026-01-25 | ENV-017-AI |
| IFC-129 | Write UI and contract tests for core pages and tRPC endpoints | 2026-03-08 | IFC-110 |
| IFC-130 | Release governance: staging auto-deploy, promotion policy, quality/security gates, rollback criteria | 2026-02-26 | ENV-005-AI,IFC-111 |
| IFC-131 | Architecture boundary enforcement: domain/infrastructure dependency rules + architecture tests in CI | 2026-02-12 | IFC-106 |
| IFC-132 | Supply chain security: dependency pinning + SBOM generation in CI (npm/pnpm + container) | 2026-03-10 | ENV-005-AI |
| IFC-133 | Supply chain security: artifact signing + provenance for build outputs (images + releases) | 2026-03-26 | IFC-132 |
| IFC-134 | Container/image scanning in CI and registry with fail-on-critical policy | 2026-03-28 | ENV-003-AI,ENV-005-AI |
| IFC-135 | Create ADR pack for multi-tenancy; workflow engine choice; agent tool-calling; data classification & retention; audit logging | 2025-12-30 | IFC-002,GOV-001 |
| IFC-136 | Implement Case/Matter aggregate root with tasks; deadlines; parties; lawyer assignments | 2026-01-25 | IFC-002,IFC-003 |
| IFC-137 | Develop Appointment aggregate with conflict detection; buffers; recurrence; linkage to cases and calendars | 2026-02-14 | IFC-136,IFC-003 |
| IFC-138 | Integrate external calendar providers (Google/Microsoft) with bidirectional sync; webhook handling; idempotency; reconciliation | 2026-02-22 | IFC-137,IFC-106 |
| IFC-139 | Expose application services as agent tools and implement human approval flows with preview and rollback for high-risk actions | 2026-03-08 | IFC-136,IFC-137,IFC-003,IFC-128 |
| IFC-140 | Implement data governance workflows: DSAR requests; retention & legal hold policies; tenant-specific encryption key management; data residency compliance | 2026-05-17 | IFC-098,IFC-127 |
| IFC-141 | Evaluate n8n; custom engine; and Temporal; document decision via ADR; build event-driven minimal rules engine and integrate selected workflow engine | 2026-05-03 | IFC-136,IFC-137,IFC-135,IFC-150,IFC-151 |
| IFC-142 | Define SLOs/SLIs and alerting; establish on-call and incident management process; conduct restore drills; create capacity and cost budgets for AI inference and search | 2026-04-05 | ENV-008-AI |
| IFC-143 | Perform threat modeling and abuse-case analysis for multi-tenancy and agent tool-calling; design mitigations; schedule penetration test; implement cookie consent mechanism | 2026-05-17 | IFC-125,IFC-136,IFC-139 |
| IFC-144 | Design and implement inbound/outbound email flows: SPF/DKIM/DMARC; inbound parsing; attachments; implement general webhook handling with idempotency and retries; publish public API specification (OpenAPI) with versioning; baseline inbound email feature delivered | 2026-05-05 | IFC-137,IFC-003,IFC-150,IFC-151,IFC-106 |
| IFC-145 | Plan and execute legacy system migration: discover and map data; assess data quality; design migration scripts; run rehearsals and reconciliation reporting; finalize cutover with rollback plan | 2026-04-19 | IFC-002,IFC-136 |
| IFC-146 | Define PRD and user journey templates; create Definition of Ready criteria; develop traceability matrix linking capabilities to domain services; APIs; UIs; and tests | 2026-01-11 | IFC-000,ENV-018-AI |
| IFC-147 | Develop Case timeline UI with deadline engine: display tasks; deadlines; events; implement deadline engine to compute legal deadlines and reminders; integrate with scheduling | 2026-02-22 | IFC-136,IFC-137 |
| IFC-148 | Implement conversation record entity: store chat transcripts; tool calls; actions per case; enable search and retrieval; integrate audit logging and data retention policies | 2026-05-31 | IFC-139,IFC-126 |
| IFC-149 | Implement action preview and rollback UI for agent-initiated changes; integrated with approval flows | 2026-03-08 | IFC-139,IFC-147 |
| EXC-SEC-001 | Implement Secrets Management (e.g., HashiCorp Vault) for API Keys (OpenAI, etc.). | 2025-12-14 | ENV-013-AI |
| IFC-150 | Domain events infrastructure: event contracts + versioning + outbox pattern + idempotent publishing | 2026-04-05 | IFC-002,IFC-106,IFC-098 |
| IFC-151 | Event consumers framework: retries + DLQ + backoff + observability; standard webhook/idempotency utilities | 2026-04-19 | IFC-150,ENV-008-AI |
| IFC-152 | Case document model: storage metadata, versioning, ACL mapping (tenant + case + role), and audit hooks | 2026-05-17 | IFC-136,IFC-127 |
| IFC-153 | Ingestion pipeline for case files: upload/email attachment intake, antivirus scan, metadata extraction, storage, and indexing triggers | 2026-05-31 | IFC-152,IFC-144,IFC-151,IFC-106 |
| IFC-154 | OCR + text extraction worker for scanned PDFs/images; normalized text artifacts stored for search and RAG | 2026-06-01 | IFC-153 |
| IFC-155 | Permissioned indexing for case documents and notes: full-text + embeddings with tenant/case ACL filters | 2026-06-02 | IFC-154,IFC-127,ENV-004-AI |
| IFC-156 | Case RAG tool: agent retrieval tool constrained by tenant/case permissions; citations + source trace; prompt-injection hardening for retrieved content | 2026-06-14 | IFC-155,IFC-139,IFC-125 |
| IFC-157 | Notification service MVP: unified delivery (in-app + email) with preference model (backend), templates, and audit logging | 2026-05-19 | IFC-144,IFC-098,IFC-151 |
| IFC-158 | Scheduling communications: ICS invites, reschedule/cancel flows, reminders; integrated with notification service and calendar sync | 2026-05-21 | IFC-138,IFC-157,IFC-137 |
| IFC-159 | Case timeline enrichment: include documents/versions, communications (email/WhatsApp), and agent actions/approvals as timeline events | 2026-06-14 | IFC-147,IFC-153,IFC-144,IFC-149,IFC-148 |
| IFC-160 | Artifact path conventions + CI lint to prevent repo drift | 2025-12-18 | ENV-001-AI,ENV-002-AI |
| IFC-163 | Standardize worker runtime under apps/workers (events, ingestion, notifications) with shared job framework, metrics, and deployment packaging | 2026-06-16 | IFC-150,IFC-151,IFC-153,IFC-157,IFC-106 |
| EXP-PLATFORM-001 | Platform utilities package - feature flags, resilience patterns, job queues, workflow orchestration | 2026-05-31 | ENV-001-AI |
| EXP-SCRIPTS-001 | Utility scripts - task data cleanup, schema fixes, dev monitoring | 2026-06-01 | EXC-INIT-001 |
| EXP-ARTIFACTS-002 | Cookie Consent Component Implementation (GDPR) | 2026-06-28 |  |
| EXP-ARTIFACTS-003 | Vulnerability Baseline Documentation | 2026-06-30 |  |
| EXP-REPORTS-001 | Project Status & Tracking Reports (Continuous) | 2025-12-14 |  |
| EXP-REPORTS-002 | Technical Debt & Quality Tracking (Continuous) | 2025-12-14 |  |
| EXP-REPORTS-003 | Risk Management & Compliance Tracking | 2025-12-14 |  |
| EXP-REPORTS-004 | Sprint Audit System (Continuous) | 2025-12-14 |  |
| EXP-REPORTS-005 | Build & Validation Reports (Continuous) | 2025-12-14 |  |
| TRACK-001 | Status Snapshot UI - Real-time task status tracking with manual refresh button | 2026-06-28 | EXP-REPORTS-001 |
| TRACK-002 | Quality Metrics UI - Debt ledger coverage SonarQube with refresh buttons | 2026-02-22 | EXP-REPORTS-002,IFC-088 |
| TRACK-003 | Risk Register UI - View and update risks with mitigation tracking | 2026-02-22 | EXP-REPORTS-003,IFC-118 |
| TRACK-004 | AI Metrics UI - Model performance drift detection cost tracking | 2026-02-22 | IFC-117,AUTOMATION-002 |
| TRACK-005 | Security Dashboard UI - Vulnerability tracking scan results security posture | 2026-02-22 | EXC-SEC-001,IFC-121 |
| TRACK-006 | Build Health UI - Validation results build status test results | 2026-07-05 | EXP-REPORTS-005,ENV-005-AI |
| IFC-164 | Ollama Local Development - Real Integration & Benchmarks | 2026-09-20 | IFC-005,IFC-086,IFC-095 |
| IFC-165 | Performance Baseline - Real Benchmarks with Live Infrastructure | 2026-09-22 | ENV-015-AI,IFC-003,ENV-005-AI |
| IFC-166 | NBA Demo Video Recording | 2026-11-15 | IFC-039 |
| IFC-175 | RAG Production Validation - Follow-up to IFC-039 | 2026-11-17 | IFC-039 |
| IFC-167 | Wire workers to pnpm dev startup - Follow-up to IFC-163 | 2026-06-28 | IFC-163 |
| IFC-168 | Convert AI worker to BullMQ queue consumer - Follow-up to IFC-005/IFC-085 | 2026-06-30 | IFC-005,IFC-085,IFC-163 |
| IFC-169 | Require Supabase env vars - Follow-up to IFC-006 | 2026-05-31 | IFC-006 |
| IFC-170 | Implement Twilio SMS channel - Follow-up to IFC-157 | 2026-06-02 | IFC-157 |

## Version 2 (saved 2026-04-13)

Note of the change: chore(project-tracker): sprint metrics JSON updates

Added:

| ID | Task | Start | Finish |
| --- | --- | --- | --- |
| IFC-171 | Implement webhook notification channel - Follow-up to IFC-157 | 2026-06-04 | IFC-157 |
| IFC-172 | Complete Microsoft Calendar integration - Follow-up to IFC-138 | 2026-06-14 | IFC-138 |

Removed: IFC-124 Encrypt and aggregate audit logs; automate compliance reporting

## Version 3 (saved 2026-04-19)

Note of the change: chore(project-tracker): update metrics, sprint data, and tracker UI

Removed: IFC-172 Complete Microsoft Calendar integration - Follow-up to IFC-138

## Version 4 (saved 2026-04-26)

Note of the change: fix(ai-worker): add CaseAIInsight model and remove as-never casts (IFC-312 hotfix)

Removed: IFC-171 Implement webhook notification channel - Follow-up to IFC-157

## Version 5 (saved 2026-10-05)

Note of the change: fix(docs): remove invented people, teams and evidence hashes from the repo

Changed:

| ID | Task | Start |
| --- | --- | --- |
| IFC-142 | Define SLOs/SLIs and alerting; establish on-call and incident management process; conduct restore drills; create capacity and cost budgets for AI inference and search | 2026-04-05 → 2026-10-06 (+184d) |

## Version 6 (saved 2026-10-06)

Note of the change: Merge remote-tracking branch 'origin/main' into chore/ifc-032-close

Changed:

| ID | Task | Start |
| --- | --- | --- |
| IFC-151 | Event consumers framework: retries + DLQ + backoff + observability; standard webhook/idempotency utilities | 2026-04-19 → 2026-10-06 (+170d) |

## Version 7 (saved 2026-10-15)

Note of the change: chore(plan): commit regenerated sprint plan split files

Added:

| ID | Task | Start | Finish |
| --- | --- | --- | --- |
| IFC-171 | Implement webhook notification channel - Follow-up to IFC-157 | 2026-06-04 | IFC-157 |

## Version 8 (saved 2026-10-25)

Note of the change: chore(ifc-117): repoint the tracked artifacts to the otel monitoring files

Added:

| ID | Task | Start | Finish |
| --- | --- | --- | --- |
| IFC-124 | Encrypt and aggregate audit logs; automate compliance reporting | 2026-04-21 | IFC-098 |

Removed: IFC-170 Implement Twilio SMS channel - Follow-up to IFC-157; IFC-171 Implement webhook notification channel - Follow-up to IFC-157

## Version 9 (saved 2026-10-27)

Note of the change: feat(env-008-ai): production slos, service dashboard and railway self-healing as code (#1045)

Added:

| ID | Task | Start | Finish |
| --- | --- | --- | --- |
| IFC-122 | Implement circuit breaker and retry policies for external service calls | 2026-03-24 | IFC-106,IFC-107 |
| IFC-123 | Design caching strategy (Redis/CDN) and tune Prisma queries | 2026-10-04 | IFC-007,IFC-087 |

Removed: IFC-167 Wire workers to pnpm dev startup - Follow-up to IFC-163; IFC-168 Convert AI worker to BullMQ queue consumer - Follow-up to IFC-005/IFC-085; IFC-169 Require Supabase env vars - Follow-up to IFC-006

## Version 10 (saved 2026-11-02)

Note of the change: Merge remote-tracking branch 'origin/main' into docs/dpa-aup-draft

Added:

| ID | Task | Start | Finish |
| --- | --- | --- | --- |
| IFC-121 | Schedule periodic secret rotation and dependency vulnerability updates | 2026-05-07 | IFC-113 |

Removed: IFC-175 RAG Production Validation - Follow-up to IFC-039

## Version 11 (saved 2026-11-10)

Note of the change: Merge remote-tracking branch 'origin/main' into fix/ui-1222-app-wide

Added:

| ID | Task | Start | Finish |
| --- | --- | --- | --- |
| PG-125 | Add MFA using TOTP or SMS and allow users to enable/disable from security settings | 2026-03-08 | PG-021,PG-022,IFC-006 |

Removed: IFC-165 Performance Baseline - Real Benchmarks with Live Infrastructure; IFC-166 NBA Demo Video Recording

## Version 12 (saved 2026-11-12)

Note of the change: Merge remote-tracking branch 'origin/main' into fix/preship-kill-without-tree-flag

Added:

| ID | Task | Start | Finish |
| --- | --- | --- | --- |
| PG-124 | Implement SSO (SAML/OAuth) and social login providers | 2026-07-12 | PG-015,PG-024,IFC-006 |

Removed: IFC-164 Ollama Local Development - Real Integration & Benchmarks

## Version 13 (saved 2026-11-13)

Note of the change: fix(status): count every queue the AI worker consumes, by name

Added:

| ID | Task | Start | Finish |
| --- | --- | --- | --- |
| IFC-119 | Define recurring backlog refinement, sprint planning, review and retrospective ceremonies | 2025-12-28 |  |
| IFC-120 | Implement password reset and email verification flows | 2026-02-20 | PG-019,PG-020,PG-023,IFC-006 |

Removed: TRACK-003 Risk Register UI - View and update risks with mitigation tracking; TRACK-004 AI Metrics UI - Model performance drift detection cost tracking; TRACK-005 Security Dashboard UI - Vulnerability tracking scan results security posture; TRACK-006 Build Health UI - Validation results build status test results

## Version 14 (saved 2026-11-15)

Note of the change: Merge remote-tracking branch 'origin/main' into chore/ifc-319-otel-sdk-3

Added:

| ID | Task | Start | Finish |
| --- | --- | --- | --- |
| TRACK-003 | Risk Register UI - View and update risks with mitigation tracking | 2026-02-22 | EXP-REPORTS-003,IFC-118 |
| TRACK-004 | AI Metrics UI - Model performance drift detection cost tracking | 2026-02-22 | IFC-117,AUTOMATION-002 |

Removed: IFC-119 Define recurring backlog refinement, sprint planning, review and retrospective ceremonies

## Version 15 (saved 2026-11-16)

Note of the change: chore(plan): reopen 29 self-claimed tasks whose definition of done is partly met

Removed: TRACK-004 AI Metrics UI - Model performance drift detection cost tracking

Changed:

| ID | Task | Start | Other |
| --- | --- | --- | --- |
| IFC-123 | Design caching strategy (Redis/CDN) and tune Prisma queries | 2026-10-04 → 2027-03-07 (+154d) |  |
| PG-127 | Partner Application Workflow - Dedicated partner application form with specialized fields, routing, and onboarding process | 2026-09-20 → 2027-02-07 (+140d) |  |
| IFC-138 | Integrate external calendar providers (Google/Microsoft) with bidirectional sync; webhook handling; idempotency; reconciliation REOPENED 16/11/2026 (self-claimed done, DoD partly met): DoD 'event sync both directions with idempotency': the Google/Microsoft calendar clients are exported but nothing under apps/ or packages/application instantiates them. | 2026-02-22 → 2027-01-10 (+322d) | was named Integrate external calendar providers (Google/Microsoft) with bidirectional sync; webhook handling; idempotency; reconciliation |
| IFC-143 | Perform threat modeling and abuse-case analysis for multi-tenancy and agent tool-calling; design mitigations; schedule penetration test; implement cookie consent mechanism REOPENED 16/11/2026 (self-claimed done, DoD partly met): DoD 'penetration test executed and findings triaged': only a summary document and a scope document. | 2026-05-17 → 2027-05-30 (+378d) | was named Perform threat modeling and abuse-case analysis for multi-tenancy and agent tool-calling; design mitigations; schedule penetration test; implement cookie consent mechanism |
| IFC-144 | Design and implement inbound/outbound email flows: SPF/DKIM/DMARC; inbound parsing; attachments; implement general webhook handling with idempotency and retries; publish public API specification (OpenAPI) with versioning; baseline inbound email feature delivered REOPENED 16/11/2026 (self-claimed done, DoD partly met): DoD 'Outbound emails signed with SPF/DKIM/DMARC': dkim-signer.ts is imported by nothing except its own test. | 2026-05-05 → 2027-02-07 (+278d) | was named Design and implement inbound/outbound email flows: SPF/DKIM/DMARC; inbound parsing; attachments; implement general webhook handling with idempotency and retries; publish public API specification (OpenAPI) with versioning; baseline inbound email feature delivered |
| EXC-SEC-001 | Implement Secrets Management (e.g., HashiCorp Vault) for API Keys (OpenAI, etc.). REOPENED 16/11/2026 (self-claimed done, DoD partly met): DoD 'all API keys stored in a vault': no evidence API keys are read from Vault. | 2025-12-14 → 2027-04-18 (+490d) | was named Implement Secrets Management (e.g., HashiCorp Vault) for API Keys (OpenAI, etc.). |
| IFC-157 | Notification service MVP: unified delivery (in-app + email) with preference model (backend), templates, and audit logging REOPENED 16/11/2026 (self-claimed done, DoD partly met): DoD says all four channels must be real: RealNotificationServiceAdapter returns 'SMS not configured' and 'Push not configured'. | 2026-05-19 → 2027-07-25 (+432d) | was named Notification service MVP: unified delivery (in-app + email) with preference model (backend), templates, and audit logging |

## Version 16 (saved 2026-11-19)

Note of the change: chore(plan): link the MVP rows to the older rows they deliver

Removed: TRACK-003 Risk Register UI - View and update risks with mitigation tracking

Changed:

| ID | Task | Finish | Other |
| --- | --- | --- | --- |
| IFC-138 | Integrate external calendar providers (Google/Microsoft) with bidirectional sync; webhook handling; idempotency; reconciliation REOPENED 16/11/2026 (self-claimed done, DoD partly met): DoD 'event sync both directions with idempotency': the Google/Microsoft calendar clients are exported but nothing under apps/ or packages/application instantiates them. Google half delivered by MVP-013 (sprint 24); close that half with MVP-013's evidence. This row keeps Microsoft, webhook-driven sync under 30s, the reconcilers shared by both providers and the provider tests. | IFC-137,IFC-106 → IFC-137,IFC-106,MVP-013 | was named Integrate external calendar providers (Google/Microsoft) with bidirectional sync; webhook handling; idempotency; reconciliation REOPENED 16/11/2026 (self-claimed done, DoD partly met): DoD 'event sync both directions with idempotency': the Google/Microsoft calendar clients are exported but nothing under apps/ or packages/application instantiates them. |

## Version 17 (saved 2026-11-27)

Note of the change: chore(git): merge main, install the merge driver with --local, guard shared git config

Added:

| ID | Task | Start | Finish |
| --- | --- | --- | --- |
| TRACK-003 | Risk Register UI - View and update risks with mitigation tracking | 2026-02-22 | EXP-REPORTS-003,IFC-118 |

Changed:

| ID | Task | Finish |
| --- | --- | --- |
| IFC-121 | Schedule periodic secret rotation and dependency vulnerability updates | IFC-113 → none |
| IFC-127 | Implement tenant isolation at database and application layers | IFC-098,IFC-072 → IFC-098 |
| IFC-141 | Evaluate n8n; custom engine; and Temporal; document decision via ADR; build event-driven minimal rules engine and integrate selected workflow engine | IFC-136,IFC-137,IFC-135,IFC-150,IFC-151 → IFC-136,IFC-137,IFC-135,IFC-150 |
| IFC-142 | Define SLOs/SLIs and alerting; establish on-call and incident management process; conduct restore drills; create capacity and cost budgets for AI inference and search | ENV-008-AI → none |
| IFC-153 | Ingestion pipeline for case files: upload/email attachment intake, antivirus scan, metadata extraction, storage, and indexing triggers | IFC-152,IFC-144,IFC-151,IFC-106 → IFC-152,IFC-106 |
| IFC-158 | Scheduling communications: ICS invites, reschedule/cancel flows, reminders; integrated with notification service and calendar sync | IFC-138,IFC-157,IFC-137 → IFC-137 |
| IFC-159 | Case timeline enrichment: include documents/versions, communications (email/WhatsApp), and agent actions/approvals as timeline events | IFC-147,IFC-153,IFC-144,IFC-149,IFC-148 → IFC-147,IFC-153,IFC-149,IFC-148 |
| IFC-163 | Standardize worker runtime under apps/workers (events, ingestion, notifications) with shared job framework, metrics, and deployment packaging | IFC-150,IFC-151,IFC-153,IFC-157,IFC-106 → IFC-150,IFC-153,IFC-106 |
