How a schedule from an exported table changed from version to version. A marks actual dates.

## Version 1 (saved 2026-04-12)

Note of the change: fix(ci): track sprint task JSONs, registry files, and split CSVs to pass CI gates

| ID | Task | Start | Finish |
| --- | --- | --- | --- |
| IFC-171 | Implement webhook notification channel - Follow-up to IFC-157 | 2026-06-04 | IFC-157 |
| IFC-172 | Complete Microsoft Calendar integration - Follow-up to IFC-138 | 2026-06-14 | IFC-138 |
| IFC-173 | Complete inbound email parsing endpoint - Follow-up to IFC-144 | 2026-06-16 | IFC-144 |
| IFC-174 | Run REAL Ollama benchmarks - Follow-up to IFC-085 | 2026-07-03 | IFC-085,IFC-168 |
| PG-128 | FLOW-045: AI Chain Versioning Admin UI - Wire IFC-086 Backend | 2026-06-28 | IFC-086 |
| IFC-176 | AI Output Review - Validators Layer (Zod schemas for review inputs/outputs) | 2026-02-02 | IFC-128 |
| IFC-177 | AI Output Review - Application Layer (use cases and ports) | 2026-02-03 | IFC-176,IFC-128 |
| IFC-178 | AI Output Review - Database Schema (Prisma models) | 2026-02-03 | IFC-128 |
| IFC-179 | AI Output Review - Adapters Layer (repository implementation) | 2026-02-04 | IFC-177,IFC-178 |
| IFC-180 | AI Output Review - tRPC Router (API endpoints) | 2026-02-05 | IFC-179 |
| IFC-181 | AI Output Review - Frontend UI (review queue page) | 2026-02-07 | IFC-180,IFC-149 |
| IFC-182 | Home Page tRPC Router - Welcome summary activity feed AI insights pinned items daily goals | 2026-06-14 | IFC-003,IFC-089 |
| IFC-183 | Notifications tRPC Router - List mark read preferences real-time subscription | 2026-02-17 | IFC-003,IFC-157 |
| PG-129 | Authenticated Home Page - Welcome summary activity feed AI insights pinned items goals | 2026-06-28 | IFC-182,IFC-069,IFC-095 |
| PG-130 | Notifications Inbox Page - List mark read real-time updates filters | 2026-06-30 | IFC-183 |
| PG-131 | Deal Forecast UI Pages - Probability gauge risk factors recommendations history | 2026-02-22 | IFC-092,IFC-095 |
| PG-132 | Smart Lead Routing UI - Rules configuration assignment dashboard SLA monitoring | 2026-08-23 | IFC-030 |
| IFC-184 | Contact tRPC Router - CRUD search relationship linking timeline integration | 2026-02-04 | IFC-102,IFC-107,IFC-003 |
| IFC-185 | Account tRPC Router - CRUD hierarchy contacts opportunities activity feed | 2026-02-04 | IFC-103,IFC-107,IFC-003 |
| IFC-186 | Deal/Opportunity tRPC Router - CRUD pipeline stages probability history products | 2026-02-05 | IFC-104,IFC-107,IFC-003 |
| IFC-187 | Task tRPC Router - CRUD assignment scheduling reminders timeline integration | 2026-02-15 | IFC-105,IFC-107,IFC-003 |
| IFC-188 | Ticket Domain Entity - Aggregate with SLA priority escalation categories customer linking | 2026-02-04 | IFC-002,IFC-003 |
| IFC-189 | Ticket tRPC Router - CRUD SLA tracking escalation assignment customer portal | 2026-02-06 | IFC-188,IFC-107,IFC-003 |
| IFC-190 | Analytics tRPC Router - Sales metrics conversion funnels time series exports | 2026-07-01 | ANALYTICS-001,IFC-003,IFC-200 |
| PG-133 | Contact List & Detail Pages - Search filters relationship view activity timeline | 2026-02-22 | IFC-184 |
| PG-134 | Account List & Detail Pages - Hierarchy view contacts opportunities revenue charts | 2026-02-22 | IFC-185 |
| PG-135 | Deal Pipeline Page - Kanban board drag-drop stages value totals filtering | 2026-02-09 | IFC-186 |
| PG-136 | Task Management Page - List calendar view assignments reminders entity linking | 2026-02-09 | IFC-187 |
| PG-137 | Ticket Management Page - List detail SLA indicators escalation customer portal view | 2026-02-09 | IFC-189 |
| PG-138 | Case List & Detail Pages - Party management deadline tracking document links timeline | 2026-03-15 | IFC-136 |
| PG-139 | Appointment Scheduling Page - Calendar view conflict detection case linking reminders | 2026-03-15 | IFC-137 |
| PG-140 | Document Manager Page - Upload viewer version history ACL management search | 2026-02-19 | IFC-152,IFC-153 |
| PG-141 | Email Compose & History Page - Thread view compose attachments templates | 2026-04-01 | IFC-144 |
| PG-142 | Sentiment Analysis Dashboard at /agent-approvals/sentiment - Timeline badges trend visualization email sentiment preview |  | IFC-039,IFC-181 |
| PG-143 | Churn Risk Dashboard at /agent-approvals/churn-risk - Health scores risk indicators intervention triggers trend charts |  | IFC-095,IFC-181 |
| PG-144 | AI Search (RAG) Page at /agent-approvals/ai-search - Universal search bar AI-powered results citations source highlighting | 2026-02-16 | IFC-156,IFC-155,IFC-181 |
| PG-145 | Next Best Action Dashboard - NBA recommendations deal insights action cards success metrics Cross-entity scope: refine NextBestAction impact scoring from coarse 3-tier (HIGH/MEDIUM/LOW) to multi-factor model incorporating engagement score sentiment trend and activity recency. Apply refined scoring to NextBestActionCard on Lead and Contact detail pages. | 2026-12-15 | IFC-095 |
| PG-146 | Drift Detection Dashboard at /agent-approvals/drift - Model performance drift alerts cost tracking error rates | 2026-02-16 | IFC-117,IFC-197 |
| PG-147 | Workflow List & Status UI - Active workflows execution status step visualization logs | 2027-01-15 | IFC-028,IFC-141 |
| IFC-191 | User Timezone Support - Add timezone field to User model with preference UI and timezone-aware greeting | 2026-02-25 | IFC-182 |
| IFC-192 | Contact Activity Tracking - Add lastContactedAt field to Contact model with auto-update on interactions | 2026-02-27 | IFC-182,IFC-184 |
| IFC-193 | Activity Feed Type Registry - Enum-based mapping from AuditLogEntry.eventType to ActivityFeedType with metadata | 2026-03-08 | IFC-182 |
| IFC-194 | Router Middleware Standardization - Migrate all routers from manual getTenantId to tenantProcedure | 2026-03-10 | IFC-182,IFC-003 |
| IFC-195 | Customizable Daily Goals - Multi-type goal support (revenue calls meetings tasks custom) with user preferences | 2026-02-27 | IFC-182 |
| IFC-196 | Home Page Response Caching - Redis caching for getWelcomeSummary with event-driven invalidation |  | IFC-182,IFC-075 |
| IFC-197 | AI Monitoring tRPC Router - Expose drift detection latency metrics hallucination checks ROI tracking and agent status via tRPC endpoints | 2026-02-09 | IFC-117,IFC-125 |
| PG-148 | Lead Scoring Dashboard at /agent-approvals/lead-scoring - Score distributions model accuracy top leads factor breakdown | 2026-02-16 | IFC-005,IFC-023,IFC-181 |
| PG-149 | Experiments Dashboard at /agent-approvals/experiments - A/B test management experiment results statistical analysis variant comparison | 2026-02-16 | IFC-025,IFC-181 |
| PG-150 | AI Review History at /agent-approvals/history - Filterable history of all AI output reviews with timeline and audit trail | 2026-02-16 | IFC-181,IFC-180 |
| PG-151 | Active Agents Dashboard at /agent-approvals/agents - Agent status monitoring active sessions task assignments health indicators | 2026-02-18 | IFC-021,IFC-139,IFC-197 |
| PG-152 | Agent Logs Viewer at /agent-approvals/logs - Conversation transcripts tool call records searchable log timeline | 2026-02-17 | IFC-148,IFC-197 |
| PG-153 | Latency Monitor Dashboard at /agent-approvals/latency - SLO compliance latency percentiles chain performance phase-level monitoring | 2026-02-17 | IFC-117,IFC-197 |
| IFC-198 | Billing Domain Core - Invoice/Receipt aggregates, payment state machine, tax/refund rules | 2026-02-09 | IFC-099,IFC-107 |
| IFC-199 | Document Domain Core - lifecycle, signature state machine, ACL and retention invariants | 2026-02-16 | IFC-106,IFC-127 |
| IFC-200 | Analytics Adapter Layer - query builders and export pipeline for metrics router | 2026-02-16 | IFC-096,IFC-106 |
| IFC-201 | Settings Control Plane Foundations - domain models, adapters, and router for users/teams/roles/permissions/audit/integrations/webhooks/security | 2026-02-17 | IFC-072,IFC-098,IFC-099,IFC-106,IFC-124 |
| IFC-202 | Activity Feed Stats Endpoint - getStats aggregation with counts by type source and entity over time windows | 2026-03-10 | IFC-069 |
| IFC-203 | Activity Feed Full-Text Search - search endpoint with text query across titles descriptions and actor names | 2026-03-10 | IFC-069,IFC-155 |
| IFC-204 | Activity Feed Performance Observability - queryDurationMs tracking structured logging and latency alerting |  | IFC-069 |
| IFC-205 | Ticket Full-Text Search - add search parameter to ticketQuerySchema and TicketService for subject ticketNumber contactName searching | 2026-02-13 | IFC-189 |
| IFC-206 | Ticket Stats Enhancement - add SLA status breakdown time window filtering and sortBy sortOrder to ticket query schema | 2026-02-13 | IFC-189 |
| IFC-207 | Ticket Query Performance Tracking - add queryDurationMs to ticket list and stats endpoints using performance.now pattern from timeline router | 2026-02-14 | IFC-189 |
| PG-154 | Fix View Schedule 404 - Welcome Banner links to /calendar which does not exist | 2026-02-22 | PG-129 |
| PG-155 | Fix 6 broken Quick Action hrefs - /calls/new /emails/compose /calendar/new /tasks/new /deals/new /documents/upload all return 404 | 2026-02-19 | PG-129 |
| PG-156 | Customizable Daily Goals - settings UI + home.updateDailyGoal mutation + read from User.preferences instead of hardcoded targetValue=5000 | 2026-02-28 | PG-129 |

## Version 2 (saved 2026-04-13)

Note of the change: chore(project-tracker): sprint metrics JSON updates

Added:

| ID | Task | Start | Finish |
| --- | --- | --- | --- |
| PG-157 | Visible Pin to Home buttons on entity list items and detail page headers - not just hidden in 3-dot MoreActionsButton sheet | 2026-02-28 | PG-129 |
| PG-158 | Drag and drop pinned items reorder - backend API exists (home.reorderPinnedItems) needs @dnd-kit frontend integration | 2026-02-28 | PG-129 |

Removed: IFC-171 Implement webhook notification channel - Follow-up to IFC-157; IFC-172 Complete Microsoft Calendar integration - Follow-up to IFC-138

Changed:

| ID | Task | Start |
| --- | --- | --- |
| IFC-196 | Home Page Response Caching - Redis caching for getWelcomeSummary with event-driven invalidation | none → 2026-04-13 |

## Version 3 (saved 2026-04-19)

Note of the change: chore(project-tracker): update metrics, sprint data, and tracker UI

Added:

| ID | Task | Start | Finish |
| --- | --- | --- | --- |
| IFC-172 | Complete Microsoft Calendar integration - Follow-up to IFC-138 | 2026-06-14 | IFC-138 |

Removed: PG-158 Drag and drop pinned items reorder - backend API exists (home.reorderPinnedItems) needs @dnd-kit frontend integration

## Version 4 (saved 2026-04-26)

Note of the change: fix(ai-worker): add CaseAIInsight model and remove as-never casts (IFC-312 hotfix)

Added:

| ID | Task | Start | Finish |
| --- | --- | --- | --- |
| IFC-171 | Implement webhook notification channel - Follow-up to IFC-157 | 2026-06-04 | IFC-157 |

Removed: PG-157 Visible Pin to Home buttons on entity list items and detail page headers - not just hidden in 3-dot MoreActionsButton sheet

## Version 5 (saved 2026-10-15)

Note of the change: chore(plan): commit regenerated sprint plan split files

Added:

| ID | Task | Start | Finish |
| --- | --- | --- | --- |
| PG-157 | Visible Pin to Home buttons on entity list items and detail page headers - not just hidden in 3-dot MoreActionsButton sheet | 2026-02-28 | PG-129 |

Removed: IFC-171 Implement webhook notification channel - Follow-up to IFC-157

## Version 6 (saved 2026-10-25)

Note of the change: chore(ifc-117): repoint the tracked artifacts to the otel monitoring files

Added:

| ID | Task | Start | Finish |
| --- | --- | --- | --- |
| IFC-170 | Implement Twilio SMS channel - Follow-up to IFC-157 | 2026-06-02 | IFC-157 |
| IFC-171 | Implement webhook notification channel - Follow-up to IFC-157 | 2026-06-04 | IFC-157 |

Removed: PG-156 Customizable Daily Goals - settings UI + home.updateDailyGoal mutation + read from User.preferences instead of hardcoded targetValue=5000; PG-157 Visible Pin to Home buttons on entity list items and detail page headers - not just hidden in 3-dot MoreActionsButton sheet

## Version 7 (saved 2026-10-27)

Note of the change: Merge remote-tracking branch 'origin/main' into fix/1016-audit-highs

Added:

| ID | Task | Start | Finish |
| --- | --- | --- | --- |
| IFC-167 | Wire workers to pnpm dev startup - Follow-up to IFC-163 | 2026-06-28 | IFC-163 |
| IFC-168 | Convert AI worker to BullMQ queue consumer - Follow-up to IFC-005/IFC-085 | 2026-06-30 | IFC-005,IFC-085,IFC-163 |
| IFC-169 | Require Supabase env vars - Follow-up to IFC-006 | 2026-05-31 | IFC-006 |

Removed: IFC-207 Ticket Query Performance Tracking - add queryDurationMs to ticket list and stats endpoints using performance.now pattern from timeline router; PG-154 Fix View Schedule 404 - Welcome Banner links to /calendar which does not exist; PG-155 Fix 6 broken Quick Action hrefs - /calls/new /emails/compose /calendar/new /tasks/new /deals/new /documents/upload all return 404

## Version 8 (saved 2026-11-02)

Note of the change: Merge remote-tracking branch 'origin/main' into docs/dpa-aup-draft

Added:

| ID | Task | Start | Finish |
| --- | --- | --- | --- |
| IFC-175 | RAG Production Validation - Follow-up to IFC-039 | 2026-11-17 | IFC-039 |

Removed: IFC-206 Ticket Stats Enhancement - add SLA status breakdown time window filtering and sortBy sortOrder to ticket query schema

## Version 9 (saved 2026-11-10)

Note of the change: Merge remote-tracking branch 'origin/main' into fix/ui-1222-app-wide

Added:

| ID | Task | Start | Finish |
| --- | --- | --- | --- |
| IFC-165 | Performance Baseline - Real Benchmarks with Live Infrastructure | 2026-09-22 | ENV-015-AI,IFC-003,ENV-005-AI |
| IFC-166 | NBA Demo Video Recording | 2026-11-15 | IFC-039 |

Removed: IFC-205 Ticket Full-Text Search - add search parameter to ticketQuerySchema and TicketService for subject ticketNumber contactName searching

## Version 10 (saved 2026-11-13)

Note of the change: Merge remote-tracking branch 'origin/main' into test/copied-logic-auth

Added:

| ID | Task | Start | Finish |
| --- | --- | --- | --- |
| TRACK-005 | Security Dashboard UI - Vulnerability tracking scan results security posture | 2026-02-22 | EXC-SEC-001,IFC-121 |
| TRACK-006 | Build Health UI - Validation results build status test results | 2026-07-05 | EXP-REPORTS-005,ENV-005-AI |
| IFC-164 | Ollama Local Development - Real Integration & Benchmarks | 2026-09-20 | IFC-005,IFC-086,IFC-095 |

Removed: IFC-202 Activity Feed Stats Endpoint - getStats aggregation with counts by type source and entity over time windows; IFC-203 Activity Feed Full-Text Search - search endpoint with text query across titles descriptions and actor names; IFC-204 Activity Feed Performance Observability - queryDurationMs tracking structured logging and latency alerting

## Version 11 (saved 2026-11-16)

Note of the change: Merge remote-tracking branch 'origin/main' into feat/mail-sync-core

Added:

| ID | Task | Start | Finish |
| --- | --- | --- | --- |
| TRACK-004 | AI Metrics UI - Model performance drift detection cost tracking | 2026-02-22 | IFC-117,AUTOMATION-002 |

Removed: IFC-201 Settings Control Plane Foundations - domain models, adapters, and router for users/teams/roles/permissions/audit/integrations/webhooks/security

Changed:

| ID | Task | Start | Other |
| --- | --- | --- | --- |
| IFC-164 | Ollama Local Development - Real Integration & Benchmarks | 2026-09-20 → 2026-12-13 (+84d) |  |
| IFC-165 | Performance Baseline - Real Benchmarks with Live Infrastructure | 2026-09-22 → 2027-02-21 (+152d) |  |
| IFC-166 | NBA Demo Video Recording | 2026-11-15 → 2027-05-16 (+182d) |  |
| IFC-175 | RAG Production Validation - Follow-up to IFC-039 | 2026-11-17 → 2027-05-16 (+180d) |  |
| IFC-169 | Require Supabase env vars - Follow-up to IFC-006 REOPENED 16/11/2026 (self-claimed done, DoD partly met): DoD 'remove mock key fallback': getDevelopmentSupabaseConfig still falls back to TEST_MOCK_KEY. | 2026-05-31 → 2027-06-13 (+378d) | was named Require Supabase env vars - Follow-up to IFC-006 |
| IFC-170 | Implement Twilio SMS channel - Follow-up to IFC-157 REOPENED 16/11/2026 (self-claimed done, DoD partly met): DoD 'real SMS delivery, status tracking, rate limiting': the Twilio client is imported by nothing outside the adapters package; SMS returns 'not configured'. | 2026-06-02 → 2027-08-22 (+446d) | was named Implement Twilio SMS channel - Follow-up to IFC-157 |
| IFC-171 | Implement webhook notification channel - Follow-up to IFC-157 REOPENED 16/11/2026 (self-claimed done, DoD partly met): DoD 'HTTP POST delivery, HMAC, backoff, DLQ': webhooks/outbound.ts is built but no app or application code uses it. | 2026-06-04 → 2027-08-22 (+444d) | was named Implement webhook notification channel - Follow-up to IFC-157 |
| IFC-172 | Complete Microsoft Calendar integration - Follow-up to IFC-138 REOPENED 16/11/2026 (self-claimed done, DoD partly met): MicrosoftCalendarAdapter is built and exported but nothing under apps/ instantiates it; not wired to a runtime path. | 2026-06-14 → 2027-02-21 (+252d) | was named Complete Microsoft Calendar integration - Follow-up to IFC-138 |
| IFC-182 | Home Page tRPC Router - Welcome summary activity feed AI insights pinned items daily goals REOPENED 16/11/2026 (self-claimed done, DoD partly met): home.router.ts has 7 of the 8 listed procedures; getActivityFeed is absent. | 2026-06-14 → 2027-07-25 (+406d) | was named Home Page tRPC Router - Welcome summary activity feed AI insights pinned items daily goals |
| PG-136 | Task Management Page - List calendar view assignments reminders entity linking REOPENED 16/11/2026 (self-claimed done, DoD partly met): DoD 'TaskCard ... TaskCalendar ... calendar and list views': TaskCard has no importer and TaskCalendar is not rendered, so /tasks has no calendar view. | 2026-02-09 → 2027-02-07 (+363d) | was named Task Management Page - List calendar view assignments reminders entity linking |
| PG-145 | Next Best Action Dashboard - NBA recommendations deal insights action cards success metrics Cross-entity scope: refine NextBestAction impact scoring from coarse 3-tier (HIGH/MEDIUM/LOW) to multi-factor model incorporating engagement score sentiment trend and activity recency. Apply refined scoring to NextBestActionCard on Lead and Contact detail pages. | 2026-12-15 → 2027-12-26 (+376d) |  |
| PG-147 | Workflow List & Status UI - Active workflows execution status step visualization logs | 2027-01-15 → 2028-03-05 (+415d) |  |
| IFC-193 | Activity Feed Type Registry - Enum-based mapping from AuditLogEntry.eventType to ActivityFeedType with metadata REOPENED 16/11/2026 (self-claimed done, DoD partly met): DoD 'enum-based mapping from AuditLogEntry.eventType to ActivityFeedType': ActivityTypeRegistry is used nowhere outside its test. | 2026-03-08 → 2027-08-08 (+518d) | was named Activity Feed Type Registry - Enum-based mapping from AuditLogEntry.eventType to ActivityFeedType with metadata |
| IFC-199 | Document Domain Core - lifecycle, signature state machine, ACL and retention invariants | 2026-02-16 → 2027-06-27 (+496d) |  |

## Version 12 (saved 2026-11-19)

Note of the change: Merge remote-tracking branch 'origin/main' into fix/mvp-007-suggest-tags-loop

Added:

| ID | Task | Start | Finish |
| --- | --- | --- | --- |
| TRACK-003 | Risk Register UI - View and update risks with mitigation tracking | 2026-02-22 | EXP-REPORTS-003,IFC-118 |

Removed: IFC-200 Analytics Adapter Layer - query builders and export pipeline for metrics router

## Version 13 (saved 2026-11-22)

Note of the change: chore(plan): clear 49 forward dependencies in sprint plan (#1532)

Added:

| ID | Task | Start | Finish |
| --- | --- | --- | --- |
| IFC-200 | Analytics Adapter Layer - query builders and export pipeline for metrics router | 2026-02-16 | IFC-096,IFC-106 |

Removed: TRACK-003 Risk Register UI - View and update risks with mitigation tracking

Changed:

| ID | Task | Finish |
| --- | --- | --- |
| TRACK-005 | Security Dashboard UI - Vulnerability tracking scan results security posture | EXC-SEC-001,IFC-121 → IFC-121 |
| IFC-173 | Complete inbound email parsing endpoint - Follow-up to IFC-144 | IFC-144 → none |
| IFC-183 | Notifications tRPC Router - List mark read preferences real-time subscription | IFC-003,IFC-157 → IFC-003 |
| PG-129 | Authenticated Home Page - Welcome summary activity feed AI insights pinned items goals | IFC-182,IFC-069,IFC-095 → IFC-069,IFC-095 |
| PG-132 | Smart Lead Routing UI - Rules configuration assignment dashboard SLA monitoring | IFC-030 → none |
| PG-141 | Email Compose & History Page - Thread view compose attachments templates | IFC-144 → none |
| IFC-191 | User Timezone Support - Add timezone field to User model with preference UI and timezone-aware greeting | IFC-182 → none |
| IFC-192 | Contact Activity Tracking - Add lastContactedAt field to Contact model with auto-update on interactions | IFC-182,IFC-184 → IFC-184 |
| IFC-194 | Router Middleware Standardization - Migrate all routers from manual getTenantId to tenantProcedure | IFC-182,IFC-003 → IFC-003 |
| IFC-195 | Customizable Daily Goals - Multi-type goal support (revenue calls meetings tasks custom) with user preferences | IFC-182 → none |
| IFC-196 | Home Page Response Caching - Redis caching for getWelcomeSummary with event-driven invalidation | IFC-182,IFC-075 → none |
| IFC-198 | Billing Domain Core - Invoice/Receipt aggregates, payment state machine, tax/refund rules | IFC-099,IFC-107 → IFC-107 |

## Version 14 (saved 2026-11-27)

Note of the change: Merge remote-tracking branch 'origin/main' into test/copied-logic-auth

Changed:

| ID | Task | Other |
| --- | --- | --- |
| PG-145 | Next Best Action Dashboard - NBA recommendations deal insights action cards success metrics Cross-entity scope: refine NextBestAction impact scoring from coarse 3-tier (HIGH/MEDIUM/LOW) to multi-factor model incorporating engagement score sentiment trend and activity recency. Apply refined scoring to NextBestActionCard on Lead and Contact detail pages. [Note 23/11/2026: for small service businesses the NBA action cards, deal insights, success metrics and recommendations are delivered by IFC-337 (sprint 26, a concrete step with a one-click button chosen from real signals); this row keeps the multi-factor impact scoring and the dashboard remainder.] | was named Next Best Action Dashboard - NBA recommendations deal insights action cards success metrics Cross-entity scope: refine NextBestAction impact scoring from coarse 3-tier (HIGH/MEDIUM/LOW) to multi-factor model incorporating engagement score sentiment trend and activity recency. Apply refined scoring to NextBestActionCard on Lead and Contact detail pages. |
