How a schedule from an exported table changed from version to version. A marks actual dates.

## Version 1 (saved 2026-04-12)

Note of the change: fix(ci): track sprint task JSONs, registry files, and split CSVs to pass CI gates

| ID | Task | Start | Finish |
| --- | --- | --- | --- |
| PG-157 | Visible Pin to Home buttons on entity list items and detail page headers - not just hidden in 3-dot MoreActionsButton sheet | 2026-02-28 | PG-129 |
| PG-158 | Drag and drop pinned items reorder - backend API exists (home.reorderPinnedItems) needs @dnd-kit frontend integration | 2026-02-28 | PG-129 |
| PG-159 | Stale pin handling - deleted or inaccessible pinned entities should show Item unavailable with unpin option | 2026-02-28 | PG-129 |
| PG-160 | View All AI Insights page - /insights route with getAllInsights endpoint pagination and filtering by insight type | 2026-02-28 | PG-129 |
| PG-161 | Notifications integration on home page - bell icon header badge count IFC-183 Prisma model and notification router | 2026-03-10 | PG-129,IFC-183 |
| PG-162 | AI Insights from ML model - LangChain chain for generating daily insights with caching confidence scores and action recommendations Cross-entity scope: null-state UX - when AI insight is null on entity detail pages show Run AI Analysis button. Lead detail already done (2026-03-04) apply same pattern to Contact detail. Ensure fallback values visually distinct from real AI data. | 2026-03-10 | PG-129,IFC-095 |
| PG-163 | Home page integration tests - test home.router endpoints against real database with seed data | 2026-03-01 | PG-129 |
| PG-164 | Home page E2E tests - 5 Playwright scenarios: public page auth redirect insight click quick action pin/unpin flow | 2026-03-07 | PG-129,PG-155 |
| PG-165 | Update PRD checkboxes for home page - mark completed acceptance criteria and annotate deferred items with task references | 2026-02-22 | PG-129 |
| PG-166 | Lighthouse audit on authenticated home page - verify NFR targets TTI <1s Performance >=90 Accessibility >=90 | 2026-09-06 | PG-129 |
| PG-167 | Analytics tracking plan for home page - define and implement business metrics events for section interactions | 2026-03-10 | PG-129 |
| PG-168 | Monitoring and Sentry error tracking for home route - error boundaries breadcrumbs performance spans |  | PG-129 |
| PG-169 | Developer Guides Page | 2026-03-01 | PG-032 |
| PG-170 | Architecture Docs Page | 2026-03-01 | PG-032 |
| PG-171 | Integration Resources Page | 2026-02-20 | PG-032,PG-034 |
| PG-172 | Billing Ghost Pages - Usage Plans Upgrade Cancel and Settings | 2026-03-10 | PG-025,PG-030 |
| PG-173 | Ticket Configuration Pages - SLA Policies Types and Automations | 2026-03-10 | PG-137,IFC-189,IFC-093 |
| PG-174 | Notification Configuration Pages - Channels and Quiet Hours | 2026-03-10 | IFC-157 |
| PG-175 | Deals Trash Page - Soft-deleted deals list with restore and permanent delete | 2026-03-18 | PG-135 |
| PG-176 | Governance Quality Report Sub-Pages - Lighthouse Coverage and Performance views | 2026-03-15 | PG-015 |
| PG-177 | Analytics Saved Report Pages - Weekly Monthly and Quarterly views | 2026-03-16 | IFC-068 |
| PG-178 | Module Settings Pages - 11 per-module configuration pages at /settings/[module] | 2026-03-11 | PG-104,IFC-076 |
| DOC-002 | Update sitemap.md to reflect actual 101 page.tsx files, add app/sitemap.ts XML generator, app/robots.ts, reconcile against navigation-reachability-audit.md | 2026-02-23 |  |
| DOC-003 | Update PAGE_MAP_AND_FLOWS.md to reflect 103 pages and current flows, verify auth diagrams, update API integration checklist, reconcile with audit | 2026-02-23 | DOC-002 |
| DOC-004 | Update ui-flow-mapping.md cross-reference matrix to 103 routes, verify API router procedure counts (39 routers, 366 procedures), update implementation and backend integration status | 2026-02-23 | DOC-002 |
| DOC-005 | Complete overhaul of page-registry.md from 8 routes to all 101 routes with task ID, KPI targets, code file path, component breakdown, API router, E2E test path, RACI assignments | 2026-02-23 | DOC-002 |
| DOC-006 | Create unified IA reference combining reachability audit route inventory with flow mapping user journey context, linking routes to flows to components to APIs to nav layers | 2026-02-24 | DOC-002,DOC-003,DOC-004,DOC-005 |
| DOC-007 | Conduct full accessibility compliance gap assessment: Lighthouse a11y audit on all 27 URLs, document WCAG 2.1 AA conformance level per route, identify all Level A and AA failures, produce gap report with remediation priorities | 2026-02-23 |  |
| DOC-008 | Create VPAT 2.5 document, WCAG 2.1 AA conformance statement, axe-core/pa11y test suite, enforce accessibility in CI (error not warn), accessibility ADR, screen reader testing plan | 2026-02-23 | DOC-007 |
| DOC-009 | Create content audit framework and perform initial audit: quantitative URL inventory (103 routes with HTTP status, response time, title, meta), qualitative content review, SEO audit for public pages, stale content detection | 2026-02-24 | DOC-002,DOC-005 |
| DOC-010 | Create route reconciliation script comparing conformance-statement.md routes against apps/web/src/app/ directory tree | 2026-02-27 | DOC-008 |
| DOC-011 | Add compliance-check Section 11 requiring VPAT/conformance review when PG-*/IFC-* UI tasks add or modify routes | 2026-03-01 | DOC-008 |
| DOC-012 | Establish quarterly accessibility documentation review cadence with recurring sprint task template | 2026-03-01 | DOC-008 |
| DOC-013 | Amend ADR-038 with Documentation Maintenance section mandating accessibility doc updates when scope changes | 2026-03-02 | DOC-008 |
| PG-179 | Press Release Detail Page - dynamic /press/[id] route for individual press releases linked from /press index page (content audit finding F-004) | 2026-03-01 | PG-007 |
| IFC-208 | Lighthouse SEO CI enforcement and og:image - change lighthouserc.js SEO assertion from warn to error and add og:image meta tag to root layout (content audit findings F-005 F-006) |  | DOC-009 |
| IFC-209 | Fix sitemap.ts defects - replace new Date() lastModified with actual file modification timestamps, add all 6 blog post slugs, add dynamic route entries for /careers/[id] and /lp/[slug] (content audit findings F-007 F-008 F-009) | 2026-03-02 | DOC-002,DOC-009 |
| IFC-210 | Fill SEO metadata gaps on public pages - add description OG and Twitter tags to /pricing, complete OG tags on /about and /features, add layout-level metadata for auth-flow pages (content audit findings F-010 F-011 F-012) | 2026-03-02 | DOC-009 |
| DOC-014 | Automated content audit script - TypeScript CLI that scans page.tsx files, resolves metadata chains, calculates SEO scores, detects ghost links, and regenerates content-audit-results.json; integrates as CI check on PR modifying app routes | 2026-03-07 | DOC-009 |
| DOC-015 | Docs Integrity Reconciliation - Regenerate and sync conflicting design-document route totals from filesystem source of truth |  | DOC-014,IFC-209,IFC-210 |
| DOC-016 | Docs Integrity CI Gate - Automated cross-document route-total drift detection and PR enforcement |  | DOC-014,DOC-015 |
| IFC-211 | Goal Settings RBAC - Role-based permissions for daily goal management (manager team goals and admin org defaults) |  | IFC-195,IFC-098 |
| IFC-212 | Wire API container to QueueAIService for BullMQ-backed lead scoring |  | IFC-015,IFC-125,IFC-168 |
| IFC-213 | Replace Math.random connector health checks with adapter-backed health checks in integrations router | 2026-03-04 | IFC-099 |
| IFC-214 | Redis-backed AI Monitoring State Bridge - Replace process-local singleton reads with shared Redis telemetry store |  | IFC-015,IFC-168,IFC-197 |
| IFC-215 | AI Monitoring Payload Fidelity - Replace tokenCost model and hallucination placeholders with real chain metadata |  | IFC-117,IFC-197,IFC-214 |
| A11Y-REVIEW-001 | Execute first quarterly accessibility documentation review using template |  | DOC-012 |
| IFC-216 | Entity Detail File Upload/Download Wiring - Wire file upload and download handlers on entity detail pages (Lead Contact Deal). Upload: file picker to upload mutation to Supabase Storage. Download: presigned URL to browser download. Follows IFC-094 (Pattern 1 - infra-only). Resolves WIRE-IFC-094-001. |  | IFC-094 |
| IFC-217 | Entity Detail Email Compose Wiring - Wire existing EmailCompose component into Compose buttons on Lead and Contact detail pages. Pre-fill recipient. Open as Sheet overlay. Connect to email send API via EmailServiceAdapter. Follows IFC-144 and PG-141 (Pattern 1 + Pattern 2). Resolves WIRE-IFC-144-001 and WIRE-PG-141-001. |  | IFC-144,PG-141 |
| IFC-218 | Similar Entity API (pgvector) - Build lead.getSimilar and contact.getSimilar tRPC queries using pgvector embedding similarity. Top 5 matches exclude self tenant-isolated. Wire to Lead detail sidebar (replace empty state) and Contact detail sidebar. Follows IFC-039 (Pattern 1 - infra-only). Resolves WIRE-IFC-039-001. |  | IFC-039 |
| IFC-219 | Activity Feed Interactions (Reactions + Comments) - Add ActivityReaction and ActivityComment models to Prisma schema. tRPC mutations: addReaction removeReaction addComment. Wire into Lead and Contact detail activity action buttons. Remove hardcoded [] arrays. Follows IFC-069 (Pattern 2 - scope oversight). Resolves WIRE-IFC-069-001. |  | IFC-069 |
| IFC-220 | AI Insight Null-State UX (Contact) - Add Run AI Analysis button when aiInsight is null on Contact detail page. Lead detail already done 2026-03-04. Pattern: amber dashed-border banner + button wired to scoreWithAI mutation. Invalidate query on success. Follows IFC-095 (Pattern 2 - scope oversight). Resolves WIRE-IFC-095-001. | 2026-03-12 | IFC-095 |
| IFC-221 | Email Open Tracking Integration - Real email open/click tracking. Backend: tracking pixel endpoint recording opens; click-through URL wrapper; EmailTracking model. Frontend: replace activity-derived open rate with real data on Lead and Contact detail. Inject pixel + wrap links on outbound send. Follows IFC-144 and IFC-099 (Pattern 1 - infra-only). Resolves WIRE-IFC-099-001. |  | IFC-144,IFC-099 |
| IFC-222 | Implement real Twilio SMS SDK calls (Resolves R-006) | 2026-03-06 | IFC-170 |
| IFC-223 | Wire actual Email Outbound Adapter (Resolves R-018) | 2026-03-06 | IFC-157 |
| IFC-224 | Implement Calendar Webhook Ingestion Routes (Resolves R-008) | 2026-03-07 | IFC-138 |
| IFC-225 | Convert Lead UX Fix - Backend requires QUALIFIED status but Convert button always visible. Fix: (1) Disable/hide button for non-QUALIFIED leads with guidance tooltip. (2) Add confirmation dialog before conversion. (3) Add createAccount option to conversion flow. (4) Handle conversion errors gracefully. Page: leads/[id]/page.tsx line 1169. | 2026-03-12 |  |
| IFC-226 | Lead Detail Null-State UX - Fix engagement/churn/sentiment showing raw 'Unknown' string when aiInsight is null. Replace with styled 'Not analyzed' state with visual distinction from real AI data. Page: leads/[id]/page.tsx lines 588, 2258. | 2026-03-15 |  |
| IFC-227 | Company-to-Account Navigation Link - Lead detail page shows company name as plain in profile card (line 1352) and info panel (line 1656). Replace with Next.js Link component navigating to /accounts/[accountId]. Requires accountId in lead transform/query. Apply same pattern to Contact and Deal detail pages. |  |  |
| IFC-228 | Lead Owner Reassignment UI - Owner card on Lead detail (lines 1468-1487) is read-only. Add reassignment capability for MANAGER/ADMIN roles: user picker dropdown, reassign mutation via lead.update, audit trail entry. Apply RBAC check to show/hide reassign button. Extend to Contact and Account detail pages. |  | IFC-095 |
| IFC-229 | Lead Detail Map View - Current map section (lines 1453-1465) is a gradient placeholder with non-functional 'View Map' button. Options: (A) Integrate Mapbox/Leaflet with geocoded address, (B) Link to Google Maps in new tab, (C) Remove placeholder entirely if map not in MVP scope. Needs product decision. |  |  |
| IFC-230 | Unify Lead Create/Edit Form - Create page (leads/(list)/new/page.tsx, 1029 lines) and Edit page (leads/[id]/edit/page.tsx, 464 lines) share no components. Issues: different API clients (trpc vs api), different field sets (BANT only in create but silently dropped), different styling, different validation, no auth guard on create. Fix: extract shared LeadForm component, unify API client, include all fields in both views, consistent styling. |  |  |
| IFC-231 | Lead List Saved Views and Filter Persistence - Sidebar view params (?view=my, ?view=starred, ?segment=hot) are completely ignored by LeadsPageClient (no useSearchParams call). Fix: (1) Wire URL params to filter state, (2) Add saved views CRUD (name, filters, columns, sort), (3) Column visibility picker UI exposing DataTable VisibilityState, (4) Persist filter/sort/view selection in localStorage or user preferences. |  |  |
| IFC-232 | Sidebar Broken Links Cleanup - 1 remaining broken navigation link: /deals/trash has no page.tsx (sidebar config deals.ts links to it but route 404s). Original 17 broken nav links and 6 settings links resolved by PG-025/PG-045/PG-174 and other sprint work. Fix: create trash/deleted-deals page at apps/web/src/app/deals/trash/page.tsx OR remove the sidebar item from deals.ts if soft-delete is not yet supported. | 2026-04-11 |  |
| IFC-233 | Wire Unused Backend tRPC Endpoints - ~20 built but unused tRPC procedures. Lead: convertToDeal, getHotLeads, getReadyForQualification, bulkScore. Contact: getByEmail, linkToAccount, unlinkFromAccount, search, linkToLead, unlinkFromLead, getTimeline, logActivity. Opportunity: create, getById, getHistory, getProducts, getPipeline, stats. Account: create, update. Task: stats, assign, reschedule. Wire each to appropriate frontend UI or remove if not needed. |  |  |

## Version 2 (saved 2026-04-13)

Note of the change: chore(project-tracker): sprint metrics JSON updates

Added:

| ID | Task |
| --- | --- |
| IFC-234 | Settings Pages Wiring - 4 settings pages with hardcoded data and inert buttons. Team: hardcoded 4-person array, inert Invite/Remove/Role buttons. Integrations: hardcoded provider list, inert Connect/Disconnect buttons. Notifications: hardcoded const, no useState, no onClick on toggles. Account: profile name/email has no save mutation, 3 security buttons (Change Password, Enable 2FA, Download Data) have no onClick. Wire all to real tRPC mutations and queries. |

Removed: PG-157 Visible Pin to Home buttons on entity list items and detail page headers - not just hidden in 3-dot MoreActionsButton sheet; PG-158 Drag and drop pinned items reorder - backend API exists (home.reorderPinnedItems) needs @dnd-kit frontend integration

## Version 3 (saved 2026-04-19)

Note of the change: chore(project-tracker): update metrics, sprint data, and tracker UI

Added:

| ID | Task | Start | Finish |
| --- | --- | --- | --- |
| PG-158 | Drag and drop pinned items reorder - backend API exists (home.reorderPinnedItems) needs @dnd-kit frontend integration | 2026-02-28 | PG-129 |

Removed: IFC-234 Settings Pages Wiring - 4 settings pages with hardcoded data and inert buttons. Team: hardcoded 4-person array, inert Invite/Remove/Role buttons. Integrations: hardcoded provider list, inert Connect/Disconnect buttons. Notifications: hardcoded const, no useState, no onClick on toggles. Account: profile name/email has no save mutation, 3 security buttons (Change Password, Enable 2FA, Download Data) have no onClick. Wire all to real tRPC mutations and queries.

## Version 4 (saved 2026-04-26)

Note of the change: fix(ai-worker): add CaseAIInsight model and remove as-never casts (IFC-312 hotfix)

Added:

| ID | Task | Start | Finish |
| --- | --- | --- | --- |
| PG-157 | Visible Pin to Home buttons on entity list items and detail page headers - not just hidden in 3-dot MoreActionsButton sheet | 2026-02-28 | PG-129 |

## Version 5 (saved 2026-06-09)

Note of the change: Merge main into ifc-314: reconcile #367 onto current main

Removed: IFC-233 Wire Unused Backend tRPC Endpoints - ~20 built but unused tRPC procedures. Lead: convertToDeal, getHotLeads, getReadyForQualification, bulkScore. Contact: getByEmail, linkToAccount, unlinkFromAccount, search, linkToLead, unlinkFromLead, getTimeline, logActivity. Opportunity: create, getById, getHistory, getProducts, getPipeline, stats. Account: create, update. Task: stats, assign, reschedule. Wire each to appropriate frontend UI or remove if not needed.

Changed:

| ID | Task | Other |
| --- | --- | --- |
| IFC-223 | Wire actual Email Outbound Adapter (Resolves R-018) [2026-06-09 audit: shipped as Completed but was MOCK in prod — container.ts had no resend branch; actually wired to Resend via #363/#360 + activated on Railway api service] | was named Wire actual Email Outbound Adapter (Resolves R-018) |

## Version 6 (saved 2026-06-29)

Note of the change: chore(sprint-18): mark IFC-247, IFC-215, PG-188 completed after fleet merge

Changed:

| ID | Task | Start |
| --- | --- | --- |
| IFC-215 | AI Monitoring Payload Fidelity - Replace tokenCost model and hallucination placeholders with real chain metadata | none → 2026-06-29 |

## Version 7 (saved 2026-10-07)

Note of the change: chore(plan): settle sprint 18 completion-integrity findings (#828)

Added:

| ID | Task |
| --- | --- |
| IFC-233 | Wire Unused Backend tRPC Endpoints - ~20 built but unused tRPC procedures. Lead: convertToDeal, getHotLeads, getReadyForQualification, bulkScore. Contact: getByEmail, linkToAccount, unlinkFromAccount, search, linkToLead, unlinkFromLead, getTimeline, logActivity. Opportunity: create, getById, getHistory, getProducts, getPipeline, stats. Account: create, update. Task: stats, assign, reschedule. Wire each to appropriate frontend UI or remove if not needed. |

## Version 8 (saved 2026-10-15)

Note of the change: chore(plan): commit regenerated sprint plan split files

Removed: PG-157 Visible Pin to Home buttons on entity list items and detail page headers - not just hidden in 3-dot MoreActionsButton sheet

## Version 9 (saved 2026-10-23)

Note of the change: chore(pg-203): merge origin/main (#1003 pg-203 event types) into the dsar branch

Changed:

| ID | Task | Other |
| --- | --- | --- |
| IFC-221 | Email Open Tracking Integration - Real email open/click tracking. Backend: tracking pixel endpoint recording opens; click-through URL wrapper; EmailTracking model. Frontend: replace activity-derived open rate with real data on Lead and Contact detail. Inject pixel + wrap links on outbound send. Follows IFC-144 and IFC-099 (Pattern 1 - infra-only). Resolves WIRE-IFC-099-001. Broadened 2026-10-21 (PG-207): the pixel and link wrapping apply to mail sent through every user mailbox kind (SMTP/Gmail/Microsoft via dispatchUserMail; ADR-085) and honour the PG-207 Email Settings trackOpens/trackClicks toggles (category 2 until this ships). | was named Email Open Tracking Integration - Real email open/click tracking. Backend: tracking pixel endpoint recording opens; click-through URL wrapper; EmailTracking model. Frontend: replace activity-derived open rate with real data on Lead and Contact detail. Inject pixel + wrap links on outbound send. Follows IFC-144 and IFC-099 (Pattern 1 - infra-only). Resolves WIRE-IFC-099-001. |

## Version 10 (saved 2026-10-25)

Note of the change: chore(ifc-117): repoint the tracked artifacts to the otel monitoring files

Added:

| ID | Task | Start | Finish |
| --- | --- | --- | --- |
| PG-156 | Customizable Daily Goals - settings UI + home.updateDailyGoal mutation + read from User.preferences instead of hardcoded targetValue=5000 | 2026-02-28 | PG-129 |
| PG-157 | Visible Pin to Home buttons on entity list items and detail page headers - not just hidden in 3-dot MoreActionsButton sheet | 2026-02-28 | PG-129 |

Removed: IFC-233 Wire Unused Backend tRPC Endpoints - ~20 built but unused tRPC procedures. Lead: convertToDeal, getHotLeads, getReadyForQualification, bulkScore. Contact: getByEmail, linkToAccount, unlinkFromAccount, search, linkToLead, unlinkFromLead, getTimeline, logActivity. Opportunity: create, getById, getHistory, getProducts, getPipeline, stats. Account: create, update. Task: stats, assign, reschedule. Wire each to appropriate frontend UI or remove if not needed.

## Version 11 (saved 2026-10-29)

Note of the change: Merge origin/main into feat/IFC-117-ai-model-monitoring

Added:

| ID | Task | Start | Finish |
| --- | --- | --- | --- |
| IFC-207 | Ticket Query Performance Tracking - add queryDurationMs to ticket list and stats endpoints using performance.now pattern from timeline router | 2026-02-14 | IFC-189 |
| PG-154 | Fix View Schedule 404 - Welcome Banner links to /calendar which does not exist | 2026-02-22 | PG-129 |
| PG-155 | Fix 6 broken Quick Action hrefs - /calls/new /emails/compose /calendar/new /tasks/new /deals/new /documents/upload all return 404 | 2026-02-19 | PG-129 |

Removed: IFC-231 Lead List Saved Views and Filter Persistence - Sidebar view params (?view=my, ?view=starred, ?segment=hot) are completely ignored by LeadsPageClient (no useSearchParams call). Fix: (1) Wire URL params to filter state, (2) Add saved views CRUD (name, filters, columns, sort), (3) Column visibility picker UI exposing DataTable VisibilityState, (4) Persist filter/sort/view selection in localStorage or user preferences.; IFC-232 Sidebar Broken Links Cleanup - 1 remaining broken navigation link: /deals/trash has no page.tsx (sidebar config deals.ts links to it but route 404s). Original 17 broken nav links and 6 settings links resolved by PG-025/PG-045/PG-174 and other sprint work. Fix: create trash/deleted-deals page at apps/web/src/app/deals/trash/page.tsx OR remove the sidebar item from deals.ts if soft-delete is not yet supported.

## Version 12 (saved 2026-10-31)

Note of the change: Merge branch 'main' into chore/governance-metrics-20261026-061915

Added:

| ID | Task | Start | Finish |
| --- | --- | --- | --- |
| IFC-206 | Ticket Stats Enhancement - add SLA status breakdown time window filtering and sortBy sortOrder to ticket query schema | 2026-02-13 | IFC-189 |

Removed: IFC-230 Unify Lead Create/Edit Form - Create page (leads/(list)/new/page.tsx, 1029 lines) and Edit page (leads/[id]/edit/page.tsx, 464 lines) share no components. Issues: different API clients (trpc vs api), different field sets (BANT only in create but silently dropped), different styling, different validation, no auth guard on create. Fix: extract shared LeadForm component, unify API client, include all fields in both views, consistent styling.

## Version 13 (saved 2026-11-08)

Note of the change: test(adapters): test the real Outlook, Teams and PayPal adapters, not fetch stubs (#1270)

Added:

| ID | Task | Start | Finish |
| --- | --- | --- | --- |
| IFC-205 | Ticket Full-Text Search - add search parameter to ticketQuerySchema and TicketService for subject ticketNumber contactName searching | 2026-02-13 | IFC-189 |

Removed: IFC-229 Lead Detail Map View - Current map section (lines 1453-1465) is a gradient placeholder with non-functional 'View Map' button. Options: (A) Integrate Mapbox/Leaflet with geocoded address, (B) Link to Google Maps in new tab, (C) Remove placeholder entirely if map not in MVP scope. Needs product decision.

## Version 14 (saved 2026-11-12)

Note of the change: Merge remote-tracking branch 'origin/main' into perf/codex-review-once-per-head

Added:

| ID | Task | Start | Finish |
| --- | --- | --- | --- |
| IFC-203 | Activity Feed Full-Text Search - search endpoint with text query across titles descriptions and actor names | 2026-03-10 | IFC-069,IFC-155 |
| IFC-204 | Activity Feed Performance Observability - queryDurationMs tracking structured logging and latency alerting |  | IFC-069 |

Removed: IFC-227 Company-to-Account Navigation Link - Lead detail page shows company name as plain in profile card (line 1352) and info panel (line 1656). Replace with Next.js Link component navigating to /accounts/[accountId]. Requires accountId in lead transform/query. Apply same pattern to Contact and Deal detail pages.; IFC-228 Lead Owner Reassignment UI - Owner card on Lead detail (lines 1468-1487) is read-only. Add reassignment capability for MANAGER/ADMIN roles: user picker dropdown, reassign mutation via lead.update, audit trail entry. Apply RBAC check to show/hide reassign button. Extend to Contact and Account detail pages.

## Version 15 (saved 2026-11-13)

Note of the change: Merge remote-tracking branch 'origin/main' into fix/ai-worker-use-saved-chain-versions

Added:

| ID | Task | Start | Finish |
| --- | --- | --- | --- |
| IFC-202 | Activity Feed Stats Endpoint - getStats aggregation with counts by type source and entity over time windows | 2026-03-10 | IFC-069 |

Removed: IFC-226 Lead Detail Null-State UX - Fix engagement/churn/sentiment showing raw 'Unknown' string when aiInsight is null. Replace with styled 'Not analyzed' state with visual distinction from real AI data. Page: leads/[id]/page.tsx lines 588, 2258.

## Version 16 (saved 2026-11-16)

Note of the change: Merge remote-tracking branch 'origin/main' into feat/mail-sync-core

Added:

| ID | Task | Start | Finish |
| --- | --- | --- | --- |
| IFC-201 | Settings Control Plane Foundations - domain models, adapters, and router for users/teams/roles/permissions/audit/integrations/webhooks/security | 2027-09-19 | IFC-072,IFC-098,IFC-099,IFC-106,IFC-124 |

Removed: IFC-224 Implement Calendar Webhook Ingestion Routes (Resolves R-008); IFC-225 Convert Lead UX Fix - Backend requires QUALIFIED status but Convert button always visible. Fix: (1) Disable/hide button for non-QUALIFIED leads with guidance tooltip. (2) Add confirmation dialog before conversion. (3) Add createAccount option to conversion flow. (4) Handle conversion errors gracefully. Page: leads/[id]/page.tsx line 1169.

Changed:

| ID | Task | Start | Other |
| --- | --- | --- | --- |
| IFC-204 | Activity Feed Performance Observability - queryDurationMs tracking structured logging and latency alerting | none → 2026-12-13 |  |
| PG-168 | Monitoring and Sentry error tracking for home route - error boundaries breadcrumbs performance spans | none → 2027-02-21 |  |
| IFC-208 | Lighthouse SEO CI enforcement and og:image - change lighthouserc.js SEO assertion from warn to error and add og:image meta tag to root layout (content audit findings F-005 F-006) | none → 2027-06-13 |  |
| A11Y-REVIEW-001 | Execute first quarterly accessibility documentation review using template | none → 2027-02-21 |  |
| IFC-216 | Entity Detail File Upload/Download Wiring - Wire file upload and download handlers on entity detail pages (Lead Contact Deal). Upload: file picker to upload mutation to Supabase Storage. Download: presigned URL to browser download. Follows IFC-094 (Pattern 1 - infra-only). Resolves WIRE-IFC-094-001. | none → 2027-10-03 |  |
| IFC-217 | Entity Detail Email Compose Wiring - Wire existing EmailCompose component into Compose buttons on Lead and Contact detail pages. Pre-fill recipient. Open as Sheet overlay. Connect to email send API via EmailServiceAdapter. Follows IFC-144 and PG-141 (Pattern 1 + Pattern 2). Resolves WIRE-IFC-144-001 and WIRE-PG-141-001. | none → 2027-07-25 |  |
| IFC-218 | Similar Entity API (pgvector) - Build lead.getSimilar and contact.getSimilar tRPC queries using pgvector embedding similarity. Top 5 matches exclude self tenant-isolated. Wire to Lead detail sidebar (replace empty state) and Contact detail sidebar. Follows IFC-039 (Pattern 1 - infra-only). Resolves WIRE-IFC-039-001. | none → 2026-12-27 |  |
| IFC-219 | Activity Feed Interactions (Reactions + Comments) - Add ActivityReaction and ActivityComment models to Prisma schema. tRPC mutations: addReaction removeReaction addComment. Wire into Lead and Contact detail activity action buttons. Remove hardcoded [] arrays. Follows IFC-069 (Pattern 2 - scope oversight). Resolves WIRE-IFC-069-001. | none → 2026-12-27 |  |
| IFC-221 | Email Open Tracking Integration - Real email open/click tracking. Backend: tracking pixel endpoint recording opens; click-through URL wrapper; EmailTracking model. Frontend: replace activity-derived open rate with real data on Lead and Contact detail. Inject pixel + wrap links on outbound send. Follows IFC-144 and IFC-099 (Pattern 1 - infra-only). Resolves WIRE-IFC-099-001. Broadened 2026-10-21 (PG-207): the pixel and link wrapping apply to mail sent through every user mailbox kind (SMTP/Gmail/Microsoft via dispatchUserMail; ADR-085) and honour the PG-207 Email Settings trackOpens/trackClicks toggles (category 2 until this ships). | none → 2027-08-08 |  |
| IFC-222 | Implement real Twilio SMS SDK calls (Resolves R-006) REOPENED 16/11/2026 (self-claimed done, DoD partly met): DoD 'real Twilio SDK calls replace mock logic': the notification path does not call the Twilio client (SMS returns 'not configured'). | 2026-03-06 → 2027-09-05 (+548d) | was named Implement real Twilio SMS SDK calls (Resolves R-006) |

## Version 17 (saved 2026-11-19)

Note of the change: Merge remote-tracking branch 'origin/main' into feat/mvp-011-enquiry-from-unknown-sender

Added:

| ID | Task | Start | Finish |
| --- | --- | --- | --- |
| IFC-200 | Analytics Adapter Layer - query builders and export pipeline for metrics router | 2026-02-16 | IFC-096,IFC-106 |

Removed: IFC-223 Wire actual Email Outbound Adapter (Resolves R-018) [2026-06-09 audit: shipped as Completed but was MOCK in prod — container.ts had no resend branch; actually wired to Resend via #363/#360 + activated on Railway api service]

## Version 18 (saved 2026-11-27)

Note of the change: Merge remote-tracking branch 'origin/main' into fix/pg-014-status-page-real-data

Added:

| ID | Task | Start |
| --- | --- | --- |
| IFC-223 | Wire actual Email Outbound Adapter (Resolves R-018) [2026-06-09 audit: shipped as Completed but was MOCK in prod — container.ts had no resend branch; actually wired to Resend via #363/#360 + activated on Railway api service] | 2026-03-06 |

Removed: IFC-200 Analytics Adapter Layer - query builders and export pipeline for metrics router

Changed:

| ID | Task | Finish |
| --- | --- | --- |
| PG-174 | Notification Configuration Pages - Channels and Quiet Hours | IFC-157 → none |
| IFC-213 | Replace Math.random connector health checks with adapter-backed health checks in integrations router | IFC-099 → none |
