How a schedule from an exported table changed from version to version. A marks actual dates.

## Version 1 (saved 2026-04-12)

Note of the change: fix(ci): track sprint task JSONs, registry files, and split CSVs to pass CI gates

| ID | Task | Start | Finish |
| --- | --- | --- | --- |
| IFC-234 | Settings Pages Wiring - 4 settings pages with hardcoded data and inert buttons. Team: hardcoded 4-person array, inert Invite/Remove/Role buttons. Integrations: hardcoded provider list, inert Connect/Disconnect buttons. Notifications: hardcoded const, no useState, no onClick on toggles. Account: profile name/email has no save mutation, 3 security buttons (Change Password, Enable 2FA, Download Data) have no onClick. Wire all to real tRPC mutations and queries. |  |  |
| IFC-235 | Lead Detail AI Chat Panel - Add AI chat panel to Lead detail page for entity-scoped conversations. Backend: conversation.router.ts is fully built with 13 endpoints but NOT registered in router.ts - register it. Frontend: build LeadChatPanel component using conversation API with contextType=LEAD, contextId=leadId. Similar to dashboard TeamChatWidget but with real API calls (TeamChatWidget is decorative with hardcoded messages). ConversationRecord/MessageRecord Prisma models exist. |  | IFC-069 |
| IFC-236 | Recent Activity Empty State CTA - Overview tab shows generic 'No activities yet' with no call to action. Add 'Log your first activity' CTA button linking to Activity tab textarea. Apply same pattern to Contact detail page. Page: leads/[id]/page.tsx line 1600. | 2026-03-12 |  |
| IFC-237 | Lead Router Security - Tenant Isolation & Domain Bypass. Fix 4 CRITICAL/MEDIUM security issues: (1) scoreWithAI fire-and-forget uses raw ctx.prisma instead of prismaWithTenant - cross-tenant data leak risk [S2]. (2) logActivity $transaction uses raw ctx.prisma - may bypass tenant middleware [S3]. (3) bulkUpdateStatus uses direct Prisma updateMany bypassing Lead.changeStatus() domain validation - skips status transition rules and domain events [S4]. (4) getHotLeads/getReadyForQualification pass userId as ownerId without explicit tenantId [S9]. Fix: Replace ctx.prisma with prismaWithTenant in all cases. Route bulkUpdateStatus through domain model. Add explicit tenantId to hot/ready queries. | 2026-03-12 |  |
| IFC-238 | Lead Detail Status Type Fix + Auth Guard. Fix 2 CRITICAL issues: (1) LeadStatus type union at leads/[id]/page.tsx line 139 omits NEGOTIATING - runtime crash when lead has this status [S1]. (2) leads/(list)/new/page.tsx missing useRequireAuth() hook - unauthenticated users can access create lead form [F1]. Also fix trpc vs api import inconsistency in create page [F8]. Fix: Add NEGOTIATING to LeadStatus type, add useRequireAuth() to create page, standardize import. | 2026-03-18 |  |
| IFC-239 | Lead Router Data Integrity Fixes. Fix 5 HIGH issues: (1) update procedure ambiguous status field handling - may silently drop or bypass domain validation [S5]. (2) Score tier thresholds inconsistent - domain LeadScore uses 80/50 but router stats query uses 70/40 [S6]. (3) sortBy accepts arbitrary strings with no enum validation - Prisma orderBy injection risk [S7]. (4) leadListResponseSchema expects 'data' key but router returns 'leads' [W4]. (5) leadResponseSchema missing Lead 360 fields (aiInsight, activities, notes, files, tasks) [D5]. Fix: Explicitly handle status in update, unify thresholds, add sortBy enum, fix schema keys. | 2026-04-06 |  |
| IFC-240 | Lead Audit Logging. Add audit log entries to all 20 lead router procedures using SecurityAuditService. GDPR-relevant operations (delete, bulkDelete, convert, export) MUST have audit trail. Include: actor (userId), action, entityType (Lead), entityId, tenantId, timestamp, metadata (old/new values for mutations). Integrate with existing audit infrastructure at apps/api/src/security/audit/. |  |  |
| IFC-241 | Lead Router Dead Code & Missing Events Cleanup. Fix 4 MEDIUM/LOW issues: (1) scoreWithAI notification variables at lines 517-527 set but never referenced - dead code [S10]. (2) LeadRoutedEvent defined in domain but never published by any procedure or service [S11]. (3) Only 3 of ~10 lead event types trigger notifications [W10]. (4) Lead notifications processed synchronously, not queued via BullMQ [W11]. Fix: Remove dead notification code, publish LeadRoutedEvent from routing logic, add notification handlers for remaining event types, enqueue via BullMQ. |  |  |
| IFC-242 | Lead Create Form Fixes - BANT Drop, Revenue Mapping, Validation. Fix 3 HIGH issues: (1) BANT fields (Budget, Authority, Need, Timeline) collected in create form but silently dropped on submit - never sent to API [F3]. (2) annualRevenue mapped to estimatedValue - semantic mismatch between company annual revenue and deal estimated value [F4]. (3) Edit form uses 'as any' cast with no client-side Zod validation - no inline field errors [F9]. Fix: Send BANT to API (add to createLeadSchema if needed), map annualRevenue correctly, add Zod resolver to edit form, remove as any. |  |  |
| IFC-243 | Lead Frontend Consistency - StatusBadge, Toast, window.prompt. Fix 3 MEDIUM issues: (1) window.prompt() used for note input at line 1951 - blocks UI, no multi-line, poor UX [F5]. Replace with Dialog/Sheet component. (2) Two different StatusBadge implementations - inline LeadStatusBadge vs shared component with different color schemes [F6]. Consolidate to shared component. (3) Two Toast patterns - sonner toast.success() vs shadcn useToast() used inconsistently across lead pages [F7]. Standardize to one pattern. |  |  |
| IFC-244 | Dashboard Widget Real Data - ActiveLeads, TotalLeads, Analytics. Fix 3 HIGH/MEDIUM issues: (1) ActiveLeadsWidget fully hardcoded with static '1,240' and 'vs 1,100 last month' [F2]. (2) TotalLeadsWidget shows hardcoded '+12%' trend [W6]. (3) Analytics page for leads uses sample data arrays, no API queries [W7]. Fix: Wire ActiveLeadsWidget to lead.stats API, compute real trend from monthly comparison, wire Analytics page to real lead data endpoints. |  |  |
| IFC-245 | Lead Activity Timeline Unification. Fix HIGH issue: logActivity creates LeadActivity records but these are NOT fed into the unified TimelineEvent system (IFC-069). Lead activities exist in a parallel silo [W1]. Also fix: No email-to-lead association - inbound emails not linked to leads by sender address [W2]. Fix: Create TimelineEvent adapter for LeadActivity, add email-to-lead matching in inbound parser, ensure lead detail 'All Sources' toggle shows unified data. |  | IFC-069:FS |
| IFC-246 | Domain Model Lead 360 Alignment. Fix 4 HIGH issues: (1) Lead.toJSON() omits aiInsight, activities, notes, files, tasks relations - domain events carry incomplete snapshots [D1]. (2) qualify() only allows from NEW/CONTACTED but UI doesn't reflect this constraint [D2]. (3) LeadScoringChain throws unhandled error for unknown AI_PROVIDER [D3]. (4) AI scoring prompt only receives basic lead data, ignores activity count, engagement history, note count [D4]. Fix: Extend toJSON, expose allowed transitions, add provider fallback, enrich scoring prompt. |  |  |
| IFC-247 | Lead Detail Page Tests. Lead detail page (2200+ lines) has ZERO component tests [T1]. Also untested: addNote procedure [T4] and logActivity procedure [T5] added 2026-03-04. Write comprehensive tests: (1) Component render tests for all tabs (Overview, Activity, AI Insights, Lead IQ, Notes, Files, Emails, Tasks). (2) Mutation tests for addNote and logActivity. (3) Error state tests (404, 500, retry). (4) AI insight null-state rendering. (5) Activity feed toggle. Must cover 2026-03-04 wiring fixes. |  |  |
| IFC-248 | Lead List & Create Page Tests. Two major pages with ZERO tests: (1) Lead list page with filtering, sorting, bulk operations, saved views [T2]. (2) Lead create page (1029 lines) with BANT fields, source handling, validation [T3]. Also test: (3) Role-based filtering (ADMIN sees all, others see own) [T7]. (4) Bulk operations UI (score, convert, archive, delete) [T8]. Write component tests covering happy path, error states, and edge cases. |  |  |
| IFC-249 | Lead Edit Page Tests + E2E. Fix remaining test gaps: (1) Edit page onSuccess/onError callbacks untested, as any cast hides type errors [T9]. (2) No E2E tests for complete lead CRUD flow (create -> view -> edit -> delete) [T6]. Write: (1) Edit page component tests with mutation mocking. (2) Playwright E2E test for full lead lifecycle. E2E should cover: create lead with required fields, view on detail page, edit fields, archive/delete. |  |  |
| IFC-250 | Lead Event Pipeline - Persistent Outbox + Webhooks. Fix HIGH/LOW issues: (1) InMemoryEventBus loses all events on server restart - no persistent outbox pattern [W3]. (2) No webhook handlers for lead events - external systems cannot subscribe [W9]. Fix: Implement transactional outbox pattern for lead domain events (LeadCreatedEvent, LeadQualifiedEvent, etc.). Add webhook dispatch for lead events. Ensure event ordering and at-least-once delivery. |  |  |
| IFC-251 | Lead CSV Import/Export. Add bulk import and export for leads [W8]. Import: CSV upload with validation, duplicate detection, field mapping UI, error report. Export: CSV and JSON formats, filtered export (current view), all-fields export. Common CRM feature needed for data migration and reporting. Also cleanup: Prisma schema backslash comments to standard // format [S12]. |  |  |
| IFC-252 | Contact Router Security — Tenant Isolation Fixes. CRITICAL: (1) search procedure has no createTenantWhereClause — cross-tenant search by name/email (R-02). (2) logActivity transaction uses raw ctx.prisma with no tenantId in WHERE — cross-tenant update (R-03). (3) bulkEmail/bulkExport no tenant filter — email exfiltration via guessed UUIDs (R-04). (4) stats ignores typedCtx tenant — no tenantId boundary (R-05). (5) getById/getByEmail double-fetch through unscoped domain repo (R-06). Cross-ref: R-01 (prismaWithTenant raw) is cross-cutting and shared with IFC-237. Audit: docs/audit/contact-detail-wiring-audit.md §15. | 2026-03-12 |  |
| IFC-253 | Contact Detail NaN Fix + Auth Guard + Status Enum. CRITICAL: (1) NaN% division by zero — emailsOpened/emailsSent at line 1319 renders 'NaN%' when emailsSent=0 (F-01). (2) Create contact page missing useRequireAuth() — unauthenticated access (F-07). (3) Status enum truncated to 3 values in ContactList/ContactCard (ACTIVE/INACTIVE/ARCHIVED) but create form allows 6 values — unknown status crashes detail page statusConfig (F-08). Audit: docs/audit/contact-detail-wiring-audit.md §16. |  |  |
| IFC-254 | Contact Router Data Integrity Fixes. (1) Raw SQL in getTimeline has no tenant filter and .catch(() => []) swallows errors (R-09). (2) sortBy accepts arbitrary strings — enum whitelist needed (R-10). (3) filterOptions ignores status input (R-12). (4) contactListResponseSchema uses 'data' key but router returns 'contacts' (D-03). (5) phone non-nullable in response schema but mapper returns null (D-08/R-14). Audit: docs/audit/contact-detail-wiring-audit.md §15,§18. | 2026-03-15 |  |
| IFC-255 | Contact Audit Logging. (1) Zero audit logging in all 14 contact router procedures — no ctx.security.auditLogger calls (R-07). (2) Audit event handler PascalCase keys (ContactCreated/Updated/Deleted) don't match domain dot-notation (contact.created/updated) — 5 event types unmapped (D-06). Violates IFC-098 audit requirement. Audit: docs/audit/contact-detail-wiring-audit.md §15,§18. |  |  |
| IFC-256 | Contact Detail Hardcoded Tabs — Tickets & Documents. (1) Tickets tab fully hardcoded with 'TKT-1234' and static timestamp (F-02, F-21). ContactWithRelations has no tickets relation. Tab badge hardcoded to 0. (2) Documents tab hardcoded with 2 static PDFs — apiContact.documents data exists in interface but is completely ignored (F-03). Need: wire tickets via TicketService query, wire documents from apiContact.documents or file infrastructure. Audit: docs/audit/contact-detail-wiring-audit.md §5,§9,§16. |  |  |
| IFC-257 | Contact Detail Action Button Wiring. 18 buttons without onClick handlers: Email (1133), Log Call (1139), Log Activity submit (1426), Add Deal (1872), Create Ticket (1917), Upload (1958), Add Note (2007, 2214), View Map (1341), Play Recording (969), Download (1039), Reply/React/Add Note/Share activity actions (1076-1099), toolbar buttons (1410/1415/1420). Zero useMutation calls on entire page (F-04, F-05, F-06, F-23). Need: add logActivity mutation, wire compose/call to existing components, wire action buttons. Audit: docs/audit/contact-detail-wiring-audit.md §11,§16. |  |  |
| IFC-258 | Contact Frontend Consistency — Avatars, Owner Title, Confidence. (1) Default avatars are Unsplash stranger photos — replace with initials-based generated avatar (F-09). (2) Owner title hardcoded 'Account Executive' — map from owner.role like lead detail (F-16). (3) Confidence hardcoded 0.85 for churnRisk and nextBestAction — use API data (F-17). (4) quietPeriodAlert always null (F-22). (5) ContactForm duplicated between create and edit (F-24). Audit: docs/audit/contact-detail-wiring-audit.md §16. |  |  |
| IFC-259 | Contact Dead UI Fields & Unused Components. (1) location/timezone always empty (F-10). (2) isOnline/isVIP always false — dead badges (F-11). (3) tags always empty array (F-12). (4) ContactDetail.tsx component unused by page — 597 lines with tests but never imported (F-14). (5) ContactCard.tsx unused by list page (F-28). (6) emailsOpened always 0 (F-20). Decision needed: wire to real data, show placeholder states, or remove dead UI. Audit: docs/audit/contact-detail-wiring-audit.md §16. |  |  |
| IFC-260 | Contact Domain Model Fixes. (1) reconstitute() silently substitutes unknown@unknown.com for invalid emails — should Result.fail or throw (D-01). (2) mergeContacts no cross-tenant check — linkToLead correctly checks but merge doesn't (D-02). (3) No ContactDeletedEvent — deleteContact publishes no events, audit handler has mapping but event never emitted (D-04). (4) No ContactEmailChangedEvent — old email not captured in generic ContactUpdatedEvent (D-05). (5) Tags update always emits event without deep equality check (D-07). Audit: docs/audit/contact-detail-wiring-audit.md §18. |  |  |
| IFC-261 | Contact Event Pipeline — Worker Handlers + Event Types. (1) Zero contact event handlers in events worker (W-02). (2) Only 2/8 contact event types in DOMAIN_EVENT_TYPES — missing deleted, account_associated, account_disassociated, converted_from_lead, linked_to_lead, interacted (W-04). (3) No webhook routing for contact events (W-05). (4) No notifications for contact events (W-11). Cross-ref: W-01 (InMemoryEventBus) shared with IFC-250. Audit: docs/audit/contact-detail-wiring-audit.md §17. |  |  |
| IFC-262 | Contact Merge & Duplicate Detection Wiring. (1) mergeContacts deletes secondary without re-parenting all child records — orphaned opportunities/tasks (W-03). (2) findPotentialDuplicates exists in service but no tRPC procedure exposes it (W-09). (3) mergeContacts exists but no router procedure wraps it (W-10). (4) mergeContacts no cross-tenant check between primary and secondary (W-12). (5) associateWithAccount inside mergeContacts causes double-save and potential double event emission (W-13). Audit: docs/audit/contact-detail-wiring-audit.md §17. |  |  |
| IFC-263 | Contact Email & AI Integration. (1) No email-to-contact matching — inbound emails not linked to contacts by sender address (W-06). (2) No automated AI insight triggering — contact create/update doesn't trigger scoring like lead does (W-07). (3) No contact routing rules — leads have routing but contacts don't (W-14). Audit: docs/audit/contact-detail-wiring-audit.md §17. |  |  |
| IFC-264 | Contact Bulk Import & Service Layer Fixes. (1) No CSV upload or bulk create for contacts (W-08). (2) listContacts service returns empty array as default when no ownerId/accountId — latent bug for future callers (W-15). (3) getContactStatistics returns empty for undefined ownerId (W-16). Audit: docs/audit/contact-detail-wiring-audit.md §17. |  |  |
| IFC-265 | Contact Detail Page Tests. (1) Contact detail page (2242 lines) has ZERO page-level tests (T-01). (2) Tenant isolation NEVER tested in 2878 lines of router tests (T-04). (3) logActivity missing activity type coverage in tests (T-06). (4) getById relations (activities, notes, opportunities, aiInsight) not asserted (T-07). (5) Tab content rendering not verified in component tests (T-08). Audit: docs/audit/contact-detail-wiring-audit.md §19. |  |  |
| IFC-266 | Contact List/Create Page Tests + E2E. (1) Contact list page has ZERO page tests (T-02). (2) Contact create page has ZERO page tests — auth guard gap F-07 would be caught (T-03). (3) Bulk selection (select all, bulk email, bulk export) untested (T-05). (4) Contract tests missing for bulkEmail, bulkExport, bulkDelete (T-09). (5) No E2E Playwright tests for contact CRUD flow (T-10). Audit: docs/audit/contact-detail-wiring-audit.md §19. |  |  |
| IFC-267 | Account Detail No-Op Action Buttons. Wire 6 non-functional buttons: (1) Create Deal button no onClick (F-05, AccountDetail.tsx:229). (2) Add Contact button no onClick in overview (F-06, AccountDetail.tsx:233). (3-4) Add Contact buttons no onClick in contacts tab header and empty state (F-07/F-08, AccountContactsList.tsx:61,85). (5-6) Create Opportunity buttons no onClick in opportunities tab header and empty state (F-10/F-11, AccountOpportunitiesList.tsx:68,116). Each button should open the appropriate create form or association dialog with accountId pre-filled. Audit: docs/audit/account-detail-wiring-audit.md sections 3-5. | 2026-03-12 |  |
| IFC-268 | Account Owner Display & Assignment. (1) Owner card shows literal 'Owner Assigned' and 'Account Manager' text instead of actual owner name/title — ownerId exists but owner relation not included in getById (F-01). (2) No owner assignment UI or mutation (F-02). Fix: include owner relation in getById query; display real owner name and role; add owner assignment combobox or dialog with user search mutation. Audit: docs/audit/account-detail-wiring-audit.md section 2. | 2026-03-18 |  |
| IFC-269 | Account Backend Tenant Isolation & Security. (1) CRITICAL: filterOptions uses raw ctx.prisma instead of prismaWithTenant for user lookup — tenant data leak (B-01, account.router.ts:445). (2) PrismaAccountRepository has NO tenantId filter on any method — single-layer defense (B-02). (3) existsByName blocks same name across all tenants — should be per-tenant (B-03). (4) sortBy parameter unsanitized — potential Prisma orderBy injection (B-04). (5) TOCTOU window in update/delete without transaction (B-05). (6) Zero audit logging on all account mutations (B-07). Audit: docs/audit/account-detail-wiring-audit.md sections 11-12. | 2026-04-06 |  |
| IFC-270 | Account Router Missing Procedures & Update Fix. (1) Update procedure silently drops revenue/employees/industry/parentAccountId fields accepted by schema (B-08). (2) accountListResponseSchema uses 'data' key but router returns 'accounts' — mismatch (B-09). (3) No updateRevenue procedure — domain Account.updateRevenue() unreachable via API (B-10). (4) No updateEmployeeCount procedure (B-11). (5) No categorizeIndustry procedure (B-12). (6) mapAccountToResponse returns raw WebsiteUrl value object instead of string (B-13). Audit: docs/audit/account-detail-wiring-audit.md section 12. |  |  |
| IFC-271 | Account Domain Model Fixes. (1) No AccountDeletedEvent — deletions produce no domain event; audit handler has mapping but event never emitted (D-01). (2) Account.toJSON() omits tenantId (B-15). (3) updateAccountInfo return value (Result) discarded by service — silent validation failures (B-16). (4) user!.userId non-null assertion in router (B-06). Audit: docs/audit/account-detail-wiring-audit.md sections 11-13. |  |  |
| IFC-272 | Account Event Pipeline — Worker Handlers + Event Types. (1) Zero account event handlers in events worker (W-01). (2) Zero account event types in DOMAIN_EVENT_TYPES map (W-02). (3) Audit handler has 3 account event mappings (Created/Updated/Deleted) but events never reach it because worker has no handlers and dispatcher has no types (W-03). Add event handlers for AccountCreated, AccountUpdated, AccountDeleted (requires IFC-271), AccountRevenueUpdated, AccountHierarchyUpdated, AccountIndustryCategorized to events worker. Register all types in DOMAIN_EVENT_TYPES. Cross-ref: W-01/W-02 pattern shared with Contact (IFC-261). Audit: docs/audit/account-detail-wiring-audit.md section 14. |  | IFC-271:FS |
| IFC-273 | Account List Page Type Safety & Filter Enums. (1) serverStats cast to any loses type safety (L-01, AccountsPageClient.tsx:154). (2) Double unsafe cast for withOpportunities stat (L-02, AccountsPageClient.tsx:206-208). (3) AccountTier type and getAccountTier() duplicated locally in AccountCard.tsx instead of using domain enum (L-04). (4) Contact status filter uses hardcoded inline option values instead of ContactStatus domain enum (F-09, AccountContactsList.tsx:81-83). (5) Opportunity stage filter uses hardcoded inline strings instead of OpportunityStage domain enum (F-12, AccountOpportunitiesList.tsx:109-114). Audit: docs/audit/account-detail-wiring-audit.md sections 4-5, 15. |  |  |
| IFC-274 | Account Activity Timeline — Replace Stub Data. AccountService.getAccountActivity() (lines 748-785) returns synthetic/stub activities with hardcoded descriptions and broken cursor pagination — not real Activity model records (F-13). Replace with real activity feed from ActivityFeed component or Activity model queries. Should use same pattern as Lead/Contact activity tabs. Audit: docs/audit/account-detail-wiring-audit.md section 6. |  |  |
| IFC-275 | Account Create & Edit Forms. (1) No account create form page — router has create procedure but no frontend consumer (F-16). Create page at accounts/(list)/new/page.tsx with form for all account fields. (2) No account edit form — Edit button navigates but lands on 404 (F-17). Create edit form page or inline edit mode using router update procedure. Both forms should validate with accountSchema. Audit: docs/audit/account-detail-wiring-audit.md section 10. |  | IFC-270:FS |
| IFC-276 | Account Contract Test + Test Gaps. (1) Accounts is the ONLY entity without a contract test file (T-01). (2) No-op buttons untested — 6 CRITICAL no-op buttons have no click behavior tests (T-02). (3) Tenant isolation untested in router tests (T-03). (4) No E2E Playwright tests for account CRUD flow (T-04). (5) Owner display untested — tests don't verify owner name/title rendering (T-05). Audit: docs/audit/account-detail-wiring-audit.md section 19. |  | IFC-267:FS;IFC-268:FS |
| IFC-277 | Account Service Dead Code & Minor Fixes. (1) calculateAccountHealth() unreachable from router — decide: wire (D-02). (2) getAccountWithContext() unreachable from router — decide: wire (D-03). (3) Revenue NaN risk — Number(revenue) on non-numeric string renders '$NaNM' (F-14). (4) Health bar arbitrary scale — no documented max value (F-15). (5) Contact firstName[0] undefined risk in AccountContactsList (F-18). (6) findAncestors N+1 query pattern (B-14). (7) Merge/Archive toast stubs referencing IFC-044 (F-03/F-04). Audit: docs/audit/account-detail-wiring-audit.md sections 9, 13, 16-17. |  |  |
| IFC-278 | Deal Detail Page — Replace SAMPLE_DEAL with Real API Data. CRITICAL: Entire deal detail page (deals/[id]/page.tsx 792 lines) is 100% hardcoded with SAMPLE_DEAL constant (lines 116-150) — zero API calls. The dealId from useParams() is captured but never used for data fetch (line 684). Must: (1) Replace SAMPLE_DEAL with trpc.opportunity.getById query using dealId param. (2) Add useRequireAuth() guard (F-03 — detail page is the only unguarded page). (3) Fix STAGES constant to match domain 7-stage enum (F-04 — uses CLOSED instead of CLOSED_WON/CLOSED_LOST, omits NEEDS_ANALYSIS). (4) Fix StageProgress to use deal prop instead of SAMPLE_DEAL.value directly (F-05). (5) Remove _SAMPLE_ACTIVITIES dead code (F-06). (6) Add clickable links to account/contact detail pages (F-07). (7) Wire real owner data from getById relation include. Router getById exists (IFC-186). Cross-entity patterns from Lead 360 wiring (2026-03-04) should be followed. Audit: docs/audit/deal-detail-wiring-audit.md section 1. | 2026-03-17 |  |
| IFC-279 | Deal Create Form + /deals/new Route. No deal creation form exists — both 'New Deal' buttons (deals/(list)/page.tsx lines 454 and 492) link to /deals/new which is a 404 (F-02). Must: (1) Create page at apps/web/src/app/deals/new/page.tsx or deals/(list)/new/page.tsx. (2) Form fields: name, value (money input), stage (default PROSPECTING), probability, expectedCloseDate (date picker), accountId (account search combobox), contactId (contact search combobox). (3) Wire to trpc.opportunity.create mutation. (4) Add useRequireAuth(). (5) Validate with createOpportunitySchema. (6) Success: navigate to /deals/[newId]. Audit: docs/audit/deal-detail-wiring-audit.md section 1 F-02. | 2026-03-17 |  |
| IFC-280 | Deal Detail Action Buttons — Wire 14 No-Ops. (1) EntityHeader 6 no-ops all with onClick: () => {} (F-08): Won → moveStage CLOSED_WON with success dialog; Lost → moveStage CLOSED_LOST with LossReasonModal (reuse from list page); Edit → navigate to edit form or open inline edit; Clone → duplicate mutation; Archive → set archived status; Delete → AlertDialog confirmation + delete mutation. (2) Stakeholder/Product/File 8 no-ops (F-09): Edit stakeholders → open edit dialog; Account icons → navigate to /accounts/[id] and website; Contact icons → mailto: and tel: links; Add Product → product association dialog; File upload → upload mutation; File links → presigned URL download. Depends on IFC-278 (real data needed for mutations). Audit: docs/audit/deal-detail-wiring-audit.md section 2. |  | IFC-278:FS |
| IFC-281 | Deal Backend Tenant Isolation & Audit Logging. (1) CRITICAL: PrismaOpportunityRepository.findById() (line 82) has NO tenantId WHERE clause — cross-tenant read/write/delete possible via getById/update/delete/moveStage/dealForecast (B-01). Fix: add tenantId to findById() and findByOwnerId() WHERE clauses. (2) CRITICAL: Zero auditLogger.log() calls across all 16 opportunity + pipeline-config procedures (B-02). Add audit logging to create/update/delete/moveStage (especially CLOSED_WON/CLOSED_LOST) and pipeline config changes. (3) Create notification in create procedure uses raw ctx.prisma instead of prismaWithTenant (B-03). Audit: docs/audit/deal-detail-wiring-audit.md sections 5-6. | 2026-03-18 |  |
| IFC-282 | Deal Router Correctness Fixes. (1) Name updates silently dropped — service has TODO 'Add updateName method' (B-04, OpportunityService.ts:313). Add updateName to domain and wire in service. (2) data.probability?.value unwrapping may be undefined if percentageSchema returns plain number (B-05, router:460). Verify and fix. (3) opportunityListResponseSchema key 'data' vs router key 'opportunities' mismatch (B-07, validators:88 vs router:437). (4) throwOpportunityCreateError maps VALIDATION_ERROR to NOT_FOUND — wrong HTTP semantic (B-09, router:55). (5) validateStageDeactivation throws plain Error → 500 instead of BAD_REQUEST (B-10, validators:214). (6) mapOpportunityToResponse drops closedAt field (B-11, mappers.ts:88-108). (7) CLOSED_LOST no-reason passes Zod but fails at service (B-12, router:322). Audit: docs/audit/deal-detail-wiring-audit.md section 6. |  |  |
| IFC-283 | Deal Event Pipeline — Worker Handlers. (1) Only opportunity.won has a handler in events worker; opportunity.created, opportunity.stage_changed, and opportunity.lost are defined in DOMAIN_EVENT_TYPES but have NO registered handlers (W-01). (2) No OpportunityDescriptionUpdatedEvent defined — description changes emit no event (W-02). Add handlers for the 3 missing event types. Add OpportunityDescriptionUpdatedEvent to domain. Cross-ref: same pattern as Account (IFC-272) and Contact (IFC-261). Audit: docs/audit/deal-detail-wiring-audit.md section 7. |  |  |
| IFC-284 | Deal Forecast Algorithm Fixes. (1) buildWinRateTrend hardcodes months ['May','Jun','Jul','Aug','Sep','Oct'] regardless of current date — semantically incorrect data (B-06, forecast-algorithm.ts:283). Fix to derive from actual 6-month window. (2) DEFAULT_STAGE_PROBABILITIES diverge: validators has NEEDS_ANALYSIS=30/PROPOSAL=70 while domain/service/router/forecast-algorithm uses 40/60 (B-08). Unify to single source of truth. (3) buildMonthlyRevenue uses locale-dependent toLocaleString for month names — breaks on non-en-US servers (B-15, forecast-algorithm.ts:269). (4) Forecast trend values hardcoded as 12 and 5 in forecast page (F-16, deals/forecast/page.tsx:709-710). Compute from API data. Audit: docs/audit/deal-detail-wiring-audit.md sections 4, 6. |  |  |
| IFC-285 | Deal Service Dead Code & Minor Fixes. (1) 11 dead service methods unreachable from router: listOpportunities, advanceStage, updateValue, updateProbability, updateExpectedCloseDate, reopenOpportunity, getPipelineForecast, getOpportunitiesClosingSoon, getHighValueOpportunities, getOpportunitiesByAccount, getOpportunitiesByContact, getWinRateStatistics (B-13). Decide: wire to router or remove. (2) toMoney/toPercentage silent zero fallback on DB corruption (B-14). (3) TOCTOU in stage transitions — no optimistic locking (B-16). (4) Event publish failure swallowed with console.error only (B-17). (5) DealQuickView is a 49-line stub not used anywhere (F-13). (6) RecommendedActions.onActionClick not wired at forecast page level (F-18). (7) Sidebar deals config settingsHref points to /settings/deals instead of /settings/pipeline (W-03). Audit: docs/audit/deal-detail-wiring-audit.md sections 6-7. |  |  |
| IFC-286 | Deal Detail Page Tests + E2E. (1) Deal detail page (792 lines) has ZERO test coverage (T-01). (2) No E2E Playwright tests for /deals, /deals/[id], or /deals/forecast — only pipeline-settings has E2E (T-02). (3) No cross-tenant access attempt test in router tests (T-03). (4) Contract test missing NEEDS_ANALYSIS stage in test data (T-04). Depends on IFC-278 (real data) and IFC-280 (wired buttons). Audit: docs/audit/deal-detail-wiring-audit.md section 10. |  | IFC-278:FS;IFC-280:FS |
| IFC-287 | Deal Filter Wiring & Type Safety. (1) DealFilters state (filters) captured in page but NEVER passed to trpc.opportunity.list.useQuery — ownerId and dateRange selections have no effect on kanban view data (F-10, deals/(list)/page.tsx:214,226). (2) 'More Filters' button has no onClick handler (F-11, DealFilters.tsx). (3) Owner filter only has 2 hardcoded options: 'All Deals' and 'My Deals' — no dynamic user list (F-12). (4) transformDeals uses loose Record<string,unknown> casting at API boundary instead of typed response (F-19, types.ts:102-119). Wire filters to API query params; add server-side owner filter with user list; type-safe API response handling. Audit: docs/audit/deal-detail-wiring-audit.md sections 3, 8. |  |  |
| IFC-288 | Analytics Dashboard Endpoint Wiring. Wire 9 dead analytics router endpoints: exportConversionFunnel, exportMetrics, exportReport, getConversionFunnel, getLeadMetrics, getOverview, getSalesMetrics, getTimeSeriesData, leadStats. Backend built (ANALYTICS-001), zero web callers. Decision: wire to analytics dashboard UI (IFC-037) with charts/export buttons. Audit: artifacts/reports/dead-endpoints-audit.csv rows 20-28. |  | IFC-037:FS |
| IFC-289 | Agent/Conversation Router Frontend Wiring. 17 dead endpoints (13 conversation.* + 4 agent.*) with zero frontend callers. Frontend uses autoResponse/aiReview/aiMonitoring routers that query the same DB tables directly bypassing the canonical conversation router. Fix: wire all endpoints to proper frontend consumers — chat panel, agent-approvals, AI Search, admin dashboard — and refactor aiMonitoring to delegate to conversation router instead of duplicating DB queries. Audit: artifacts/reports/dead-endpoints-audit.csv rows 4-18. |  | IFC-139:FS;IFC-148:FS |
| IFC-290 | Integrations Dashboard Endpoint Wiring. Wire 5 dead integrations router endpoints: getAllConnectorsHealth, getConnectorHealth, getConnectorsByType, getDashboardConfig, triggerSync. Backend built (IFC-003), zero web callers. Decision: build integrations settings page to consume these. Audit: artifacts/reports/dead-endpoints-audit.csv rows 61-65. |  |  |
| IFC-291 | Feedback Submission UI Wiring. Wire 5 dead feedback router endpoints: checkRetraining, exportTrainingData, getForLead, submitCorrection, submitSimple. Backend built (IFC-068), zero web callers. Decision: add feedback UI to AI review workflow. Audit: artifacts/reports/dead-endpoints-audit.csv rows 55-60. |  | IFC-068:FS |
| IFC-292 | Legal Document Management UI Wiring. Wire 6 dead legal router endpoints: appointments.findNextSlot, documents.grantAccess, documents.placeLegalHold, documents.releaseLegalHold, documents.revokeAccess, documents.submitForReview. Backend built (IFC-137, IFC-140, IFC-152), zero web callers. Decision: build legal management UIs to consume these. Audit: artifacts/reports/dead-endpoints-audit.csv rows 78-83. |  | IFC-140:FS;IFC-152:FS |
| IFC-293 | Security Admin + Notifications Settings Wiring. Wire 6 dead endpoints: security.audit.getByResource, security.audit.getMyActivity, security.audit.getSecurityEvents, notifications.batchAction, notifications.getPreferences, notifications.updatePreferences. Backend built (IFC-098, IFC-072, IFC-046, IFC-157), zero web callers. Decision: build admin security page + notification settings page (PG-116). Audit: artifacts/reports/dead-endpoints-audit.csv rows 93-95, 101-103. |  | IFC-157:FS |
| IFC-294 | Experiment + Intelligence + AI Monitoring Wiring. Wire 7 dead endpoints: experiment.assignVariant, experiment.recordConversion, experiment.recordScore, intelligence.getInsightsSummary, intelligence.triggerPrediction, intelligence.updateContactInsights, ai-monitoring.getHallucinationReport. Backend built (IFC-025, IFC-095, IFC-117), zero web callers. Decision: wire to experiment dashboard (IFC-181) and AI monitoring page. Audit: artifacts/reports/dead-endpoints-audit.csv rows 19, 52-54, 66-69. |  | IFC-025:FS;IFC-095:FS |
| IFC-295 | Billing/Auth/Subscription/Admin Miscellaneous Wiring. Wire 8 dead endpoints: billing.ensureCustomer, billing.getUsageMetrics, billing.updateBillingInformation, auth.getSessions, subscription.getPlans, subscription.toggleModule, autoresponse.submitForApproval, admin.queues.getByName. Backend built across IFC-006/IFC-014/IFC-028/IFC-099, zero web callers. admin.queues.getByName is completely phantom (no tests, no matrix entry) � needs queue inspector or admin tools UI. Audit: artifacts/reports/dead-endpoints-audit.csv rows 2, 29, 33-37, 104-105. |  |  |
| IFC-296 | Queue Scheduler Administration — Implement queuesAdmin tRPC router with live BullMQ stats and scheduler CRUD (list/pause/resume/retry/delete), wire to /agent-approvals/agents page. Replace stub router with live Redis/BullMQ data. Add queue health panel to ActiveAgentsDashboard showing scheduler cron patterns, queue counts, and action buttons. | 2026-03-08 | IFC-015,IFC-197,PG-151 |

## Version 2 (saved 2026-04-13)

Note of the change: chore(project-tracker): sprint metrics JSON updates

Added:

| ID | Task | Start | Finish |
| --- | --- | --- | --- |
| IFC-297 | AI Monitoring Data Persistence — Replace in-memory singleton monitoring data (driftDetector, latencyMonitor, hallucinationChecker, roiTracker) with DB-backed persistence via new AIMonitoringEvent model. Add ai-worker flush service to write metrics to DB periodically. Rewrite monitoring router to query DB instead of in-process singletons. Enables multi-process deployments to share monitoring data. | 2026-03-15 | IFC-015,IFC-025 |
| IFC-298 | HelpArticle Prisma Model + Migration | 2026-03-10 | PG-045 |

Removed: IFC-234 Settings Pages Wiring - 4 settings pages with hardcoded data and inert buttons. Team: hardcoded 4-person array, inert Invite/Remove/Role buttons. Integrations: hardcoded provider list, inert Connect/Disconnect buttons. Notifications: hardcoded const, no useState, no onClick on toggles. Account: profile name/email has no save mutation, 3 security buttons (Change Password, Enable 2FA, Download Data) have no onClick. Wire all to real tRPC mutations and queries.

## Version 3 (saved 2026-04-19)

Note of the change: chore(project-tracker): update metrics, sprint data, and tracker UI

Added:

| ID | Task |
| --- | --- |
| IFC-234 | Settings Pages Wiring - 4 settings pages with hardcoded data and inert buttons. Team: hardcoded 4-person array, inert Invite/Remove/Role buttons. Integrations: hardcoded provider list, inert Connect/Disconnect buttons. Notifications: hardcoded const, no useState, no onClick on toggles. Account: profile name/email has no save mutation, 3 security buttons (Change Password, Enable 2FA, Download Data) have no onClick. Wire all to real tRPC mutations and queries. |

Removed: IFC-297 AI Monitoring Data Persistence — Replace in-memory singleton monitoring data (driftDetector, latencyMonitor, hallucinationChecker, roiTracker) with DB-backed persistence via new AIMonitoringEvent model. Add ai-worker flush service to write metrics to DB periodically. Rewrite monitoring router to query DB instead of in-process singletons. Enables multi-process deployments to share monitoring data.; IFC-298 HelpArticle Prisma Model + Migration

## Version 4 (saved 2026-06-09)

Note of the change: Merge branch 'main' into chore/ci-preship-hardening

Added:

| ID | Task |
| --- | --- |
| IFC-233 | Wire Unused Backend tRPC Endpoints - ~20 built but unused tRPC procedures. Lead: convertToDeal, getHotLeads, getReadyForQualification, bulkScore. Contact: getByEmail, linkToAccount, unlinkFromAccount, search, linkToLead, unlinkFromLead, getTimeline, logActivity. Opportunity: create, getById, getHistory, getProducts, getPipeline, stats. Account: create, update. Task: stats, assign, reschedule. Wire each to appropriate frontend UI or remove if not needed. |

Removed: IFC-296 Queue Scheduler Administration — Implement queuesAdmin tRPC router with live BullMQ stats and scheduler CRUD (list/pause/resume/retry/delete), wire to /agent-approvals/agents page. Replace stub router with live Redis/BullMQ data. Add queue health panel to ActiveAgentsDashboard showing scheduler cron patterns, queue counts, and action buttons.

## Version 5 (saved 2026-06-10)

Note of the change: feat(IFC-256): wire contact detail Tickets & Documents tabs to real API data

Changed:

| ID | Task | Start |
| --- | --- | --- |
| IFC-256 | Contact Detail Hardcoded Tabs — Tickets & Documents. (1) Tickets tab fully hardcoded with 'TKT-1234' and static timestamp (F-02, F-21). ContactWithRelations has no tickets relation. Tab badge hardcoded to 0. (2) Documents tab hardcoded with 2 static PDFs — apiContact.documents data exists in interface but is completely ignored (F-03). Need: wire tickets via TicketService query, wire documents from apiContact.documents or file infrastructure. Audit: docs/audit/contact-detail-wiring-audit.md §5,§9,§16. | none → 2026-06-10 |

## Version 6 (saved 2026-06-12)

Note of the change: fix(contacts): address codex-review findings on IFC-257 action wiring

Changed:

| ID | Task | Start |
| --- | --- | --- |
| IFC-257 | Contact Detail Action Button Wiring. 18 buttons without onClick handlers: Email (1133), Log Call (1139), Log Activity submit (1426), Add Deal (1872), Create Ticket (1917), Upload (1958), Add Note (2007, 2214), View Map (1341), Play Recording (969), Download (1039), Reply/React/Add Note/Share activity actions (1076-1099), toolbar buttons (1410/1415/1420). Zero useMutation calls on entire page (F-04, F-05, F-06, F-23). Need: add logActivity mutation, wire compose/call to existing components, wire action buttons. Audit: docs/audit/contact-detail-wiring-audit.md §11,§16. | none → 2026-06-13 |

## Version 7 (saved 2026-06-13)

Note of the change: chore(metrics): mark IFC-265 Completed + refresh SESSION_CONTEXT (wave-3 reconcile)

Changed:

| ID | Task | Start |
| --- | --- | --- |
| IFC-265 | Contact Detail Page Tests. (1) Contact detail page (2242 lines) has ZERO page-level tests (T-01). (2) Tenant isolation NEVER tested in 2878 lines of router tests (T-04). (3) logActivity missing activity type coverage in tests (T-06). (4) getById relations (activities, notes, opportunities, aiInsight) not asserted (T-07). (5) Tab content rendering not verified in component tests (T-08). Audit: docs/audit/contact-detail-wiring-audit.md §19. | none → 2026-06-13 |
| IFC-270 | Account Router Missing Procedures & Update Fix. (1) Update procedure silently drops revenue/employees/industry/parentAccountId fields accepted by schema (B-08). (2) accountListResponseSchema uses 'data' key but router returns 'accounts' — mismatch (B-09). (3) No updateRevenue procedure — domain Account.updateRevenue() unreachable via API (B-10). (4) No updateEmployeeCount procedure (B-11). (5) No categorizeIndustry procedure (B-12). (6) mapAccountToResponse returns raw WebsiteUrl value object instead of string (B-13). Audit: docs/audit/account-detail-wiring-audit.md section 12. | none → 2026-06-12 |
| IFC-273 | Account List Page Type Safety & Filter Enums. (1) serverStats cast to any loses type safety (L-01, AccountsPageClient.tsx:154). (2) Double unsafe cast for withOpportunities stat (L-02, AccountsPageClient.tsx:206-208). (3) AccountTier type and getAccountTier() duplicated locally in AccountCard.tsx instead of using domain enum (L-04). (4) Contact status filter uses hardcoded inline option values instead of ContactStatus domain enum (F-09, AccountContactsList.tsx:81-83). (5) Opportunity stage filter uses hardcoded inline strings instead of OpportunityStage domain enum (F-12, AccountOpportunitiesList.tsx:109-114). Audit: docs/audit/account-detail-wiring-audit.md sections 4-5, 15. | none → 2026-06-13 |
| IFC-280 | Deal Detail Action Buttons — Wire 14 No-Ops. (1) EntityHeader 6 no-ops all with onClick: () => {} (F-08): Won → moveStage CLOSED_WON with success dialog; Lost → moveStage CLOSED_LOST with LossReasonModal (reuse from list page); Edit → navigate to edit form or open inline edit; Clone → duplicate mutation; Archive → set archived status; Delete → AlertDialog confirmation + delete mutation. (2) Stakeholder/Product/File 8 no-ops (F-09): Edit stakeholders → open edit dialog; Account icons → navigate to /accounts/[id] and website; Contact icons → mailto: and tel: links; Add Product → product association dialog; File upload → upload mutation; File links → presigned URL download. Depends on IFC-278 (real data needed for mutations). Audit: docs/audit/deal-detail-wiring-audit.md section 2. | none → 2026-06-13 |
| IFC-282 | Deal Router Correctness Fixes. (1) Name updates silently dropped — service has TODO 'Add updateName method' (B-04, OpportunityService.ts:313). Add updateName to domain and wire in service. (2) data.probability?.value unwrapping may be undefined if percentageSchema returns plain number (B-05, router:460). Verify and fix. (3) opportunityListResponseSchema key 'data' vs router key 'opportunities' mismatch (B-07, validators:88 vs router:437). (4) throwOpportunityCreateError maps VALIDATION_ERROR to NOT_FOUND — wrong HTTP semantic (B-09, router:55). (5) validateStageDeactivation throws plain Error → 500 instead of BAD_REQUEST (B-10, validators:214). (6) mapOpportunityToResponse drops closedAt field (B-11, mappers.ts:88-108). (7) CLOSED_LOST no-reason passes Zod but fails at service (B-12, router:322). Audit: docs/audit/deal-detail-wiring-audit.md section 6. | none → 2026-06-13 |

## Version 8 (saved 2026-06-14)

Note of the change: Merge remote-tracking branch 'origin/main' into fix/issue-261

Changed:

| ID | Task | Start |
| --- | --- | --- |
| IFC-266 | Contact List/Create Page Tests + E2E. (1) Contact list page has ZERO page tests (T-02). (2) Contact create page has ZERO page tests — auth guard gap F-07 would be caught (T-03). (3) Bulk selection (select all, bulk email, bulk export) untested (T-05). (4) Contract tests missing for bulkEmail, bulkExport, bulkDelete (T-09). (5) No E2E Playwright tests for contact CRUD flow (T-10). Audit: docs/audit/contact-detail-wiring-audit.md §19. | none → 2026-06-14 |

## Version 9 (saved 2026-06-15)

Note of the change: chore(metrics): mark IFC-287 Completed (deal filter wiring)

Changed:

| ID | Task | Start |
| --- | --- | --- |
| IFC-287 | Deal Filter Wiring & Type Safety. (1) DealFilters state (filters) captured in page but NEVER passed to trpc.opportunity.list.useQuery — ownerId and dateRange selections have no effect on kanban view data (F-10, deals/(list)/page.tsx:214,226). (2) 'More Filters' button has no onClick handler (F-11, DealFilters.tsx). (3) Owner filter only has 2 hardcoded options: 'All Deals' and 'My Deals' — no dynamic user list (F-12). (4) transformDeals uses loose Record<string,unknown> casting at API boundary instead of typed response (F-19, types.ts:102-119). Wire filters to API query params; add server-side owner filter with user list; type-safe API response handling. Audit: docs/audit/deal-detail-wiring-audit.md sections 3, 8. | none → 2026-06-14 |

## Version 10 (saved 2026-06-29)

Note of the change: fix(ifc-234): codex round 2 — correct connector classification + empty state

Changed:

| ID | Task | Start |
| --- | --- | --- |
| IFC-234 | Settings Pages Wiring - 4 settings pages with hardcoded data and inert buttons. Team: hardcoded 4-person array, inert Invite/Remove/Role buttons. Integrations: hardcoded provider list, inert Connect/Disconnect buttons. Notifications: hardcoded const, no useState, no onClick on toggles. Account: profile name/email has no save mutation, 3 security buttons (Change Password, Enable 2FA, Download Data) have no onClick. Wire all to real tRPC mutations and queries. | none → 2026-06-29 |
| IFC-247 | Lead Detail Page Tests. Lead detail page (2200+ lines) has ZERO component tests [T1]. Also untested: addNote procedure [T4] and logActivity procedure [T5] added 2026-03-04. Write comprehensive tests: (1) Component render tests for all tabs (Overview, Activity, AI Insights, Lead IQ, Notes, Files, Emails, Tasks). (2) Mutation tests for addNote and logActivity. (3) Error state tests (404, 500, retry). (4) AI insight null-state rendering. (5) Activity feed toggle. Must cover 2026-03-04 wiring fixes. | none → 2026-06-29 |

## Version 11 (saved 2026-10-07)

Note of the change: chore(plan): settle sprint 18 completion-integrity findings (#828)

Added:

| ID | Task | Start | Finish |
| --- | --- | --- | --- |
| IFC-296 | Queue Scheduler Administration — Implement queuesAdmin tRPC router with live BullMQ stats and scheduler CRUD (list/pause/resume/retry/delete), wire to /agent-approvals/agents page. Replace stub router with live Redis/BullMQ data. Add queue health panel to ActiveAgentsDashboard showing scheduler cron patterns, queue counts, and action buttons. | 2026-03-08 | IFC-015,IFC-197,PG-151 |

Removed: IFC-233 Wire Unused Backend tRPC Endpoints - ~20 built but unused tRPC procedures. Lead: convertToDeal, getHotLeads, getReadyForQualification, bulkScore. Contact: getByEmail, linkToAccount, unlinkFromAccount, search, linkToLead, unlinkFromLead, getTimeline, logActivity. Opportunity: create, getById, getHistory, getProducts, getPipeline, stats. Account: create, update. Task: stats, assign, reschedule. Wire each to appropriate frontend UI or remove if not needed.

## Version 12 (saved 2026-10-25)

Note of the change: chore(ifc-117): repoint the tracked artifacts to the otel monitoring files

Added:

| ID | Task |
| --- | --- |
| IFC-233 | Wire Unused Backend tRPC Endpoints - ~20 built but unused tRPC procedures. Lead: convertToDeal, getHotLeads, getReadyForQualification, bulkScore. Contact: getByEmail, linkToAccount, unlinkFromAccount, search, linkToLead, unlinkFromLead, getTimeline, logActivity. Opportunity: create, getById, getHistory, getProducts, getPipeline, stats. Account: create, update. Task: stats, assign, reschedule. Wire each to appropriate frontend UI or remove if not needed. |

Removed: IFC-296 Queue Scheduler Administration — Implement queuesAdmin tRPC router with live BullMQ stats and scheduler CRUD (list/pause/resume/retry/delete), wire to /agent-approvals/agents page. Replace stub router with live Redis/BullMQ data. Add queue health panel to ActiveAgentsDashboard showing scheduler cron patterns, queue counts, and action buttons.

## Version 13 (saved 2026-10-27)

Note of the change: feat(env-008-ai): production slos, service dashboard and railway self-healing as code (#1045)

Added:

| ID | Task | Start |
| --- | --- | --- |
| IFC-231 | Lead List Saved Views and Filter Persistence - Sidebar view params (?view=my, ?view=starred, ?segment=hot) are completely ignored by LeadsPageClient (no useSearchParams call). Fix: (1) Wire URL params to filter state, (2) Add saved views CRUD (name, filters, columns, sort), (3) Column visibility picker UI exposing DataTable VisibilityState, (4) Persist filter/sort/view selection in localStorage or user preferences. |  |
| IFC-232 | Sidebar Broken Links Cleanup - 1 remaining broken navigation link: /deals/trash has no page.tsx (sidebar config deals.ts links to it but route 404s). Original 17 broken nav links and 6 settings links resolved by PG-025/PG-045/PG-174 and other sprint work. Fix: create trash/deleted-deals page at apps/web/src/app/deals/trash/page.tsx OR remove the sidebar item from deals.ts if soft-delete is not yet supported. | 2026-04-11 |

Removed: IFC-295 Billing/Auth/Subscription/Admin Miscellaneous Wiring. Wire 8 dead endpoints: billing.ensureCustomer, billing.getUsageMetrics, billing.updateBillingInformation, auth.getSessions, subscription.getPlans, subscription.toggleModule, autoresponse.submitForApproval, admin.queues.getByName. Backend built across IFC-006/IFC-014/IFC-028/IFC-099, zero web callers. admin.queues.getByName is completely phantom (no tests, no matrix entry) � needs queue inspector or admin tools UI. Audit: artifacts/reports/dead-endpoints-audit.csv rows 2, 29, 33-37, 104-105.

## Version 14 (saved 2026-10-31)

Note of the change: Merge origin/main (8138a9eca) into fix/1075-api-router-cuid-ids

Added:

| ID | Task |
| --- | --- |
| IFC-230 | Unify Lead Create/Edit Form - Create page (leads/(list)/new/page.tsx, 1029 lines) and Edit page (leads/[id]/edit/page.tsx, 464 lines) share no components. Issues: different API clients (trpc vs api), different field sets (BANT only in create but silently dropped), different styling, different validation, no auth guard on create. Fix: extract shared LeadForm component, unify API client, include all fields in both views, consistent styling. |

Removed: IFC-293 Security Admin + Notifications Settings Wiring. Wire 6 dead endpoints: security.audit.getByResource, security.audit.getMyActivity, security.audit.getSecurityEvents, notifications.batchAction, notifications.getPreferences, notifications.updatePreferences. Backend built (IFC-098, IFC-072, IFC-046, IFC-157), zero web callers. Decision: build admin security page + notification settings page (PG-116). Audit: artifacts/reports/dead-endpoints-audit.csv rows 93-95, 101-103.; IFC-294 Experiment + Intelligence + AI Monitoring Wiring. Wire 7 dead endpoints: experiment.assignVariant, experiment.recordConversion, experiment.recordScore, intelligence.getInsightsSummary, intelligence.triggerPrediction, intelligence.updateContactInsights, ai-monitoring.getHallucinationReport. Backend built (IFC-025, IFC-095, IFC-117), zero web callers. Decision: wire to experiment dashboard (IFC-181) and AI monitoring page. Audit: artifacts/reports/dead-endpoints-audit.csv rows 19, 52-54, 66-69.

## Version 15 (saved 2026-11-08)

Note of the change: chore(plan): regenerate the split plan files after merging main

Added:

| ID | Task |
| --- | --- |
| IFC-229 | Lead Detail Map View - Current map section (lines 1453-1465) is a gradient placeholder with non-functional 'View Map' button. Options: (A) Integrate Mapbox/Leaflet with geocoded address, (B) Link to Google Maps in new tab, (C) Remove placeholder entirely if map not in MVP scope. Needs product decision. |

## Version 16 (saved 2026-11-12)

Note of the change: Merge remote-tracking branch 'origin/main' into fix/ai-worker-use-saved-chain-versions

Added:

| ID | Task | Finish |
| --- | --- | --- |
| IFC-227 | Company-to-Account Navigation Link - Lead detail page shows company name as plain in profile card (line 1352) and info panel (line 1656). Replace with Next.js Link component navigating to /accounts/[accountId]. Requires accountId in lead transform/query. Apply same pattern to Contact and Deal detail pages. |  |
| IFC-228 | Lead Owner Reassignment UI - Owner card on Lead detail (lines 1468-1487) is read-only. Add reassignment capability for MANAGER/ADMIN roles: user picker dropdown, reassign mutation via lead.update, audit trail entry. Apply RBAC check to show/hide reassign button. Extend to Contact and Account detail pages. | IFC-095 |

Removed: IFC-290 Integrations Dashboard Endpoint Wiring. Wire 5 dead integrations router endpoints: getAllConnectorsHealth, getConnectorHealth, getConnectorsByType, getDashboardConfig, triggerSync. Backend built (IFC-003), zero web callers. Decision: build integrations settings page to consume these. Audit: artifacts/reports/dead-endpoints-audit.csv rows 61-65.; IFC-291 Feedback Submission UI Wiring. Wire 5 dead feedback router endpoints: checkRetraining, exportTrainingData, getForLead, submitCorrection, submitSimple. Backend built (IFC-068), zero web callers. Decision: add feedback UI to AI review workflow. Audit: artifacts/reports/dead-endpoints-audit.csv rows 55-60.; IFC-292 Legal Document Management UI Wiring. Wire 6 dead legal router endpoints: appointments.findNextSlot, documents.grantAccess, documents.placeLegalHold, documents.releaseLegalHold, documents.revokeAccess, documents.submitForReview. Backend built (IFC-137, IFC-140, IFC-152), zero web callers. Decision: build legal management UIs to consume these. Audit: artifacts/reports/dead-endpoints-audit.csv rows 78-83.

## Version 17 (saved 2026-11-13)

Note of the change: Merge remote-tracking branch 'origin/main' into perf/preship-web-build-only-when-affected

Added:

| ID | Task | Start |
| --- | --- | --- |
| IFC-226 | Lead Detail Null-State UX - Fix engagement/churn/sentiment showing raw 'Unknown' string when aiInsight is null. Replace with styled 'Not analyzed' state with visual distinction from real AI data. Page: leads/[id]/page.tsx lines 588, 2258. | 2026-03-15 |

Removed: IFC-289 Agent/Conversation Router Frontend Wiring. 17 dead endpoints (13 conversation.* + 4 agent.*) with zero frontend callers. Frontend uses autoResponse/aiReview/aiMonitoring routers that query the same DB tables directly bypassing the canonical conversation router. Fix: wire all endpoints to proper frontend consumers — chat panel, agent-approvals, AI Search, admin dashboard — and refactor aiMonitoring to delegate to conversation router instead of duplicating DB queries. Audit: artifacts/reports/dead-endpoints-audit.csv rows 4-18.

## Version 18 (saved 2026-11-16)

Note of the change: chore(plan): reopen 29 self-claimed tasks whose definition of done is partly met

Added:

| ID | Task | Start | Finish |
| --- | --- | --- | --- |
| IFC-224 | Implement Calendar Webhook Ingestion Routes (Resolves R-008) REOPENED 16/11/2026 (self-claimed done, DoD partly met): DoD 'webhook endpoints receive external calendar events': CalendarWebhookService runs in stub mode; no calendar sync service behind it. | 2027-01-24 | IFC-138 |
| IFC-225 | Convert Lead UX Fix - Backend requires QUALIFIED status but Convert button always visible. Fix: (1) Disable/hide button for non-QUALIFIED leads with guidance tooltip. (2) Add confirmation dialog before conversion. (3) Add createAccount option to conversion flow. (4) Handle conversion errors gracefully. Page: leads/[id]/page.tsx line 1169. | 2026-03-12 |  |

Removed: IFC-288 Analytics Dashboard Endpoint Wiring. Wire 9 dead analytics router endpoints: exportConversionFunnel, exportMetrics, exportReport, getConversionFunnel, getLeadMetrics, getOverview, getSalesMetrics, getTimeSeriesData, leadStats. Backend built (ANALYTICS-001), zero web callers. Decision: wire to analytics dashboard UI (IFC-037) with charts/export buttons. Audit: artifacts/reports/dead-endpoints-audit.csv rows 20-28.

Changed:

| ID | Task | Start |
| --- | --- | --- |
| IFC-228 | Lead Owner Reassignment UI - Owner card on Lead detail (lines 1468-1487) is read-only. Add reassignment capability for MANAGER/ADMIN roles: user picker dropdown, reassign mutation via lead.update, audit trail entry. Apply RBAC check to show/hide reassign button. Extend to Contact and Account detail pages. | none → 2027-03-07 |
| IFC-229 | Lead Detail Map View - Current map section (lines 1453-1465) is a gradient placeholder with non-functional 'View Map' button. Options: (A) Integrate Mapbox/Leaflet with geocoded address, (B) Link to Google Maps in new tab, (C) Remove placeholder entirely if map not in MVP scope. Needs product decision. | none → 2027-03-07 |
| IFC-231 | Lead List Saved Views and Filter Persistence - Sidebar view params (?view=my, ?view=starred, ?segment=hot) are completely ignored by LeadsPageClient (no useSearchParams call). Fix: (1) Wire URL params to filter state, (2) Add saved views CRUD (name, filters, columns, sort), (3) Column visibility picker UI exposing DataTable VisibilityState, (4) Persist filter/sort/view selection in localStorage or user preferences. | none → 2027-08-08 |
| IFC-233 | Wire Unused Backend tRPC Endpoints - ~20 built but unused tRPC procedures. Lead: convertToDeal, getHotLeads, getReadyForQualification, bulkScore. Contact: getByEmail, linkToAccount, unlinkFromAccount, search, linkToLead, unlinkFromLead, getTimeline, logActivity. Opportunity: create, getById, getHistory, getProducts, getPipeline, stats. Account: create, update. Task: stats, assign, reschedule. Wire each to appropriate frontend UI or remove if not needed. | none → 2026-11-15 |
| IFC-234 | Settings Pages Wiring - 4 settings pages with hardcoded data and inert buttons. Team: hardcoded 4-person array, inert Invite/Remove/Role buttons. Integrations: hardcoded provider list, inert Connect/Disconnect buttons. Notifications: hardcoded const, no useState, no onClick on toggles. Account: profile name/email has no save mutation, 3 security buttons (Change Password, Enable 2FA, Download Data) have no onClick. Wire all to real tRPC mutations and queries. | 2026-06-29 → 2026-12-27 (+181d) |
| IFC-235 | Lead Detail AI Chat Panel - Add AI chat panel to Lead detail page for entity-scoped conversations. Backend: conversation.router.ts is fully built with 13 endpoints but NOT registered in router.ts - register it. Frontend: build LeadChatPanel component using conversation API with contextType=LEAD, contextId=leadId. Similar to dashboard TeamChatWidget but with real API calls (TeamChatWidget is decorative with hardcoded messages). ConversationRecord/MessageRecord Prisma models exist. | none → 2027-02-21 |
| IFC-241 | Lead Router Dead Code & Missing Events Cleanup. Fix 4 MEDIUM/LOW issues: (1) scoreWithAI notification variables at lines 517-527 set but never referenced - dead code [S10]. (2) LeadRoutedEvent defined in domain but never published by any procedure or service [S11]. (3) Only 3 of ~10 lead event types trigger notifications [W10]. (4) Lead notifications processed synchronously, not queued via BullMQ [W11]. Fix: Remove dead notification code, publish LeadRoutedEvent from routing logic, add notification handlers for remaining event types, enqueue via BullMQ. | none → 2027-01-10 |
| IFC-243 | Lead Frontend Consistency - StatusBadge, Toast, window.prompt. Fix 3 MEDIUM issues: (1) window.prompt() used for note input at line 1951 - blocks UI, no multi-line, poor UX [F5]. Replace with Dialog/Sheet component. (2) Two different StatusBadge implementations - inline LeadStatusBadge vs shared component with different color schemes [F6]. Consolidate to shared component. (3) Two Toast patterns - sonner toast.success() vs shadcn useToast() used inconsistently across lead pages [F7]. Standardize to one pattern. | none → 2027-03-21 |
| IFC-244 | Dashboard Widget Real Data - ActiveLeads, TotalLeads, Analytics. Fix 3 HIGH/MEDIUM issues: (1) ActiveLeadsWidget fully hardcoded with static '1,240' and 'vs 1,100 last month' [F2]. (2) TotalLeadsWidget shows hardcoded '+12%' trend [W6]. (3) Analytics page for leads uses sample data arrays, no API queries [W7]. Fix: Wire ActiveLeadsWidget to lead.stats API, compute real trend from monthly comparison, wire Analytics page to real lead data endpoints. | none → 2027-03-21 |
| IFC-245 | Lead Activity Timeline Unification. Fix HIGH issue: logActivity creates LeadActivity records but these are NOT fed into the unified TimelineEvent system (IFC-069). Lead activities exist in a parallel silo [W1]. Also fix: No email-to-lead association - inbound emails not linked to leads by sender address [W2]. Fix: Create TimelineEvent adapter for LeadActivity, add email-to-lead matching in inbound parser, ensure lead detail 'All Sources' toggle shows unified data. | none → 2027-01-10 |
| IFC-246 | Domain Model Lead 360 Alignment. Fix 4 HIGH issues: (1) Lead.toJSON() omits aiInsight, activities, notes, files, tasks relations - domain events carry incomplete snapshots [D1]. (2) qualify() only allows from NEW/CONTACTED but UI doesn't reflect this constraint [D2]. (3) LeadScoringChain throws unhandled error for unknown AI_PROVIDER [D3]. (4) AI scoring prompt only receives basic lead data, ignores activity count, engagement history, note count [D4]. Fix: Extend toJSON, expose allowed transitions, add provider fallback, enrich scoring prompt. | none → 2027-01-24 |
| IFC-249 | Lead Edit Page Tests + E2E. Fix remaining test gaps: (1) Edit page onSuccess/onError callbacks untested, as any cast hides type errors [T9]. (2) No E2E tests for complete lead CRUD flow (create -> view -> edit -> delete) [T6]. Write: (1) Edit page component tests with mutation mocking. (2) Playwright E2E test for full lead lifecycle. E2E should cover: create lead with required fields, view on detail page, edit fields, archive/delete. | none → 2026-10-05 |
| IFC-250 | Lead Event Pipeline - Persistent Outbox + Webhooks. Fix HIGH/LOW issues: (1) InMemoryEventBus loses all events on server restart - no persistent outbox pattern [W3]. (2) No webhook handlers for lead events - external systems cannot subscribe [W9]. Fix: Implement transactional outbox pattern for lead domain events (LeadCreatedEvent, LeadQualifiedEvent, etc.). Add webhook dispatch for lead events. Ensure event ordering and at-least-once delivery. | none → 2027-03-07 |
| IFC-251 | Lead CSV Import/Export. Add bulk import and export for leads [W8]. Import: CSV upload with validation, duplicate detection, field mapping UI, error report. Export: CSV and JSON formats, filtered export (current view), all-fields export. Common CRM feature needed for data migration and reporting. Also cleanup: Prisma schema backslash comments to standard // format [S12]. | none → 2027-10-03 |
| IFC-258 | Contact Frontend Consistency — Avatars, Owner Title, Confidence. (1) Default avatars are Unsplash stranger photos — replace with initials-based generated avatar (F-09). (2) Owner title hardcoded 'Account Executive' — map from owner.role like lead detail (F-16). (3) Confidence hardcoded 0.85 for churnRisk and nextBestAction — use API data (F-17). (4) quietPeriodAlert always null (F-22). (5) ContactForm duplicated between create and edit (F-24). Audit: docs/audit/contact-detail-wiring-audit.md §16. | none → 2027-03-21 |
| IFC-259 | Contact Dead UI Fields & Unused Components. (1) location/timezone always empty (F-10). (2) isOnline/isVIP always false — dead badges (F-11). (3) tags always empty array (F-12). (4) ContactDetail.tsx component unused by page — 597 lines with tests but never imported (F-14). (5) ContactCard.tsx unused by list page (F-28). (6) emailsOpened always 0 (F-20). Decision needed: wire to real data, show placeholder states, or remove dead UI. Audit: docs/audit/contact-detail-wiring-audit.md §16. | none → 2027-04-04 |
| IFC-260 | Contact Domain Model Fixes. (1) reconstitute() silently substitutes unknown@unknown.com for invalid emails — should Result.fail or throw (D-01). (2) mergeContacts no cross-tenant check — linkToLead correctly checks but merge doesn't (D-02). (3) No ContactDeletedEvent — deleteContact publishes no events, audit handler has mapping but event never emitted (D-04). (4) No ContactEmailChangedEvent — old email not captured in generic ContactUpdatedEvent (D-05). (5) Tags update always emits event without deep equality check (D-07). Audit: docs/audit/contact-detail-wiring-audit.md §18. | none → 2027-01-24 |
| IFC-261 | Contact Event Pipeline — Worker Handlers + Event Types. (1) Zero contact event handlers in events worker (W-02). (2) Only 2/8 contact event types in DOMAIN_EVENT_TYPES — missing deleted, account_associated, account_disassociated, converted_from_lead, linked_to_lead, interacted (W-04). (3) No webhook routing for contact events (W-05). (4) No notifications for contact events (W-11). Cross-ref: W-01 (InMemoryEventBus) shared with IFC-250. Audit: docs/audit/contact-detail-wiring-audit.md §17. | none → 2027-03-07 |
| IFC-262 | Contact Merge & Duplicate Detection Wiring. (1) mergeContacts deletes secondary without re-parenting all child records — orphaned opportunities/tasks (W-03). (2) findPotentialDuplicates exists in service but no tRPC procedure exposes it (W-09). (3) mergeContacts exists but no router procedure wraps it (W-10). (4) mergeContacts no cross-tenant check between primary and secondary (W-12). (5) associateWithAccount inside mergeContacts causes double-save and potential double event emission (W-13). Audit: docs/audit/contact-detail-wiring-audit.md §17. | none → 2027-03-21 |
| IFC-263 | Contact Email & AI Integration. (1) No email-to-contact matching — inbound emails not linked to contacts by sender address (W-06). (2) No automated AI insight triggering — contact create/update doesn't trigger scoring like lead does (W-07). (3) No contact routing rules — leads have routing but contacts don't (W-14). Audit: docs/audit/contact-detail-wiring-audit.md §17. | none → 2027-03-21 |
| IFC-264 | Contact Bulk Import & Service Layer Fixes. (1) No CSV upload or bulk create for contacts (W-08). (2) listContacts service returns empty array as default when no ownerId/accountId — latent bug for future callers (W-15). (3) getContactStatistics returns empty for undefined ownerId (W-16). Audit: docs/audit/contact-detail-wiring-audit.md §17. | none → 2027-05-30 |
| IFC-272 | Account Event Pipeline — Worker Handlers + Event Types. (1) Zero account event handlers in events worker (W-01). (2) Zero account event types in DOMAIN_EVENT_TYPES map (W-02). (3) Audit handler has 3 account event mappings (Created/Updated/Deleted) but events never reach it because worker has no handlers and dispatcher has no types (W-03). Add event handlers for AccountCreated, AccountUpdated, AccountDeleted (requires IFC-271), AccountRevenueUpdated, AccountHierarchyUpdated, AccountIndustryCategorized to events worker. Register all types in DOMAIN_EVENT_TYPES. Cross-ref: W-01/W-02 pattern shared with Contact (IFC-261). Audit: docs/audit/account-detail-wiring-audit.md section 14. | none → 2027-04-04 |
| IFC-274 | Account Activity Timeline — Replace Stub Data. AccountService.getAccountActivity() (lines 748-785) returns synthetic/stub activities with hardcoded descriptions and broken cursor pagination — not real Activity model records (F-13). Replace with real activity feed from ActivityFeed component or Activity model queries. Should use same pattern as Lead/Contact activity tabs. Audit: docs/audit/account-detail-wiring-audit.md section 6. | none → 2027-02-07 |
| IFC-275 | Account Create & Edit Forms. (1) No account create form page — router has create procedure but no frontend consumer (F-16). Create page at accounts/(list)/new/page.tsx with form for all account fields. (2) No account edit form — Edit button navigates but lands on 404 (F-17). Create edit form page or inline edit mode using router update procedure. Both forms should validate with accountSchema. Audit: docs/audit/account-detail-wiring-audit.md section 10. | none → 2027-04-04 |
| IFC-276 | Account Contract Test + Test Gaps. (1) Accounts is the ONLY entity without a contract test file (T-01). (2) No-op buttons untested — 6 CRITICAL no-op buttons have no click behavior tests (T-02). (3) Tenant isolation untested in router tests (T-03). (4) No E2E Playwright tests for account CRUD flow (T-04). (5) Owner display untested — tests don't verify owner name/title rendering (T-05). Audit: docs/audit/account-detail-wiring-audit.md section 19. | none → 2027-04-04 |
| IFC-277 | Account Service Dead Code & Minor Fixes. (1) calculateAccountHealth() unreachable from router — decide: wire (D-02). (2) getAccountWithContext() unreachable from router — decide: wire (D-03). (3) Revenue NaN risk — Number(revenue) on non-numeric string renders '$NaNM' (F-14). (4) Health bar arbitrary scale — no documented max value (F-15). (5) Contact firstName[0] undefined risk in AccountContactsList (F-18). (6) findAncestors N+1 query pattern (B-14). (7) Merge/Archive toast stubs referencing IFC-044 (F-03/F-04). Audit: docs/audit/account-detail-wiring-audit.md sections 9, 13, 16-17. | none → 2027-05-30 |
| IFC-283 | Deal Event Pipeline — Worker Handlers. (1) Only opportunity.won has a handler in events worker; opportunity.created, opportunity.stage_changed, and opportunity.lost are defined in DOMAIN_EVENT_TYPES but have NO registered handlers (W-01). (2) No OpportunityDescriptionUpdatedEvent defined — description changes emit no event (W-02). Add handlers for the 3 missing event types. Add OpportunityDescriptionUpdatedEvent to domain. Cross-ref: same pattern as Account (IFC-272) and Contact (IFC-261). Audit: docs/audit/deal-detail-wiring-audit.md section 7. | none → 2027-04-04 |
| IFC-284 | Deal Forecast Algorithm Fixes. (1) buildWinRateTrend hardcodes months ['May','Jun','Jul','Aug','Sep','Oct'] regardless of current date — semantically incorrect data (B-06, forecast-algorithm.ts:283). Fix to derive from actual 6-month window. (2) DEFAULT_STAGE_PROBABILITIES diverge: validators has NEEDS_ANALYSIS=30/PROPOSAL=70 while domain/service/router/forecast-algorithm uses 40/60 (B-08). Unify to single source of truth. (3) buildMonthlyRevenue uses locale-dependent toLocaleString for month names — breaks on non-en-US servers (B-15, forecast-algorithm.ts:269). (4) Forecast trend values hardcoded as 12 and 5 in forecast page (F-16, deals/forecast/page.tsx:709-710). Compute from API data. Audit: docs/audit/deal-detail-wiring-audit.md sections 4, 6. | none → 2027-02-07 |
| IFC-285 | Deal Service Dead Code & Minor Fixes. (1) 11 dead service methods unreachable from router: listOpportunities, advanceStage, updateValue, updateProbability, updateExpectedCloseDate, reopenOpportunity, getPipelineForecast, getOpportunitiesClosingSoon, getHighValueOpportunities, getOpportunitiesByAccount, getOpportunitiesByContact, getWinRateStatistics (B-13). Decide: wire to router or remove. (2) toMoney/toPercentage silent zero fallback on DB corruption (B-14). (3) TOCTOU in stage transitions — no optimistic locking (B-16). (4) Event publish failure swallowed with console.error only (B-17). (5) DealQuickView is a 49-line stub not used anywhere (F-13). (6) RecommendedActions.onActionClick not wired at forecast page level (F-18). (7) Sidebar deals config settingsHref points to /settings/deals instead of /settings/pipeline (W-03). Audit: docs/audit/deal-detail-wiring-audit.md sections 6-7. | none → 2027-06-13 |
| IFC-286 | Deal Detail Page Tests + E2E. (1) Deal detail page (792 lines) has ZERO test coverage (T-01). (2) No E2E Playwright tests for /deals, /deals/[id], or /deals/forecast — only pipeline-settings has E2E (T-02). (3) No cross-tenant access attempt test in router tests (T-03). (4) Contract test missing NEEDS_ANALYSIS stage in test data (T-04). Depends on IFC-278 (real data) and IFC-280 (wired buttons). Audit: docs/audit/deal-detail-wiring-audit.md section 10. | none → 2027-04-18 |

## Version 19 (saved 2026-11-19)

Note of the change: chore(plan): link the MVP rows to the older rows they deliver (#1458)

Added:

| ID | Task | Start | Finish |
| --- | --- | --- | --- |
| IFC-223 | Wire actual Email Outbound Adapter (Resolves R-018) [2026-06-09 audit: shipped as Completed but was MOCK in prod — container.ts had no resend branch; actually wired to Resend via #363/#360 + activated on Railway api service] | 2026-03-06 | IFC-157 |

Removed: IFC-287 Deal Filter Wiring & Type Safety. (1) DealFilters state (filters) captured in page but NEVER passed to trpc.opportunity.list.useQuery — ownerId and dateRange selections have no effect on kanban view data (F-10, deals/(list)/page.tsx:214,226). (2) 'More Filters' button has no onClick handler (F-11, DealFilters.tsx). (3) Owner filter only has 2 hardcoded options: 'All Deals' and 'My Deals' — no dynamic user list (F-12). (4) transformDeals uses loose Record<string,unknown> casting at API boundary instead of typed response (F-19, types.ts:102-119). Wire filters to API query params; add server-side owner filter with user list; type-safe API response handling. Audit: docs/audit/deal-detail-wiring-audit.md sections 3, 8.

Changed:

| ID | Task | Finish | Other |
| --- | --- | --- | --- |
| IFC-263 | Contact Email & AI Integration. (1) No email-to-contact matching — inbound emails not linked to contacts by sender address (W-06). (2) No automated AI insight triggering — contact create/update doesn't trigger scoring like lead does (W-07). (3) No contact routing rules — leads have routing but contacts don't (W-14). Audit: docs/audit/contact-detail-wiring-audit.md §17. Email-to-contact matching for mail read from a connected mailbox is delivered by MVP-011 (sprint 24, on the MVP-001 sync); close that part with MVP-011's evidence. This row keeps matching on the inbound webhook route, AI scoring on contact create/update and contact routing rules. | none → MVP-011 | was named Contact Email & AI Integration. (1) No email-to-contact matching — inbound emails not linked to contacts by sender address (W-06). (2) No automated AI insight triggering — contact create/update doesn't trigger scoring like lead does (W-07). (3) No contact routing rules — leads have routing but contacts don't (W-14). Audit: docs/audit/contact-detail-wiring-audit.md §17. |

## Version 20 (saved 2026-11-22)

Note of the change: chore(plan): clear 49 forward dependencies in sprint plan (#1532)

Removed: IFC-223 Wire actual Email Outbound Adapter (Resolves R-018) [2026-06-09 audit: shipped as Completed but was MOCK in prod — container.ts had no resend branch; actually wired to Resend via #363/#360 + activated on Railway api service]

## Version 21 (saved 2026-11-27)

Note of the change: Merge remote-tracking branch 'origin/main' into fix/pg-014-status-page-real-data

Changed:

| ID | Task | Other |
| --- | --- | --- |
| IFC-263 | Contact Email & AI Integration. (1) No email-to-contact matching — inbound emails not linked to contacts by sender address (W-06). (2) No automated AI insight triggering — contact create/update doesn't trigger scoring like lead does (W-07). (3) No contact routing rules — leads have routing but contacts don't (W-14). Audit: docs/audit/contact-detail-wiring-audit.md §17. Email-to-contact matching for mail read from a connected mailbox is delivered by MVP-011 (sprint 24, on the MVP-001 sync); close that part with MVP-011's evidence. This row keeps matching on the inbound webhook route, AI scoring on contact create/update and contact routing rules. [Note 23/11/2026: the AI reading of inbound mail (classifying it and extracting the job details into the lead) is delivered by IFC-333 (sprint 25); this row keeps the webhook matching, contact scoring triggers and routing.] | was named Contact Email & AI Integration. (1) No email-to-contact matching — inbound emails not linked to contacts by sender address (W-06). (2) No automated AI insight triggering — contact create/update doesn't trigger scoring like lead does (W-07). (3) No contact routing rules — leads have routing but contacts don't (W-14). Audit: docs/audit/contact-detail-wiring-audit.md §17. Email-to-contact matching for mail read from a connected mailbox is delivered by MVP-011 (sprint 24, on the MVP-001 sync); close that part with MVP-011's evidence. This row keeps matching on the inbound webhook route, AI scoring on contact create/update and contact routing rules. |
