How a schedule from an exported table changed from version to version. A marks actual dates.

## Version 1 (saved 2026-04-12)

Note of the change: fix(ci): track sprint task JSONs, registry files, and split CSVs to pass CI gates

| ID | Task | Start | Finish |
| --- | --- | --- | --- |
| IFC-297 | AI Monitoring Data Persistence — Replace in-memory singleton monitoring data (driftDetector, latencyMonitor, hallucinationChecker, roiTracker) with DB-backed persistence via new AIMonitoringEvent model. Add ai-worker flush service to write metrics to DB periodically. Rewrite monitoring router to query DB instead of in-process singletons. Enables multi-process deployments to share monitoring data. | 2026-03-15 | IFC-015,IFC-025 |
| IFC-298 | HelpArticle Prisma Model + Migration | 2026-03-10 | PG-045 |
| IFC-299 | Help Article CRUD tRPC Router | 2026-03-18 | IFC-298 |
| IFC-300 | Help Article Seed Script — Static to DB Migration |  | IFC-298 |
| IFC-303 | Article Feedback tRPC Mutation | 2026-03-18 | IFC-298 |
| PG-180 | Help Article Admin List Page |  | IFC-299 |
| IFC-301 | Rich Text Editor Integration — Tiptap |  | PG-180 |
| PG-181 | Help Article Editor Page |  | PG-180,IFC-301 |
| IFC-302 | Refactor Help Article Page to Use Database |  | IFC-299 |
| IFC-304 | Article Analytics Dashboard |  | IFC-303,PG-180 |
| PG-182 | Module Settings - Contacts (/contacts/contact-settings) |  | PG-178 |
| PG-183 | Module Settings - Accounts (/accounts/account-settings) |  | PG-178 |
| PG-184 | Module Settings - Deals (/deals/deal-settings) |  | PG-178 |
| PG-185 | Module Settings - Tickets (/tickets/sla-policies) |  | PG-178 |
| PG-186 | Module Settings - Documents (/documents/document-settings) |  | PG-178 |
| PG-187 | Module Settings - Reports (/analytics/report-settings) |  | PG-178 |
| PG-188 | Module Settings - Billing (/billing/settings) |  | PG-178 |
| PG-189 | Module Settings - Appointments (/calendar/calendar-settings) |  | PG-178 |
| PG-190 | Module Settings - Cases (/cases/case-settings) |  | PG-178 |
| PG-191 | Module Settings - Tasks (/tasks/task-settings) |  | PG-178 |
| PG-192 | Fix missing /agent-approvals/logs page — PG-152 regression; AgentLogsViewer component exists at apps/web/src/components/ai-monitoring/AgentLogsViewer.tsx but page.tsx is absent causing 404 on route | 2026-03-17 | PG-152 |
| PG-193 | Workflow Step Progress Panel — Add real-time N/N step progress tracker to /agent-approvals/agents and /agent-approvals/logs; reads WorkflowExecution.currentStep + stepResults from tRPC; shows named steps with status icons (pending/running/completed/failed) and a % progress bar matching the AEO workflow progress UI pattern | 2026-03-19 | PG-151,PG-192 |
| IFC-305 | Componentize CRM entity detail pages (Leads, Contacts) — extract shared SOLID-compliant components from 5284 lines of duplicated god-files; wire bypassed shared components (EntityHeader, SearchFilterBar, ActivityFeed); create cross-entity reusable components (EntityProfileCard, ActivityFilterBar, AiInsightMetricsGrid, ai-insight-transforms utility, EntityErrorState, EntityDetailSkeleton, ConfirmationDialog); reduce page files from 2691/2593 to ~200 lines each |  | IFC-226 |
| IFC-306 | Fix Compliance Calendar Seed Data — replace fabricated/stale events in compliance-calendar.json with realistic SaaS CRM compliance milestones; remove irrelevant ISO 14001 events; update 6 past events still marked scheduled to completed; extend date range through 2026-12 covering GDPR quarterly reviews, SOC 2 audit cycle, ISO 27001 surveillance, ISO 42001 certification path, OWASP assessments; update metadata version and lastUpdated |  | IFC-073 |
| PG-194 | Governance Compliance Dashboard — register and wire existing /governance/compliance page; replace 5 hardcoded ComplianceCard scores (ISO 27001 92%, ISO 42001 45%, ISO 14001 78%, GDPR 98%, ADR 60%) with real compliance API data; remove hardcoded overall score 74.6 and '16 Total' action items; remove ISO 14001 card (irrelevant to SaaS); connect ComplianceTimeline and RiskHeatMap to live API endpoints; ensure ComplianceDetailPanel drilldown shows real control data; tests >=90% |  | IFC-073,IFC-100,IFC-306 |
| IFC-307 | Contact Enrichment Pipeline — Automated background job that periodically enriches contact/lead data from external providers (Clearbit, Apollo). Includes: BullMQ queue intelliflow-contact-enrichment, enrichment adapter with rate limiting, on-create trigger in contact.router.ts, periodic cron sweep for stale profiles (>30 days), cost tracking via CostTracker, field updates (company, title, social profiles, industry) |  | IFC-168,IFC-131 |
| IFC-308 | Scheduled Report Generation — BullMQ cron job that generates daily/weekly analytics snapshots and emails summary reports to team leads. Includes: report template system (pipeline summary, lead conversion, revenue trends, SLA compliance), PDF/HTML report rendering, email delivery via notifications worker, configurable schedule per tenant, report archive storage |  | IFC-168,IFC-024 |

## Version 2 (saved 2026-04-12)

Note of the change: feat(web/legal+metrics): PG-051/PG-052 terms+cookie completed; sprint-17 attestations; cached queries; legal acceptance tracker

Added:

| ID | Task | Start | Finish |
| --- | --- | --- | --- |
| PG-195 | Subset Material Symbols font to unblock Lighthouse Performance >=90 gate — reduces 3.5 MB MaterialSymbolsOutlined.woff2 shipped by root layout to every route (PG-056 Lighthouse=63 baseline). Audit the 1,421 .material-symbols-outlined call sites, build a subsetter script that extracts the exact glyph set, regenerate a smaller woff2 (<500 KB target), add CI guard so new glyphs are added to the audit list. | 2026-08-20 | PG-056 |

## Version 3 (saved 2026-04-13)

Note of the change: feat(IFC-031): wire workflow router, db schema, node-catalog, validators, sprint plan sync

Added:

| ID | Task | Start | Finish |
| --- | --- | --- | --- |
| IFC-309 | Server-side terms acceptance — persist immutable TermsAcceptance audit record (tenantId, userId, termsVersion, acceptedAt, ipAddress, userAgent, route) via tRPC legal.acceptTerms mutation and legal.getAcceptance query; wire Confirm UI on /terms for authenticated users only; replaces client-only localStorage tracker removed from PG-051 as a misleading legal-compliance signal. | 2026-04-20 | PG-051,IFC-058,IFC-124 |

Removed: IFC-297 AI Monitoring Data Persistence — Replace in-memory singleton monitoring data (driftDetector, latencyMonitor, hallucinationChecker, roiTracker) with DB-backed persistence via new AIMonitoringEvent model. Add ai-worker flush service to write metrics to DB periodically. Rewrite monitoring router to query DB instead of in-process singletons. Enables multi-process deployments to share monitoring data.; IFC-298 HelpArticle Prisma Model + Migration

Changed:

| ID | Task | Start |
| --- | --- | --- |
| IFC-300 | Help Article Seed Script — Static to DB Migration | none → 2026-04-13 |
| PG-182 | Module Settings - Contacts (/contacts/contact-settings) | none → 2026-04-13 |
| PG-183 | Module Settings - Accounts (/accounts/account-settings) | none → 2026-04-13 |
| PG-195 | Subset Material Symbols font to unblock Lighthouse Performance >=90 gate — reduces 3.5 MB MaterialSymbolsOutlined.woff2 shipped by root layout to every route (PG-056 Lighthouse=63 baseline). Audit the 1,421 .material-symbols-outlined call sites, build a subsetter script that extracts the exact glyph set, regenerate a smaller woff2 (<500 KB target), add CI guard so new glyphs are added to the audit list. | 2026-08-20 → 2026-04-13 (-129d) |

## Version 4 (saved 2026-04-19)

Note of the change: chore(project-tracker): update metrics, sprint data, and tracker UI

Added:

| ID | Task | Start | Finish |
| --- | --- | --- | --- |
| IFC-297 | AI Monitoring Data Persistence — Replace in-memory singleton monitoring data (driftDetector, latencyMonitor, hallucinationChecker, roiTracker) with DB-backed persistence via new AIMonitoringEvent model. Add ai-worker flush service to write metrics to DB periodically. Rewrite monitoring router to query DB instead of in-process singletons. Enables multi-process deployments to share monitoring data. | 2026-03-15 | IFC-015,IFC-025 |
| IFC-298 | HelpArticle Prisma Model + Migration | 2026-03-10 | PG-045 |
| IFC-310 | Duplicate-detection runtime for contacts + accounts (PG-182/PG-183 follow-up) — new DuplicateDetectionService (or per-entity services sharing a rule-evaluator) that reads {Contact,Account}DuplicateRule rows at create/update time and either flags or auto-merges/auto-links records; consumes autoMergeOnExactEmail + autoLinkContactsByDomain + notifyOnDuplicate + aiDuplicateDetection + aiIndustryInference + aiEnrichment toggles from the respective AutomationSetting table; transactional merge combines rows (activities, notes, opportunities, tags, aiInsight) with conflict resolution. |  | PG-182,PG-183 |
| IFC-311 | Reassign endpoints + notifyOnOwnerChange wiring for contacts + accounts (PG-182/PG-183 follow-up) — add contact.reassign/contact.bulkReassign and account.reassign/account.bulkReassign tRPC procedures; on owner change, invoke the notifyContactReassignment or notifyAccountReassignment helper (both already shipped — PG-182 in contact-automation.ts, PG-183 in account-automation.ts) with the bound createNotification from notifications.router.ts; contact_reassigned is already in NOTIFICATION_TYPES — add account_reassigned alongside it. |  | PG-182,PG-183 |
| IFC-312 | AI chains for contacts + accounts (PG-182/PG-183 follow-up) — wire the remaining AI toggles on both entities to real LLM/embedding consumers: aiEnrichment (external enrichment API + provider adapter, shared across entities), aiTagSuggestions (LLM prompt + surface on detail pages), aiInsightGeneration (LLM chain writing to {Contact,Account}AIInsight + surface), aiAutoReplyDrafting (contact inbox), aiIndustryInference (account-only LLM classifier that picks the best AccountIndustryOption), aiAccountScoring (account-only LLM scorer that writes to the Account score field). |  | PG-182,PG-183,IFC-310 |
| PG-196 | Module Settings - Account Tiers (/accounts/(list)/account-tiers) |  | PG-178,PG-183 |
| PG-197 | Module Settings - Territory Mapping (/accounts/(list)/territory-mapping) |  | PG-178,PG-183 |
| PG-198 | Module Settings - Approval Policies (/agent-approvals/approval-policies) |  | PG-178,PG-152,PG-192 |
| PG-199 | Module Settings - Model Config (/agent-approvals/model-config) |  | PG-178,PG-152,PG-192 |
| PG-200 | Module Settings - Report Templates (/analytics/report-templates) |  | PG-178,PG-187 |
| PG-201 | Module Settings - Scheduled Reports (/analytics/scheduled-reports) |  | PG-178,PG-187 |
| PG-202 | Module Settings - Availability (/calendar/availability) |  | PG-178,PG-189 |
| PG-203 | Module Settings - Event Types (/calendar/event-types) |  | PG-178,PG-189 |
| PG-204 | Module Settings - Case Types (/cases/case-types) |  | PG-178,PG-190 |
| PG-205 | Module Settings - Contact Types (/contacts/(list)/contact-types) |  | PG-178,PG-182 |
| PG-206 | Module Settings - Storage Policies (/documents/(list)/storage-policies) |  | PG-178,PG-186 |
| PG-207 | Module Settings - Email (/email/email-settings) |  | PG-178,PG-182 |
| PG-208 | Module Settings - Task Automation (/tasks/(list)/automation) |  | PG-178,PG-191 |
| PG-209 | Module Settings - Task Types (/tasks/(list)/task-types) |  | PG-178,PG-191 |

Changed:

| ID | Task | Start | Finish |
| --- | --- | --- | --- |
| PG-184 | Module Settings - Deals (/deals/deal-settings) | none → 2026-04-15 | PG-178 → PG-178,PG-182,PG-183 |
| PG-185 | Module Settings - Tickets (/tickets/sla-policies) | none → 2026-04-15 | PG-178 → PG-178,PG-182,PG-183 |
| PG-186 | Module Settings - Documents (/documents/document-settings) | none → 2026-04-15 | PG-178 → PG-178,PG-182,PG-183 |

## Version 5 (saved 2026-04-20)

Note of the change: chore(tools): exec-preflight scripts + attestation schema + Sprint_plan_I split

Changed:

| ID | Task | Start |
| --- | --- | --- |
| PG-180 | Help Article Admin List Page | none → 2026-04-19 |
| PG-187 | Module Settings - Reports (/analytics/report-settings) | none → 2026-04-19 |
| PG-189 | Module Settings - Appointments (/calendar/calendar-settings) | none → 2026-04-19 |
| PG-190 | Module Settings - Cases (/cases/case-settings) | none → 2026-04-19 |

## Version 6 (saved 2026-04-21)

Note of the change: chore(metrics): update sprint plan, metrics and task registry

Changed:

| ID | Task | Start |
| --- | --- | --- |
| IFC-310 | Duplicate-detection runtime for contacts + accounts (PG-182/PG-183 follow-up) — new DuplicateDetectionService (or per-entity services sharing a rule-evaluator) that reads {Contact,Account}DuplicateRule rows at create/update time and either flags or auto-merges/auto-links records; consumes autoMergeOnExactEmail + autoLinkContactsByDomain + notifyOnDuplicate + aiDuplicateDetection + aiIndustryInference + aiEnrichment toggles from the respective AutomationSetting table; transactional merge combines rows (activities, notes, opportunities, tags, aiInsight) with conflict resolution. | none → 2026-04-20 |
| IFC-311 | Reassign endpoints + notifyOnOwnerChange wiring for contacts + accounts (PG-182/PG-183 follow-up) — add contact.reassign/contact.bulkReassign and account.reassign/account.bulkReassign tRPC procedures; on owner change, invoke the notifyContactReassignment or notifyAccountReassignment helper (both already shipped — PG-182 in contact-automation.ts, PG-183 in account-automation.ts) with the bound createNotification from notifications.router.ts; contact_reassigned is already in NOTIFICATION_TYPES — add account_reassigned alongside it. | none → 2026-04-20 |
| IFC-312 | AI chains for contacts + accounts (PG-182/PG-183 follow-up) — wire the remaining AI toggles on both entities to real LLM/embedding consumers: aiEnrichment (external enrichment API + provider adapter, shared across entities), aiTagSuggestions (LLM prompt + surface on detail pages), aiInsightGeneration (LLM chain writing to {Contact,Account}AIInsight + surface), aiAutoReplyDrafting (contact inbox), aiIndustryInference (account-only LLM classifier that picks the best AccountIndustryOption), aiAccountScoring (account-only LLM scorer that writes to the Account score field). | none → 2026-04-20 |

## Version 7 (saved 2026-04-22)

Note of the change: chore(sprint-plan): update sprint plan, task registry, dependency graph

Added:

| ID | Task | Finish |
| --- | --- | --- |
| PG-210 | IFC-311 reassign UI wiring follow-up (contacts + accounts) — wire the four new tRPC procedures shipped by IFC-311 (api.contact.reassign, api.contact.bulkReassign, api.account.reassign, api.account.bulkReassign) into real UI so the notifyOnOwnerChange Cat-1 toggle is reachable for end users on both entities. Source: IFC-311 post-completion code review Finding 1 — all four procedures are dead-on-arrival at runtime (zero direct UI callers). The account SINGLE-reassign path is transitively reachable via AccountDetail.tsx:152 → api.account.assignOwner (refactored in IFC-311 to delegate to performAccountReassign, so the notification fires), but api.account.bulkReassign is fully orphaned and the account detail page still calls the legacy name. Scope: (a) contacts-list bulk-actions bar exposes a Reassign action that calls contact.bulkReassign; (b) contact detail page actions expose a Reassign option that calls contact.reassign; (c) accounts-list bulk-actions bar exposes a Reassign action that calls account.bulkReassign (brand-new UI surface — no legacy shim covers this); (d) migrate AccountDetail.tsx:152 from api.account.assignOwner.useMutation to api.account.reassign.useMutation so the canonical IFC-311 name is the production caller (assignOwner stays as a deprecated legacy alias); (e) one integration test per entity that exercises the toggle flipping the notification path end-to-end. Backend API surface is already shipped by IFC-311 — this task is UI + wiring + one cosmetic endpoint migration only. | IFC-311 |

## Version 8 (saved 2026-06-09)

Note of the change: Merge branch 'main' into chore/ci-preship-hardening

Added:

| ID | Task | Start | Finish |
| --- | --- | --- | --- |
| IFC-296 | Queue Scheduler Administration — Implement queuesAdmin tRPC router with live BullMQ stats and scheduler CRUD (list/pause/resume/retry/delete), wire to /agent-approvals/agents page. Replace stub router with live Redis/BullMQ data. Add queue health panel to ActiveAgentsDashboard showing scheduler cron patterns, queue counts, and action buttons. | 2026-03-08 | IFC-015,IFC-197,PG-151 |

Removed: PG-210 IFC-311 reassign UI wiring follow-up (contacts + accounts) — wire the four new tRPC procedures shipped by IFC-311 (api.contact.reassign, api.contact.bulkReassign, api.account.reassign, api.account.bulkReassign) into real UI so the notifyOnOwnerChange Cat-1 toggle is reachable for end users on both entities. Source: IFC-311 post-completion code review Finding 1 — all four procedures are dead-on-arrival at runtime (zero direct UI callers). The account SINGLE-reassign path is transitively reachable via AccountDetail.tsx:152 → api.account.assignOwner (refactored in IFC-311 to delegate to performAccountReassign, so the notification fires), but api.account.bulkReassign is fully orphaned and the account detail page still calls the legacy name. Scope: (a) contacts-list bulk-actions bar exposes a Reassign action that calls contact.bulkReassign; (b) contact detail page actions expose a Reassign option that calls contact.reassign; (c) accounts-list bulk-actions bar exposes a Reassign action that calls account.bulkReassign (brand-new UI surface — no legacy shim covers this); (d) migrate AccountDetail.tsx:152 from api.account.assignOwner.useMutation to api.account.reassign.useMutation so the canonical IFC-311 name is the production caller (assignOwner stays as a deprecated legacy alias); (e) one integration test per entity that exercises the toggle flipping the notification path end-to-end. Backend API surface is already shipped by IFC-311 — this task is UI + wiring + one cosmetic endpoint migration only.

## Version 9 (saved 2026-06-15)

Note of the change: chore(metrics): mark IFC-301 Completed + fix test-artifact path (Tiptap editor)

Changed:

| ID | Task | Start |
| --- | --- | --- |
| IFC-301 | Rich Text Editor Integration — Tiptap | none → 2026-06-15 |

## Version 10 (saved 2026-06-27)

Note of the change: chore(IFC-302): flip CSV to Completed after #534 merge

Changed:

| ID | Task | Start |
| --- | --- | --- |
| IFC-302 | Refactor Help Article Page to Use Database | none → 2026-06-27 |

## Version 11 (saved 2026-06-29)

Note of the change: chore(sprint-18): mark IFC-309, PG-200 completed after fleet iteration 2

Changed:

| ID | Task | Start |
| --- | --- | --- |
| PG-188 | Module Settings - Billing (/billing/settings) | none → 2026-06-29 |

## Version 12 (saved 2026-10-07)

Note of the change: Merge remote-tracking branch 'origin/main' into feat/aurora-rebrand-finish

Added:

| ID | Task | Finish |
| --- | --- | --- |
| PG-210 | IFC-311 reassign UI wiring follow-up (contacts + accounts) — wire the four new tRPC procedures shipped by IFC-311 (api.contact.reassign, api.contact.bulkReassign, api.account.reassign, api.account.bulkReassign) into real UI so the notifyOnOwnerChange Cat-1 toggle is reachable for end users on both entities. Source: IFC-311 post-completion code review Finding 1 — all four procedures are dead-on-arrival at runtime (zero direct UI callers). The account SINGLE-reassign path is transitively reachable via AccountDetail.tsx:152 → api.account.assignOwner (refactored in IFC-311 to delegate to performAccountReassign, so the notification fires), but api.account.bulkReassign is fully orphaned and the account detail page still calls the legacy name. Scope: (a) contacts-list bulk-actions bar exposes a Reassign action that calls contact.bulkReassign; (b) contact detail page actions expose a Reassign option that calls contact.reassign; (c) accounts-list bulk-actions bar exposes a Reassign action that calls account.bulkReassign (brand-new UI surface — no legacy shim covers this); (d) migrate AccountDetail.tsx:152 from api.account.assignOwner.useMutation to api.account.reassign.useMutation so the canonical IFC-311 name is the production caller (assignOwner stays as a deprecated legacy alias); (e) one integration test per entity that exercises the toggle flipping the notification path end-to-end. Backend API surface is already shipped by IFC-311 — this task is UI + wiring + one cosmetic endpoint migration only. | IFC-311 |

Removed: IFC-296 Queue Scheduler Administration — Implement queuesAdmin tRPC router with live BullMQ stats and scheduler CRUD (list/pause/resume/retry/delete), wire to /agent-approvals/agents page. Replace stub router with live Redis/BullMQ data. Add queue health panel to ActiveAgentsDashboard showing scheduler cron patterns, queue counts, and action buttons.

Changed:

| ID | Task | Start |
| --- | --- | --- |
| PG-196 | Module Settings - Account Tiers (/accounts/(list)/account-tiers) | none → 2026-10-06 |
| PG-197 | Module Settings - Territory Mapping (/accounts/(list)/territory-mapping) | none → 2026-10-07 |

## Version 13 (saved 2026-10-12)

Note of the change: chore(pg-201): record spec-session status for scheduled reports

Changed:

| ID | Task | Start |
| --- | --- | --- |
| PG-201 | Module Settings - Scheduled Reports (/analytics/scheduled-reports) | none → 2026-10-13 |

## Version 14 (saved 2026-10-13)

Note of the change: chore(csv): mark pg-198 in progress during exec

Changed:

| ID | Task | Start |
| --- | --- | --- |
| PG-198 | Module Settings - Approval Policies (/agent-approvals/approval-policies) | none → 2026-10-13 |
| PG-201 | Module Settings - Scheduled Reports (/analytics/scheduled-reports) | 2026-10-13 → none |

## Version 15 (saved 2026-10-16)

Note of the change: feat(agent-approvals): tenant approval policies for ai work (pg-198) (#906)

Removed: PG-209 Module Settings - Task Types (/tasks/(list)/task-types); PG-210 IFC-311 reassign UI wiring follow-up (contacts + accounts) — wire the four new tRPC procedures shipped by IFC-311 (api.contact.reassign, api.contact.bulkReassign, api.account.reassign, api.account.bulkReassign) into real UI so the notifyOnOwnerChange Cat-1 toggle is reachable for end users on both entities. Source: IFC-311 post-completion code review Finding 1 — all four procedures are dead-on-arrival at runtime (zero direct UI callers). The account SINGLE-reassign path is transitively reachable via AccountDetail.tsx:152 → api.account.assignOwner (refactored in IFC-311 to delegate to performAccountReassign, so the notification fires), but api.account.bulkReassign is fully orphaned and the account detail page still calls the legacy name. Scope: (a) contacts-list bulk-actions bar exposes a Reassign action that calls contact.bulkReassign; (b) contact detail page actions expose a Reassign option that calls contact.reassign; (c) accounts-list bulk-actions bar exposes a Reassign action that calls account.bulkReassign (brand-new UI surface — no legacy shim covers this); (d) migrate AccountDetail.tsx:152 from api.account.assignOwner.useMutation to api.account.reassign.useMutation so the canonical IFC-311 name is the production caller (assignOwner stays as a deprecated legacy alias); (e) one integration test per entity that exercises the toggle flipping the notification path end-to-end. Backend API surface is already shipped by IFC-311 — this task is UI + wiring + one cosmetic endpoint migration only.

Changed:

| ID | Task | Start | Finish |
| --- | --- | --- | --- |
| IFC-308 | Scheduled Report Generation — BullMQ cron job that generates daily/weekly analytics snapshots and emails summary reports to team leads. Includes: report template system (pipeline summary, lead conversion, revenue trends, SLA compliance), PDF/HTML report rendering, email delivery via notifications worker, configurable schedule per tenant, report archive storage |  | IFC-168,IFC-024 → IFC-168,IFC-024,PG-201 |
| PG-201 | Module Settings - Scheduled Reports (/analytics/scheduled-reports) | none → 2026-10-13 |  |
| PG-204 | Module Settings - Case Types (/cases/case-types) | none → 2026-10-13 |  |

## Version 16 (saved 2026-10-17)

Note of the change: docs(pg-205): registries, findings, owner rulings 8-9, plan progress and tdd evidence

Changed:

| ID | Task | Start |
| --- | --- | --- |
| PG-205 | Module Settings - Contact Types (/contacts/(list)/contact-types) | none → 2026-10-17 |

## Version 17 (saved 2026-10-18)

Note of the change: feat(contacts): tenant contact types, type picker and contacts list type filter (PG-205) (#915)

Changed:

| ID | Task | Start |
| --- | --- | --- |
| PG-202 | Module Settings - Availability (/calendar/availability) | none → 2026-10-17 |

## Version 18 (saved 2026-10-19)

Note of the change: chore(pg-199): merge origin/main into feat/pg-199-model-config

Removed: PG-208 Module Settings - Task Automation (/tasks/(list)/automation)

Changed:

| ID | Task | Start |
| --- | --- | --- |
| PG-199 | Module Settings - Model Config (/agent-approvals/model-config) | none → 2026-10-19 |

## Version 19 (saved 2026-10-20)

Note of the change: docs(pg-203): tdd execution plan approved by the plan reviewer

Changed:

| ID | Task | Start |
| --- | --- | --- |
| PG-199 | Module Settings - Model Config (/agent-approvals/model-config) | 2026-10-19 → none |
| PG-203 | Module Settings - Event Types (/calendar/event-types) | none → 2026-10-20 |

## Version 20 (saved 2026-10-21)

Note of the change: chore(pg-203): merge origin/main into feat/pg-203-event-types

Changed:

| ID | Task | Start |
| --- | --- | --- |
| PG-199 | Module Settings - Model Config (/agent-approvals/model-config) | none → 2026-10-19 |

## Version 21 (saved 2026-10-22)

Note of the change: chore(tracker): mark pg-199, eng-ops-002 and eng-ops-002.r16 completed

Changed:

| ID | Task | Start |
| --- | --- | --- |
| PG-203 | Module Settings - Event Types (/calendar/event-types) | 2026-10-20 → none |

## Version 22 (saved 2026-10-23)

Note of the change: Merge origin/main into fix/1000-audit-criticals

Changed:

| ID | Task | Start |
| --- | --- | --- |
| PG-203 | Module Settings - Event Types (/calendar/event-types) | none → 2026-10-20 |
| PG-207 | Module Settings - Email (/email/email-settings) | none → 2026-10-20 |

## Version 23 (saved 2026-10-24)

Note of the change: chore(pg-203): add the four dsar follow-up tasks to sprint 19

Removed: PG-207 Module Settings - Email (/email/email-settings)

## Version 24 (saved 2026-10-25)

Note of the change: chore(ifc-117): repoint the tracked artifacts to the otel monitoring files

Added:

| ID | Task | Start | Finish |
| --- | --- | --- | --- |
| IFC-296 | Queue Scheduler Administration — Implement queuesAdmin tRPC router with live BullMQ stats and scheduler CRUD (list/pause/resume/retry/delete), wire to /agent-approvals/agents page. Replace stub router with live Redis/BullMQ data. Add queue health panel to ActiveAgentsDashboard showing scheduler cron patterns, queue counts, and action buttons. | 2026-03-08 | IFC-015,IFC-197,PG-151 |

## Version 25 (saved 2026-10-28)

Note of the change: chore(tracker): keep pg-199 in progress until its authenticated lighthouse run

Added:

| ID | Task |
| --- | --- |
| IFC-295 | Billing/Auth/Subscription/Admin Miscellaneous Wiring. Wire 8 dead endpoints: billing.ensureCustomer, billing.getUsageMetrics, billing.updateBillingInformation, auth.getSessions, subscription.getPlans, subscription.toggleModule, autoresponse.submitForApproval, admin.queues.getByName. Backend built across IFC-006/IFC-014/IFC-028/IFC-099, zero web callers. admin.queues.getByName is completely phantom (no tests, no matrix entry) � needs queue inspector or admin tools UI. Audit: artifacts/reports/dead-endpoints-audit.csv rows 2, 29, 33-37, 104-105. |

## Version 26 (saved 2026-10-29)

Note of the change: chore(ifc-117): track the delivered monitoring files on the sprint plan row

Added:

| ID | Task | Finish |
| --- | --- | --- |
| IFC-293 | Security Admin + Notifications Settings Wiring. Wire 6 dead endpoints: security.audit.getByResource, security.audit.getMyActivity, security.audit.getSecurityEvents, notifications.batchAction, notifications.getPreferences, notifications.updatePreferences. Backend built (IFC-098, IFC-072, IFC-046, IFC-157), zero web callers. Decision: build admin security page + notification settings page (PG-116). Audit: artifacts/reports/dead-endpoints-audit.csv rows 93-95, 101-103. | IFC-157:FS |
| IFC-294 | Experiment + Intelligence + AI Monitoring Wiring. Wire 7 dead endpoints: experiment.assignVariant, experiment.recordConversion, experiment.recordScore, intelligence.getInsightsSummary, intelligence.triggerPrediction, intelligence.updateContactInsights, ai-monitoring.getHallucinationReport. Backend built (IFC-025, IFC-095, IFC-117), zero web callers. Decision: wire to experiment dashboard (IFC-181) and AI monitoring page. Audit: artifacts/reports/dead-endpoints-audit.csv rows 19, 52-54, 66-69. | IFC-025:FS;IFC-095:FS |

Removed: PG-206 Module Settings - Storage Policies (/documents/(list)/storage-policies)

## Version 27 (saved 2026-10-30)

Note of the change: chore: merge origin/main c8dad4bdf (#1078) into fix/1098-api-4xx-span-status

Removed: PG-205 Module Settings - Contact Types (/contacts/(list)/contact-types)

## Version 28 (saved 2026-11-12)

Note of the change: Merge remote-tracking branch 'origin/main' into docs/ifc-142-slo-alerts-restore-drill

Added:

| ID | Task | Finish |
| --- | --- | --- |
| IFC-290 | Integrations Dashboard Endpoint Wiring. Wire 5 dead integrations router endpoints: getAllConnectorsHealth, getConnectorHealth, getConnectorsByType, getDashboardConfig, triggerSync. Backend built (IFC-003), zero web callers. Decision: build integrations settings page to consume these. Audit: artifacts/reports/dead-endpoints-audit.csv rows 61-65. |  |
| IFC-291 | Feedback Submission UI Wiring. Wire 5 dead feedback router endpoints: checkRetraining, exportTrainingData, getForLead, submitCorrection, submitSimple. Backend built (IFC-068), zero web callers. Decision: add feedback UI to AI review workflow. Audit: artifacts/reports/dead-endpoints-audit.csv rows 55-60. | IFC-068:FS |
| IFC-292 | Legal Document Management UI Wiring. Wire 6 dead legal router endpoints: appointments.findNextSlot, documents.grantAccess, documents.placeLegalHold, documents.releaseLegalHold, documents.revokeAccess, documents.submitForReview. Backend built (IFC-137, IFC-140, IFC-152), zero web callers. Decision: build legal management UIs to consume these. Audit: artifacts/reports/dead-endpoints-audit.csv rows 78-83. | IFC-140:FS;IFC-152:FS |

Removed: PG-204 Module Settings - Case Types (/cases/case-types)

## Version 29 (saved 2026-11-13)

Note of the change: fix(status): count every queue the AI worker consumes, by name

Added:

| ID | Task | Finish |
| --- | --- | --- |
| IFC-288 | Analytics Dashboard Endpoint Wiring. Wire 9 dead analytics router endpoints: exportConversionFunnel, exportMetrics, exportReport, getConversionFunnel, getLeadMetrics, getOverview, getSalesMetrics, getTimeSeriesData, leadStats. Backend built (ANALYTICS-001), zero web callers. Decision: wire to analytics dashboard UI (IFC-037) with charts/export buttons. Audit: artifacts/reports/dead-endpoints-audit.csv rows 20-28. | IFC-037:FS |
| IFC-289 | Agent/Conversation Router Frontend Wiring. 17 dead endpoints (13 conversation.* + 4 agent.*) with zero frontend callers. Frontend uses autoResponse/aiReview/aiMonitoring routers that query the same DB tables directly bypassing the canonical conversation router. Fix: wire all endpoints to proper frontend consumers — chat panel, agent-approvals, AI Search, admin dashboard — and refactor aiMonitoring to delegate to conversation router instead of duplicating DB queries. Audit: artifacts/reports/dead-endpoints-audit.csv rows 4-18. | IFC-139:FS;IFC-148:FS |

## Version 30 (saved 2026-11-16)

Note of the change: Merge remote-tracking branch 'origin/main' into feat/mail-sync-core

Changed:

| ID | Task | Start |
| --- | --- | --- |
| IFC-288 | Analytics Dashboard Endpoint Wiring. Wire 9 dead analytics router endpoints: exportConversionFunnel, exportMetrics, exportReport, getConversionFunnel, getLeadMetrics, getOverview, getSalesMetrics, getTimeSeriesData, leadStats. Backend built (ANALYTICS-001), zero web callers. Decision: wire to analytics dashboard UI (IFC-037) with charts/export buttons. Audit: artifacts/reports/dead-endpoints-audit.csv rows 20-28. | none → 2027-06-27 |
| IFC-289 | Agent/Conversation Router Frontend Wiring. 17 dead endpoints (13 conversation.* + 4 agent.*) with zero frontend callers. Frontend uses autoResponse/aiReview/aiMonitoring routers that query the same DB tables directly bypassing the canonical conversation router. Fix: wire all endpoints to proper frontend consumers — chat panel, agent-approvals, AI Search, admin dashboard — and refactor aiMonitoring to delegate to conversation router instead of duplicating DB queries. Audit: artifacts/reports/dead-endpoints-audit.csv rows 4-18. | none → 2027-08-08 |
| IFC-290 | Integrations Dashboard Endpoint Wiring. Wire 5 dead integrations router endpoints: getAllConnectorsHealth, getConnectorHealth, getConnectorsByType, getDashboardConfig, triggerSync. Backend built (IFC-003), zero web callers. Decision: build integrations settings page to consume these. Audit: artifacts/reports/dead-endpoints-audit.csv rows 61-65. | none → 2027-09-19 |
| IFC-291 | Feedback Submission UI Wiring. Wire 5 dead feedback router endpoints: checkRetraining, exportTrainingData, getForLead, submitCorrection, submitSimple. Backend built (IFC-068), zero web callers. Decision: add feedback UI to AI review workflow. Audit: artifacts/reports/dead-endpoints-audit.csv rows 55-60. | none → 2027-09-19 |
| IFC-292 | Legal Document Management UI Wiring. Wire 6 dead legal router endpoints: appointments.findNextSlot, documents.grantAccess, documents.placeLegalHold, documents.releaseLegalHold, documents.revokeAccess, documents.submitForReview. Backend built (IFC-137, IFC-140, IFC-152), zero web callers. Decision: build legal management UIs to consume these. Audit: artifacts/reports/dead-endpoints-audit.csv rows 78-83. | none → 2027-10-03 |
| IFC-293 | Security Admin + Notifications Settings Wiring. Wire 6 dead endpoints: security.audit.getByResource, security.audit.getMyActivity, security.audit.getSecurityEvents, notifications.batchAction, notifications.getPreferences, notifications.updatePreferences. Backend built (IFC-098, IFC-072, IFC-046, IFC-157), zero web callers. Decision: build admin security page + notification settings page (PG-116). Audit: artifacts/reports/dead-endpoints-audit.csv rows 93-95, 101-103. | none → 2027-10-31 |
| IFC-294 | Experiment + Intelligence + AI Monitoring Wiring. Wire 7 dead endpoints: experiment.assignVariant, experiment.recordConversion, experiment.recordScore, intelligence.getInsightsSummary, intelligence.triggerPrediction, intelligence.updateContactInsights, ai-monitoring.getHallucinationReport. Backend built (IFC-025, IFC-095, IFC-117), zero web callers. Decision: wire to experiment dashboard (IFC-181) and AI monitoring page. Audit: artifacts/reports/dead-endpoints-audit.csv rows 19, 52-54, 66-69. | none → 2027-11-28 |
| IFC-295 | Billing/Auth/Subscription/Admin Miscellaneous Wiring. Wire 8 dead endpoints: billing.ensureCustomer, billing.getUsageMetrics, billing.updateBillingInformation, auth.getSessions, subscription.getPlans, subscription.toggleModule, autoresponse.submitForApproval, admin.queues.getByName. Backend built across IFC-006/IFC-014/IFC-028/IFC-099, zero web callers. admin.queues.getByName is completely phantom (no tests, no matrix entry) � needs queue inspector or admin tools UI. Audit: artifacts/reports/dead-endpoints-audit.csv rows 2, 29, 33-37, 104-105. | none → 2027-11-28 |
| IFC-304 | Article Analytics Dashboard | none → 2026-12-13 |
| IFC-305 | Componentize CRM entity detail pages (Leads, Contacts) — extract shared SOLID-compliant components from 5284 lines of duplicated god-files; wire bypassed shared components (EntityHeader, SearchFilterBar, ActivityFeed); create cross-entity reusable components (EntityProfileCard, ActivityFilterBar, AiInsightMetricsGrid, ai-insight-transforms utility, EntityErrorState, EntityDetailSkeleton, ConfirmationDialog); reduce page files from 2691/2593 to ~200 lines each | none → 2027-04-18 |
| PG-194 | Governance Compliance Dashboard — register and wire existing /governance/compliance page; replace 5 hardcoded ComplianceCard scores (ISO 27001 92%, ISO 42001 45%, ISO 14001 78%, GDPR 98%, ADR 60%) with real compliance API data; remove hardcoded overall score 74.6 and '16 Total' action items; remove ISO 14001 card (irrelevant to SaaS); connect ComplianceTimeline and RiskHeatMap to live API endpoints; ensure ComplianceDetailPanel drilldown shows real control data; tests >=90% | none → 2027-04-18 |
| IFC-307 | Contact Enrichment Pipeline — Automated background job that periodically enriches contact/lead data from external providers (Clearbit, Apollo). Includes: BullMQ queue intelliflow-contact-enrichment, enrichment adapter with rate limiting, on-create trigger in contact.router.ts, periodic cron sweep for stale profiles (>30 days), cost tracking via CostTracker, field updates (company, title, social profiles, industry) | none → 2027-04-18 |
| IFC-308 | Scheduled Report Generation — BullMQ cron job that generates daily/weekly analytics snapshots and emails summary reports to team leads. Includes: report template system (pipeline summary, lead conversion, revenue trends, SLA compliance), PDF/HTML report rendering, email delivery via notifications worker, configurable schedule per tenant, report archive storage | none → 2027-06-13 |

## Version 31 (saved 2026-11-19)

Note of the change: Merge remote-tracking branch 'origin/main' into fix/mvp-007-suggest-tags-loop

Added:

| ID | Task | Start |
| --- | --- | --- |
| IFC-287 | Deal Filter Wiring & Type Safety. (1) DealFilters state (filters) captured in page but NEVER passed to trpc.opportunity.list.useQuery — ownerId and dateRange selections have no effect on kanban view data (F-10, deals/(list)/page.tsx:214,226). (2) 'More Filters' button has no onClick handler (F-11, DealFilters.tsx). (3) Owner filter only has 2 hardcoded options: 'All Deals' and 'My Deals' — no dynamic user list (F-12). (4) transformDeals uses loose Record<string,unknown> casting at API boundary instead of typed response (F-19, types.ts:102-119). Wire filters to API query params; add server-side owner filter with user list; type-safe API response handling. Audit: docs/audit/deal-detail-wiring-audit.md sections 3, 8. | 2026-06-14 |
