How a schedule from an exported table changed from version to version. A marks actual dates.

## Version 1 (saved 2026-04-24)

Note of the change: chore(metrics): bulk sync sprint metrics JSON, Sprint_plan CSV/JSON, Sprint_plan_J split

| ID | Task | Finish |
| --- | --- | --- |
| IFC-313 | Real inbox integration - contact.draftReply real-thread resolver. IFC-312 audit fix F5 follow-up: the draftReply procedure currently requires the client to supply a full emailThread array (server returns PRECONDITION_FAILED otherwise). IFC-313 replaces this with a server-side resolver that takes input.emailThreadId and fetches the actual ContactEmailThread history (pending real inbox ingestion infra - to be scoped separately). Keep the client-supplied emailThread path as a fallback for power users / integrations. | IFC-312 |

## Version 2 (saved 2026-06-05)

Note of the change: feat(infra): add INFRA-TF-001..005 tasks for the Terraform IaC initiative

Added:

| ID | Task | Start | Finish |
| --- | --- | --- | --- |
| INFRA-TF-001 | Fix Terraform provider-schema drift (Railway + Vercel modules) so `terraform validate` is green. Migrate railway_deployment->railway_service source_image, default_environment object, and Vercel env->vercel_project_environment_variable / vercel_webhook / edge-config to the current provider schemas. | 2026-06-08 |  |
| INFRA-TF-002 | Provision the three apps/workers (events-worker, ingestion-worker, notifications-worker) as first-class Railway services in Terraform. Closes GH #230/#259/#270 (workers built/tested but never deployed). | 2026-06-08 | INFRA-TF-001 |
| INFRA-TF-003 | Replace the Supabase null_resource + curl scaffolding with the official supabase/supabase Terraform provider so Supabase auth/storage/extensions config is genuinely drift-detected. | 2026-06-08 | INFRA-TF-001 |
| INFRA-TF-004 | Environment tfvars (dev/staging/prod) + remote state backend + a monitoring Terraform module (Grafana/Prometheus/Loki/Tempo as observability-as-code) + wire ai-worker OpenTelemetry (IFC-032). | 2026-06-08 | INFRA-TF-001 |
| INFRA-TF-005 | CI + import + runbooks: add the three workers to build-images.yml and railway-deploy.yml; terraform import existing live Vercel/Railway/Supabase infra into state; update railway-deploy / workers / observability runbooks. | 2026-06-08 | INFRA-TF-002,INFRA-TF-004 |

## Version 3 (saved 2026-06-08)

Note of the change: feat(auth): complete + enable branded GoTrue security emails (issue #350) (#353)

Added:

| ID | Task | Start |
| --- | --- | --- |
| IFC-314 | CRM-to-portal delivery & billing sync (Leangency 14-day flow). On deal-won, provision the portal tenant + push initial delivery state, then mirror billing as it changes. Adds SetupInstalment model + DeliveryTier enum + tenantSlug on Opportunity; Stripe invoice create/finalize for the 3x GBP167 Setup fee (D0/7/14); StripeSubscription persistence on customer.subscription.* webhooks; a PortalDeliverySync service that POSTs /api/internal/tenants then /api/internal/delivery via the domain_events outbox; extends CloseDealWonUseCase; registers a deal_won_enriched handler in events-worker; adds a daily portal-delivery-sweep BullMQ job in ai-worker; and verifies the Stripe webhook signature (handleSubscriptionWebhook moved off tRPC). | 2026-06-07 |

## Version 4 (saved 2026-06-09)

Note of the change: docs(email): sync tracker + correct IFC-223 to reality (mock to Resend)

Added:

| ID | Task | Finish |
| --- | --- | --- |
| PG-210 | IFC-311 reassign UI wiring follow-up (contacts + accounts) — wire the four new tRPC procedures shipped by IFC-311 (api.contact.reassign, api.contact.bulkReassign, api.account.reassign, api.account.bulkReassign) into real UI so the notifyOnOwnerChange Cat-1 toggle is reachable for end users on both entities. Source: IFC-311 post-completion code review Finding 1 — all four procedures are dead-on-arrival at runtime (zero direct UI callers). The account SINGLE-reassign path is transitively reachable via AccountDetail.tsx:152 → api.account.assignOwner (refactored in IFC-311 to delegate to performAccountReassign, so the notification fires), but api.account.bulkReassign is fully orphaned and the account detail page still calls the legacy name. Scope: (a) contacts-list bulk-actions bar exposes a Reassign action that calls contact.bulkReassign; (b) contact detail page actions expose a Reassign option that calls contact.reassign; (c) accounts-list bulk-actions bar exposes a Reassign action that calls account.bulkReassign (brand-new UI surface — no legacy shim covers this); (d) migrate AccountDetail.tsx:152 from api.account.assignOwner.useMutation to api.account.reassign.useMutation so the canonical IFC-311 name is the production caller (assignOwner stays as a deprecated legacy alias); (e) one integration test per entity that exercises the toggle flipping the notification path end-to-end. Backend API surface is already shipped by IFC-311 — this task is UI + wiring + one cosmetic endpoint migration only. | IFC-311 |

## Version 5 (saved 2026-06-30)

Note of the change: chore(automation-003): mark Completed after PR #566 merge

Added:

| ID | Task | Start |
| --- | --- | --- |
| AUTOMATION-003 | Standardize attestation provenance fields (exec-attestation emits; schema declares; exec-preflight gate enforces; orchestrator DoD requires) | 2026-06-30 |

## Version 6 (saved 2026-07-22)

Note of the change: chore(pm-ops-003): sprint 19 rebaseline, planning & readiness gate

Added:

| ID | Task | Start | Finish |
| --- | --- | --- | --- |
| ENG-OPS-002 | Auditoria integral do estado técnico e arquitetural dos Sprints 1-18 (reconciliação + tooling + DDD/hexagonal/security/perf/quality/docs findings + Sonar baseline + remediation plan) | 2026-07-22 | ENG-OPS-001,GOV-001,IFC-131,EXP-REPORTS-002 |
| ENG-OPS-002.R01 | Remediation R01 [Critical/SEC-001]: tenant-isolation fix — scope email searchContacts query by tenantId (currently unscoped ctx.prisma, cross-tenant contact enumeration) | 2026-07-22 | ENG-OPS-002 |
| ENG-OPS-002.R02 | Remediation R02 [Critical/QUAL-003+004]: dedup evaluator correctness — threshold nullish-coalescing (?? 100) + empty-composite guard, un-skip the 2 property tests | 2026-07-22 | ENG-OPS-002 |
| ENG-OPS-002.R03 | Remediation R03 [Critical/STALE-001+002]: stale-doc cleanup — fix CLAUDE.md sprint/task-count anchor and regenerate/deprecate sprint-18 _summary.json | 2026-07-22 | ENG-OPS-002 |
| ENG-OPS-002.R04 | Remediation R04 [Critical/DDD-001][REVIEW]: Lead->Deal conversion transaction atomicity (unit-of-work across 4 aggregates) — HELD for design review | 2026-07-22 | ENG-OPS-002 |
| ENG-OPS-002.R05 | Remediation R05 [Critical/HEX-001][REVIEW]: wire ticket port into composition root or delete orphan port — HELD for design decision | 2026-07-22 | ENG-OPS-002 |
| ENG-OPS-002.R06 | Remediation R06 [Critical/HEX-005][REVIEW]: appointments router use-case migration (~28 direct prisma sites) — HELD, 20+ file refactor | 2026-07-22 | ENG-OPS-002 |
| ENG-OPS-002.R07 | Remediation R07 [Critical/QUAL-015][REVIEW]: consolidate diverging prompt-sanitizer into one canonical module — HELD, security design decision | 2026-07-22 | ENG-OPS-002 |
| ENG-OPS-002.R08 | Remediation R08 [High/HEX-002+003]: ticket hexagonal extraction (TicketService/TicketRoutingService -> use cases behind port) | 2026-07-22 | ENG-OPS-002.R05 |
| ENG-OPS-002.R09 | Remediation R09 [High/HEX-004]: LeadRoutingService depends on LeadRepositoryPort instead of raw PrismaClient | 2026-07-22 | ENG-OPS-002 |
| ENG-OPS-002.R10 | Remediation R10 [High/QUAL-001+002]: ticket + task aggregate state-machine transition guards, un-skip the property tests | 2026-07-22 | ENG-OPS-002 |
| ENG-OPS-002.R11 | Remediation R11 [High/DDD-002]: persist domain events (outbox) inside the same transaction as aggregate state (ADR-011 zero-lost-events) | 2026-07-22 | ENG-OPS-002.R04 |
| ENG-OPS-002.R12 | Remediation R12 [High/DDD-003+004]: TenantId value object + move lead auto-qualify policy into the Lead aggregate | 2026-07-22 | ENG-OPS-002 |
| ENG-OPS-002.R13 | Remediation R13 [High/QUAL-012]: add eslint no-disabled-tests gate (allow-list w/ linked issue) and reconcile the 21 skipped property tests | 2026-07-22 | ENG-OPS-002.R02,ENG-OPS-002.R10 |
| ENG-OPS-002.R14 | Remediation R14 [High/PERF-003]: enable pg_trgm + GIN trigram indexes for free-text search (kill ILIKE seq-scans) | 2026-07-22 | ENG-OPS-002 |
| ENG-OPS-002.R15 | Remediation R15 [High/GOV-A-003]: triage 175/447 schema-validation failures (regenerate vs fix) and wire validate:schemas into pre-ship | 2026-07-22 | ENG-OPS-002 |
| ENG-OPS-002.R16 | Remediation R16 [High/GOV-A-001+002]: backfill 18 missing Sprint-18 attestations + record the 177-task provenance gap in debt ledger | 2026-07-22 | ENG-OPS-002 |
| ENG-OPS-002.R17 | Remediation R17 [High/QUAL-013]: decide ERP/SAP connector — complete SAPAdapter to un-skip 19 tests OR formally mark deferred in sprint plan | 2026-07-22 | ENG-OPS-002 |
| ENG-OPS-002.R18 | Remediation R18 [Medium batch]: triage the 39 Medium findings (ddd/hexagonal/security/perf/quality/stale) into focused Sprint-19 follow-ups | 2026-07-22 | ENG-OPS-002 |
| PM-OPS-003 | Sprint 19 rebaseline, planning & readiness gate — validate 4 completed tasks (reopen phantom completions), reassess 11 backlog, dependency+duplication scan across all 616 tasks/PRs/issues/specs/debt-ledger, real multi-factor capacity model, remediation-findings triage (0 net-new duplicates), P0-P3 prioritization, execution waves 0-5, readiness verdict | 2026-07-22 | ENG-OPS-002 |

## Version 7 (saved 2026-07-25)

Note of the change: chore(eng-ops-003): retroactive governance backfill for the 2026-07-24 merge window (#638)

Added:

| ID | Task | Start | Finish |
| --- | --- | --- | --- |
| ENG-OPS-003 | Harness hardening Gaps #1-#4 + OSV PRs A/B: retroactive umbrella for the 8 untracked CI/security/E2E-harness PRs merged 2026-07-24 (#623, #625, #627, #628, #629, #630, #631, #634) | 2026-07-25 | ENG-OPS-002 |

## Version 8 (saved 2026-07-26)

Note of the change: feat(orchestration): task-contract JSON schema + dispatch-binding guard (ORCH-002)

Added:

| ID | Task | Start |
| --- | --- | --- |
| ORCH-002 | Task-contract JSON schema + dispatch-binding enforcement (ADR-070) | 2026-07-26 |

## Version 9 (saved 2026-08-11)

Note of the change: chore(eng-ops-002.r13): backfill missing attestation + CSV status sync

Removed: ORCH-002 Task-contract JSON schema + dispatch-binding enforcement (ADR-070)

## Version 10 (saved 2026-10-01)

Note of the change: Merge bb42bd3186af12ac3ef30d341b3b9db924367c77 into 071018bcde79755235fc36fdf5090a3f574cdc28

Added:

| ID | Task | Start |
| --- | --- | --- |
| AUTOMATION-004 | Task-contract JSON schema + dispatch-binding enforcement (ADR-070) | 2026-07-26 |

## Version 11 (saved 2026-10-04)

Note of the change: docs(adr): renumber the task-contract ADR from 070 to 072

Changed:

| ID | Task | Other |
| --- | --- | --- |
| AUTOMATION-004 | Task-contract JSON schema + dispatch-binding enforcement (ADR-072) | was named Task-contract JSON schema + dispatch-binding enforcement (ADR-070) |

## Version 12 (saved 2026-10-06)

Note of the change: Merge branch 'main' into ci/affected-only-fast-checks

Changed:

| ID | Task | Start |
| --- | --- | --- |
| INFRA-TF-004 | Environment tfvars (dev/staging/prod) + remote state backend + a monitoring Terraform module (Grafana/Prometheus/Loki/Tempo as observability-as-code) + wire ai-worker OpenTelemetry (IFC-032). | 2026-06-08 → 2026-10-06 (+120d) |

## Version 13 (saved 2026-10-16)

Note of the change: chore(pg-201): merge main into agent/PG-201-scheduled-reports

Added:

| ID | Task | Finish |
| --- | --- | --- |
| PG-209 | Module Settings - Task Types (/tasks/(list)/task-types) | PG-178,PG-191 |

## Version 14 (saved 2026-10-22)

Note of the change: Merge remote-tracking branch 'origin/main' into docs/dpa-aup-draft

Added:

| ID | Task | Finish |
| --- | --- | --- |
| PG-208 | Module Settings - Task Automation (/tasks/(list)/automation) | PG-178,PG-191 |

## Version 15 (saved 2026-10-23)

Note of the change: feat(pg-203): event types, appointment picker and public booking page (#1003)

Added:

| ID | Task | Finish |
| --- | --- | --- |
| PG-211 | Public booking: booker self-service cancel/reschedule. A signed, single-purpose, expiring link in the PG-203 booking confirmation email lets the booker cancel or move a /book/<handle>/<slug> appointment without contacting the firm. The move goes through the same per-tenant booking advisory lock, availability re-check, notice/horizon and daily cap as publicBooking.book (ADR-083); tokens are stored only as HMACs and travel in the URL fragment (PG-203 DSAR pattern); the host is notified. Origin: PG-203 follow-up (spec Risks; PRD addendum). | PG-203 |
| PG-212 | Event types: per-type minimum notice and booking horizon. Replace the fixed BOOKING_MIN_NOTICE_MINUTES (60) and BOOKING_HORIZON_DAYS (60) constants (packages/domain/src/legal/appointments/event-types.ts) with per-event-type fields on event_types (Class A migration, named CHECKs, defaults 60 min / 60 days), editable in the /calendar/event-types dialog and honoured by listOpenSlots and the public booking re-check. Origin: PG-203 follow-up (PRD addendum). | PG-203 |
| PG-213 | Retention: purge public-booking PII after a firm-set period. Under the PG-206 retention policies, appointments.bookerName/bookerEmail/bookingAnswers/bookingConsentAt/bookingConsentVersion are cleared for public bookings older than a firm-configured retention period (the booking_attempts 48 h prune from PG-203 stays); the run is replica-safe and audit-logged with counts only. Origin: PG-203 follow-up (spec AC-022; PRD addendum). | PG-203,PG-206 |

## Version 16 (saved 2026-10-25)

Note of the change: chore(env-008-ai): attestation needs_human, compliance and stoa evidence

Added:

| ID | Task | Finish |
| --- | --- | --- |
| PG-207 | Module Settings - Email (/email/email-settings) | PG-178,PG-182 |

Removed: PG-211 Public booking: booker self-service cancel/reschedule. A signed, single-purpose, expiring link in the PG-203 booking confirmation email lets the booker cancel or move a /book/<handle>/<slug> appointment without contacting the firm. The move goes through the same per-tenant booking advisory lock, availability re-check, notice/horizon and daily cap as publicBooking.book (ADR-083); tokens are stored only as HMACs and travel in the URL fragment (PG-203 DSAR pattern); the host is notified. Origin: PG-203 follow-up (spec Risks; PRD addendum).; PG-212 Event types: per-type minimum notice and booking horizon. Replace the fixed BOOKING_MIN_NOTICE_MINUTES (60) and BOOKING_HORIZON_DAYS (60) constants (packages/domain/src/legal/appointments/event-types.ts) with per-event-type fields on event_types (Class A migration, named CHECKs, defaults 60 min / 60 days), editable in the /calendar/event-types dialog and honoured by listOpenSlots and the public booking re-check. Origin: PG-203 follow-up (PRD addendum).; PG-213 Retention: purge public-booking PII after a firm-set period. Under the PG-206 retention policies, appointments.bookerName/bookerEmail/bookingAnswers/bookingConsentAt/bookingConsentVersion are cleared for public bookings older than a firm-configured retention period (the booking_attempts 48 h prune from PG-203 stays); the run is replica-safe and audit-logged with counts only. Origin: PG-203 follow-up (spec AC-022; PRD addendum).
